# MirageDEVPlan_Less_Slic tasks_16Jan

How a schedule from MS Project changed from version to version. A marks actual dates.

## Version 1 (saved 2008-02-12, file MirageDEVPlan_12Feb.mpp)

Note of the change: Initial migration from $/Mirage

| ID | WBS | Task | Duration | Start | Finish | Predecessors | Total float | Constraint |
| --- | --- | --- | --- | --- | --- | --- | --- | --- |
| 1 | 1 | **Mirage SW DEV** | 339.14d? | 2008-02-04 | 2009-05-22 |  | 0d |  |
| 2 | 1.1 | **Phases** | 1d? | 2008-02-04 | 2008-02-04 |  | 338.14d |  |
| 3 |  | Phase 1 (Design and Initial Creation) | 1d? | 2008-02-04 | 2008-02-04 |  | 338.14d |  |
| 4 |  | Phase 2 (FFT & THD) | 1d? | 2008-02-04 | 2008-02-04 |  | 338.14d |  |
| 5 |  | Phase 3 (Remote/Local/Averaging) | 1d? | 2008-02-04 | 2008-02-04 |  | 338.14d |  |
| 6 |  | Phase 4 (Partial FFT Mode Simualte IE) | 1d? | 2008-02-04 | 2008-02-04 |  | 338.14d |  |
| 7 |  | Phase 5 (Full FFT w/o System & Analysis, Green screen with HW) | 1d? | 2008-02-04 | 2008-02-04 |  | 338.14d |  |
| 8 |  | Phase 6 (Full Stepped Sin Mode with System Hardkey) | 1d? | 2008-02-04 | 2008-02-04 |  | 338.14d |  |
| 9 |  | Phase 7 (Full Octave with Analysis Hardkey) | 1d? | 2008-02-04 | 2008-02-04 |  | 338.14d |  |
| 10 |  | Phase 8 (Learning Products) | 1d? | 2008-02-04 | 2008-02-04 |  | 338.14d |  |
| 11 |  | Phase 9 HQ | 1d? | 2008-02-04 | 2008-02-04 |  | 338.14d |  |
| 12 |  | Phase 10 SQ | 1d? | 2008-02-04 | 2008-02-04 |  | 338.14d |  |
| 13 |  | Phase 11 Ship | 1d? | 2008-02-04 | 2008-02-04 |  | 338.14d |  |
| 14 | 1.2 | **Process Infrastructure** | 292d? | 2008-02-04 | 2009-03-18 |  | 35d |  |
| 15 | 1.2.1 | **SCM ( Source management)** | 5.29d? | 2008-04-17 | 2008-04-25 |  | 48.14d |  |
| 16 |  | Defining the Folder heriarchy for source code | 1.43d? | 2008-04-17 | 2008-04-22 |  | 48.14d | start no earlier than 2008-02-04 |
| 17 |  | TFS Set up ( Server & Client set up) | 2.86d? | 2008-04-22 | 2008-04-25 | 16 | 48.14d |  |
| 18 | 1.2.2 | **Development guidelines** | 4d? | 2008-02-04 | 2008-02-07 |  | 35d |  |
| 19 |  | Coding standard ( C++, C#) | 2d? | 2008-02-04 | 2008-02-05 |  | 35d | start no earlier than 2008-02-04 |
| 20 |  | Code Review , Unit Test case review guidelines | 2d? | 2008-02-06 | 2008-02-07 | 19 | 35d |  |
| 21 | 1.2.3 | **Skelton projects for each components** | 233d | 2008-04-25 | 2009-03-18 |  | 47.14d |  |
| 22 |  | GUI, AML, ML | 1.43d | 2008-04-25 | 2009-03-11 | 17 | 47.14d |  |
| 23 |  | Instrument interface, AI | 1.43d | 2009-03-16 | 2009-03-18 | 22 | 47.14d |  |
| 24 | 1.2.4 | **Platform Builder Image** | 13.86d? | 2008-02-07 | 2008-02-27 |  | 72.28d |  |
| 25 |  | Identifying the components which are to be added | 2.86d? | 2008-02-07 | 2008-02-13 | 1674 | 72.28d |  |
| 26 |  | Creating NK.bin | 1.43d? | 2008-02-13 | 2008-02-15 | 25 | 72.28d |  |
| 27 |  | Checking presence and working of all components | 1.43d? | 2008-02-15 | 2008-02-18 | 26 | 72.28d |  |
| 28 |  | Automation: Pushing this Image in the box | 2.86d? | 2008-02-18 | 2008-02-21 | 27 | 72.28d |  |
| 29 |  | Auto Installation of this Image in the box | 2.86d? | 2008-02-21 | 2008-02-26 | 28 | 72.28d |  |
| 30 |  | Integrating it with Trace Control & Registry settings | 1.43d? | 2008-02-26 | 2008-02-27 | 29 | 72.28d |  |
| 31 | 1.3 | **Front Panel Tasks** | 302.01d? | 2008-02-04 | 2009-04-01 |  | 37.13d |  |
| 32 | 1.3.1 | **Error & Debug Information** | 12.43d? | 2008-02-04 | 2008-02-20 |  | 52d |  |
| 33 |  | Design/Define common interface for Accessing Error Log system | 2.86d? | 2008-02-04 | 2008-02-06 |  | 52d |  |
| 34 |  | Implement Common Error Log system | 5.71d? | 2008-02-06 | 2008-02-15 | 33 | 52d |  |
| 35 |  | Unit Testing & Code Review | 2.86d? | 2008-02-15 | 2008-02-20 | 34 | 52d |  |
| 36 | 1.3.2 | **Define interface for All Major Component** | 22.43d? | 2008-02-04 | 2008-03-05 |  | 65.43d |  |
| 37 |  | AML Interface | 5d? | 2008-02-20 | 2008-02-27 | 35 | 53d |  |
| 38 |  | Instrument Interface | 6.36d? | 2008-02-04 | 2008-02-12 |  | 100.4d |  |
| 39 |  | AutoMation interface | 6.36d? | 2008-02-12 | 2008-02-20 | 38 | 100.4d |  |
| 40 |  | File Formatting Component | 5d? | 2008-02-27 | 2008-03-05 | 37 | 53d |  |
| 41 | 1.3.3 | **Define interface IGUIHardKey** | 10.23d? | 2008-02-04 | 2008-02-18 |  | 46.83d |  |
| 42 |  | Design, Review & Update | 3.08d? | 2008-02-04 | 2008-02-07 |  | 46.83d |  |
| 43 |  | Implementation | 6.15d? | 2008-02-07 | 2008-02-18 | 42 | 46.83d |  |
| 44 | 1.3.4 | **FP Events Flow Mechanism** | 17.69d? | 2008-02-18 | 2008-03-12 |  | 47.83d |  |
| 45 |  | Define all FP events | 3.08d? | 2008-02-18 | 2008-02-21 | 43 | 47.83d |  |
| 46 |  | Implement EventProcessor | 3.08d? | 2008-02-21 | 2008-02-26 | 45 | 47.83d |  |
| 47 |  | Implement Event Dispatcher | 3.08d? | 2008-02-26 | 2008-02-29 | 46 | 48.83d |  |
| 48 |  | Implement Basic Event Target | 3.08d? | 2008-02-29 | 2008-03-05 | 47 | 48.83d |  |
| 49 |  | Implement change in Target Priority | 3.08d? | 2008-03-05 | 2008-03-10 | 48 | 48.83d |  |
| 50 |  | Code Review | 2.31d | 2008-03-10 | 2008-03-12 | 49 | 48.83d |  |
| 51 | 1.3.5 | **Start/Shut down activity** | 10d? | 2008-02-27 | 2008-03-12 |  | 72.28d |  |
| 52 |  | Design Start/Shut down framework | 2.86d? | 2008-02-27 | 2008-03-03 | 30 | 72.28d |  |
| 53 |  | Implementation & Unit testing | 5.71d? | 2008-03-03 | 2008-03-11 | 52 | 72.28d |  |
| 54 |  | Code Review/ Unit test case review/Design screen/ Screen usability reviews with Jan Ryles | 1.43d | 2008-03-11 | 2008-03-12 | 53 | 72.28d |  |
| 55 | 1.3.6 | **Splash Screen** | 12.43d? | 2008-03-12 | 2008-03-31 |  | 71.28d |  |
| 56 |  | Design framework & splash screen, Review with Jan Ryles | 2.86d? | 2008-03-12 | 2008-03-17 | 54 | 72.28d |  |
| 57 |  | Implement Framework | 2.86d? | 2008-03-17 | 2008-03-20 | 56 | 72.28d |  |
| 58 |  | Incorporate the Intilization Events to show progress | 1.43d? | 2008-03-20 | 2008-03-24 | 57 | 71.28d |  |
| 59 |  | Integrate splash screen with Start Shut down activity | 1.43d? | 2008-03-24 | 2008-03-26 | 58 | 71.28d |  |
| 60 |  | Unit test case,Design review/Code review | 2.86d? | 2008-03-26 | 2008-03-31 | 59 | 71.28d |  |
| 61 | 1.3.7 | **Display layout Management** | 18.69d? | 2008-03-12 | 2008-04-08 |  | 47.83d |  |
| 62 |  | Design Display Layout | 2.31d? | 2008-03-12 | 2008-03-17 | 50 | 48.83d |  |
| 63 |  | Change Active Display | 3.08d? | 2008-03-17 | 2008-03-20 | 62 | 48.83d |  |
| 64 |  | Configure Layout/Number of Display | 4.62d? | 2008-03-20 | 2008-03-27 | 63 | 47.83d |  |
| 65 |  | Display Traversing | 3.08d? | 2008-03-27 | 2008-04-01 | 64 | 47.83d |  |
| 66 |  | Show/Hide Status & Softkey bar | 1.54d? | 2008-04-01 | 2008-04-03 | 65 | 47.83d |  |
| 67 |  | Full screen Graph Mode | 1.54d? | 2008-04-03 | 2008-04-07 | 66 | 47.83d |  |
| 68 |  | Code Review | 1.54d | 2008-04-07 | 2008-04-08 | 67 | 47.83d |  |
| 69 | 1.3.8 | **XML Based Menu Tree Framework** | 20.29d? | 2008-03-05 | 2008-04-02 |  | 52d |  |
| 70 |  | Design XML schema | 2.14d? | 2008-03-05 | 2008-03-07 | 40 | 53d |  |

| ID | WBS | Task | Duration | Start | Finish | Predecessors | Total float |
| --- | --- | --- | --- | --- | --- | --- | --- |
| 71 |  | Desgin SoftKey handling Framework | 2.14d? | 2008-03-07 | 2008-03-11 | 70 | 53d |
| 72 |  | Populate Softkey handler memory objects from XML File | 2.14d? | 2008-03-11 | 2008-03-13 | 71 | 53d |
| 73 |  | Implement Softkey ( 4/7 ) More key Traversing mechansim | 2.14d? | 2008-03-13 | 2008-03-18 | 72 | 53d |
| 74 |  | Implement Back Key functionality | 2.14d? | 2008-03-18 | 2008-03-20 | 73 | 53d |
| 75 |  | Implement Combo Box based Selection Mechansim | 2.14d? | 2008-03-20 | 2008-03-25 | 74 | 52d |
| 76 |  | Implement bi-value based selection ( Show/Hide, AC/DC etc) | 2.14d? | 2008-03-25 | 2008-03-27 | 75 | 52d |
| 77 |  | Unit test case for validating Menu State & Code review | 2.86d? | 2008-03-27 | 2008-04-01 | 76 | 52d |
| 78 |  | Lighten the respected Hard key's | 1.43d? | 2008-04-01 | 2008-04-02 | 77 | 52d |
| 79 | 1.3.9 | **Screen Capture** | 9.23d? | 2008-07-02 | 2008-07-15 |  | 38.13d |
| 80 |  | Screen Design | 3.08d? | 2008-07-02 | 2008-07-07 | 1697 | 38.13d |
| 81 |  | Supporting JPEG format | 3.08d? | 2008-07-07 | 2008-07-10 | 80 | 38.13d |
| 82 |  | Supporting BMP File format | 3.08d? | 2008-07-10 | 2008-07-15 | 81 | 38.13d |
| 83 | 1.3.10 | **Menu Map** | 12.31d? | 2008-07-15 | 2008-07-31 |  | 39.13d |
| 84 |  | Design screen | 3.08d? | 2008-07-15 | 2008-07-18 | 82 | 39.13d |
| 85 |  | Implement Traversing mechanism ( hook with FP events) | 6.15d? | 2008-07-18 | 2008-07-28 | 84 | 39.13d |
| 86 |  | Print Menu Map | 3.08d? | 2008-07-28 | 2008-07-31 | 85 | 39.13d |
| 87 | 1.3.11 | **Status Panel** | 9.23d? | 2008-07-31 | 2008-08-14 |  | 39.13d |
| 88 |  | Design Status Panel layout/ Exposed classes/ Functions | 3.08d? | 2008-07-31 | 2008-08-05 | 86 | 39.13d |
| 89 |  | Implementation of status panel | 3.08d? | 2008-08-05 | 2008-08-11 | 88 | 39.13d |
| 90 |  | Unit test case | 1.54d? | 2008-08-11 | 2008-08-12 | 89 | 40.13d |
| 91 |  | Code reviews/unit test case reviews | 1.54d | 2008-08-12 | 2008-08-14 | 90 | 40.13d |
| 92 | 1.3.12 | **Screen Header Panel** | 11.77d? | 2008-08-14 | 2008-08-29 |  | 40.13d |
| 93 |  | Design screen header layouts/ Class/ Exposed function | 3.08d? | 2008-08-14 | 2008-08-20 | 91 | 40.13d |
| 94 |  | Implementation | 4.62d? | 2008-08-20 | 2008-08-26 | 93 | 40.13d |
| 95 |  | Unit test case | 1.54d? | 2008-08-26 | 2008-08-28 | 94 | 40.13d |
| 96 |  | Code reviews/unit test case reviews | 1.54d | 2008-08-28 | 2008-08-29 | 95 | 40.13d |
| 97 | 1.3.13 | **Display Error Log** | 21d? | 2008-08-29 | 2008-09-29 |  | 40.13d |
| 98 |  | Design screen for showing Error Log/ Review with Jan Ryles | 3.08d? | 2008-08-29 | 2008-09-04 | 96 | 40.13d |
| 99 |  | Implementation | 4.62d? | 2008-09-04 | 2008-09-11 | 98 | 40.13d |
| 100 |  | Save Error Log in different format | 3.08d? | 2008-09-11 | 2008-09-16 | 99 | 40.13d |
| 101 |  | Filter Error log | 3.08d? | 2008-09-16 | 2008-09-19 | 100 | 40.13d |
| 102 |  | Enable/Show/Clear/Save Debug Error log | 4.62d? | 2008-09-19 | 2008-09-26 | 101 | 40.13d |
| 103 |  | Code reviews/unit test case reviews | 1.54d | 2008-09-26 | 2008-09-29 | 102 | 40.13d |
| 104 | 1.3.14 | **Configure Analyzer Type : FFT** | 5d? | 2008-04-02 | 2008-04-09 |  | 52d |
| 105 |  | Implementation | 3.57d? | 2008-04-02 | 2008-04-08 | 78 | 52d |
| 106 |  | Unit Testing/Code Review | 1.43d? | 2008-04-08 | 2008-04-09 | 105 | 52d |
| 107 | 1.3.15 | **Configure Analyzer Type: Swept Sine** | 6d? | 2008-04-09 | 2008-04-17 |  | 51d |
| 108 |  | Implementation | 3.57d? | 2008-04-09 | 2008-04-16 | 106 | 51d |
| 109 |  | Unit Testing/Code Review | 1.43d? | 2008-04-16 | 2008-04-17 | 108 | 51d |
| 110 | 1.3.16 | **Configure Analyzer Type: Octave** | 6d? | 2008-04-17 | 2008-04-25 |  | 50d |
| 111 |  | Implementation | 3.57d? | 2008-04-17 | 2008-04-24 | 109 | 50d |
| 112 |  | Unit Testing/Code Review | 1.43d? | 2008-04-24 | 2008-04-25 | 111 | 50d |
| 113 | 1.3.17 | **Configure Analyzer Frequency** | 5.71d? | 2008-03-31 | 2008-04-07 |  | 71.28d |
| 114 |  | Implementation | 4.29d? | 2008-03-31 | 2008-04-04 | 60, 112 | 71.28d |
| 115 |  | Unit Testing/Code Review | 1.43d? | 2008-04-04 | 2008-04-07 | 114 | 71.28d |
| 116 | 1.3.18 | **Configure Analyzer Channels** | 6d? | 2008-04-07 | 2008-04-15 |  | 70.28d |
| 117 |  | Implementation | 3.57d? | 2008-04-07 | 2008-04-11 | 115 | 71.28d |
| 118 |  | Unit Testing/Code Review | 1.43d? | 2008-04-11 | 2008-04-15 | 117 | 70.28d |
| 119 | 1.3.19 | **Configure Analyzer Source** | 11d? | 2008-04-15 | 2008-04-30 |  | 69.28d |
| 120 |  | Implementation | 3.57d? | 2008-04-15 | 2008-04-29 | 118 | 69.28d |
| 121 |  | Unit Testing/Code Review | 1.43d? | 2008-04-29 | 2008-04-30 | 120 | 69.28d |
| 122 | 1.3.20 | **Configure Triggering : Free Run** | 8.15d? | 2008-09-29 | 2008-10-10 |  | 38.13d |
| 123 |  | Design Screen | 1.54d? | 2008-09-29 | 2008-10-01 | 103, 121 | 40.13d |
| 124 |  | Implementation | 3.08d? | 2008-10-01 | 2008-10-07 | 123 | 39.13d |
| 125 |  | Code/unit test Review | 1.54d? | 2008-10-07 | 2008-10-10 | 124 | 38.13d |
| 126 | 1.3.21 | **Configure Triggering : External Source** | 7.69d? | 2008-10-10 | 2008-10-21 |  | 38.13d |
| 127 |  | Design Screen | 1.54d? | 2008-10-10 | 2008-10-13 | 125 | 38.13d |
| 128 |  | Implementation | 4.62d? | 2008-10-13 | 2008-10-20 | 127 | 38.13d |
| 129 |  | Code/unit test Review | 1.54d? | 2008-10-20 | 2008-10-21 | 128 | 39.13d |
| 130 | 1.3.22 | **Configure Triggering : Internal Source** | 7.15d? | 2008-10-21 | 2008-10-30 |  | 38.13d |
| 131 |  | Design Screen | 1.54d? | 2008-10-21 | 2008-10-23 | 129 | 39.13d |
| 132 |  | Implementation | 3.08d? | 2008-10-23 | 2008-10-29 | 131 | 38.13d |
| 133 |  | Code/unit test Review | 1.54d? | 2008-10-29 | 2008-10-30 | 132 | 38.13d |
| 134 | 1.3.23 | **Configure Triggering : Channel** | 6.15d? | 2008-10-30 | 2008-11-10 |  | 38.13d |
| 135 |  | Design Screen | 1.54d? | 2008-10-30 | 2008-11-03 | 133 | 38.13d |
| 136 |  | Implementation | 3.08d? | 2008-11-03 | 2008-11-06 | 135 | 39.13d |
| 137 |  | Code/unit test Review | 1.54d? | 2008-11-06 | 2008-11-10 | 136 | 39.13d |
| 138 | 1.3.24 | **Configure ARM : Automatic** | 4.62d? | 2008-11-10 | 2008-11-14 |  | 39.13d |
| 139 |  | Implementation | 3.08d? | 2008-11-10 | 2008-11-13 | 137 | 39.13d |
| 140 |  | Code/unit test Review | 1.54d? | 2008-11-13 | 2008-11-14 | 139 | 39.13d |

| ID | WBS | Task | Duration | Start | Finish | Predecessors | Total float |
| --- | --- | --- | --- | --- | --- | --- | --- |
| 141 | 1.3.25 | **Configure ARM : Manual** | 4.62d? | 2008-11-14 | 2008-11-21 |  | 39.13d |
| 142 |  | Implementation | 3.08d? | 2008-11-14 | 2008-11-19 | 140 | 39.13d |
| 143 |  | Code/unit test Review | 1.54d? | 2008-11-19 | 2008-11-21 | 142 | 39.13d |
| 144 | 1.3.26 | **Configure ARM : Time Step** | 4.62d? | 2008-11-21 | 2008-11-27 |  | 39.13d |
| 145 |  | Implementation | 3.08d? | 2008-11-21 | 2008-11-26 | 143 | 39.13d |
| 146 |  | Code/unit test Review | 1.54d? | 2008-11-26 | 2008-11-27 | 145 | 39.13d |
| 147 | 1.3.27 | **Configure ARM : RPM Step** | 4.62d? | 2008-11-27 | 2008-12-04 |  | 39.13d |
| 148 |  | Implementation | 3.08d? | 2008-11-27 | 2008-12-02 | 146 | 39.13d |
| 149 |  | Code/unit test Review | 1.54d? | 2008-12-02 | 2008-12-04 | 148 | 39.13d |
| 150 | 1.3.28 | **Start/Pause/Run** | 9.57d? | 2008-04-25 | 2008-05-09 |  | 49d |
| 151 |  | Design the framework | 2.14d? | 2008-04-25 | 2008-04-29 | 112, 149 | 50d |
| 152 |  | Implementation of Run Behaviour | 2.86d? | 2008-04-29 | 2008-05-05 | 151 | 49d |
| 153 |  | Unit testing and Code Review/ Unit test case review | 2.14d? | 2008-05-05 | 2008-05-07 | 152 | 49d |
| 154 |  | Code Review/ Unit test case review | 1.43d | 2008-05-07 | 2008-05-09 | 153 | 49d |
| 155 | 1.3.29 | **Averaging** | 7.14d? | 2008-05-09 | 2008-05-20 |  | 49d |
| 156 |  | Configure different type of Averaging | 2.86d? | 2008-05-09 | 2008-05-14 | 154 | 49d |
| 157 |  | Implement Hooks for Manual Averaging (Accept /Reject) | 4.29d? | 2008-05-14 | 2008-05-20 | 156 | 49d |
| 158 | 1.3.30 | **Module Integration** | 5.71d? | 2008-05-20 | 2008-05-28 |  | 49d |
| 159 |  | GUI - Inst Interface | 2.86d? | 2008-05-20 | 2008-05-23 | 157 | 49d |
| 160 |  | GUI - AML | 2.86d? | 2008-05-23 | 2008-05-28 | 159 | 49d |
| 161 | 1.3.31 | **Configure Measurements: THD** | 17.86d? | 2008-05-28 | 2008-06-23 |  | 49d |
| 162 |  | Design screen for THD configuration | 2.14d? | 2008-05-28 | 2008-05-30 | 160 | 49d |
| 163 |  | Implement Framework for Temporary Measurement flow | 3.57d? | 2008-05-30 | 2008-06-04 | 162 | 49d |
| 164 |  | Implement screen ( With Live Chart) | 3.57d? | 2008-06-04 | 2008-06-10 | 163 | 49d |
| 165 |  | Hooks the value change on screen with Temporary Measurement flow | 2.14d? | 2008-06-10 | 2008-06-12 | 164 | 50d |
| 166 |  | Display THD Measurement Value on Status bar | 2.14d? | 2008-06-12 | 2008-06-16 | 165 | 50d |
| 167 |  | Unit test case | 2.86d? | 2008-06-16 | 2008-06-19 | 166 | 50d |
| 168 |  | Code Review/ Unit test case review/Design screen/ Screen usability reviews with Jan Ryles | 1.43d | 2008-06-19 | 2008-06-23 | 167 | 50d |
| 169 | 1.3.32 | **Configure Measurements : THD+n** | 15.08d? | 2008-04-08 | 2008-04-29 |  | 45.83d |
| 170 |  | Design screen for THD+n configuration | 1.54d? | 2008-04-08 | 2008-04-10 | 68, 67 | 47.83d |
| 171 |  | Implement Framework for Temporary Measurement flow | 3.08d? | 2008-04-10 | 2008-04-16 | 170 | 46.83d |
| 172 |  | Implement screen ( With Live Chart) | 1.54d? | 2008-04-16 | 2008-04-17 | 171 | 46.83d |
| 173 |  | Hooks the value change on screen with Temporary Measurement flow | 1.54d? | 2008-04-17 | 2008-04-22 | 172 | 45.83d |
| 174 |  | Display THD+n Measurement Value on Status bar | 2.31d | 2008-04-22 | 2008-04-24 | 173 | 45.83d |
| 175 |  | Unit test case | 1.54d? | 2008-04-24 | 2008-04-28 | 174 | 45.83d |
| 176 |  | Code Review/ Unit test case review/Design screen/ Screen usability reviews with Jan Ryles | 1.54d | 2008-04-28 | 2008-04-29 | 175 | 45.83d |
| 177 | 1.3.33 | **Configure Measurements : ENOB** | 13.31d? | 2008-04-29 | 2008-05-19 |  | 44.83d |
| 178 |  | Design screen for ENOB configuration | 1.54d? | 2008-04-29 | 2008-05-02 | 176 | 44.83d |
| 179 |  | Implement Framework for Temporary Measurement flow | 2.31d? | 2008-05-02 | 2008-05-06 | 178 | 44.83d |
| 180 |  | Implement screen ( With Live Chart) | 1.54d? | 2008-05-06 | 2008-05-08 | 179 | 44.83d |
| 181 |  | Hooks the value change on screen with Temporary Measurement flow | 1.54d? | 2008-05-08 | 2008-05-09 | 180 | 44.83d |
| 182 |  | Display ENOB Measurement Value on Status bar | 2.31d | 2008-05-09 | 2008-05-13 | 181 | 44.83d |
| 183 |  | Unit test case | 1.54d? | 2008-05-13 | 2008-05-15 | 182 | 44.83d |
| 184 |  | Code Review/ Unit test case review/Design screen/ Screen usability reviews with Jan Ryles | 1.54d | 2008-05-15 | 2008-05-19 | 183 | 44.83d |
| 185 | 1.3.34 | **Configure Measurements : SNR** | 11.54d? | 2008-05-19 | 2008-06-03 |  | 44.83d |
| 186 |  | Design screen for SNR configuration | 1.54d? | 2008-05-19 | 2008-05-20 | 184 | 44.83d |
| 187 |  | Implement Framework for Temporary Measurement flow | 2.31d? | 2008-05-20 | 2008-05-22 | 186 | 44.83d |
| 188 |  | Implement screen ( With Live Chart) | 1.54d? | 2008-05-22 | 2008-05-26 | 187 | 44.83d |
| 189 |  | Hooks the value change on screen with Temporary Measurement flow | 1.54d? | 2008-05-26 | 2008-05-27 | 188 | 44.83d |
| 190 |  | Display SNR Measurement Value on Status bar | 1.54d | 2008-05-27 | 2008-05-29 | 189 | 44.83d |
| 191 |  | Unit test case | 1.54d? | 2008-05-29 | 2008-06-02 | 190 | 44.83d |
| 192 |  | Code Review/ Unit test case review/Design screen/ Screen usability reviews with Jan Ryles | 1.54d | 2008-06-02 | 2008-06-03 | 191 | 44.83d |
| 193 | 1.3.35 | **Configure Measurements : SFDR** | 11.54d? | 2008-06-03 | 2008-06-19 |  | 44.83d |
| 194 |  | Design screen for SFDR configuration | 1.54d? | 2008-06-03 | 2008-06-05 | 192 | 44.83d |
| 195 |  | Implement Framework for Temporary Measurement flow | 2.31d? | 2008-06-05 | 2008-06-09 | 194 | 44.83d |
| 196 |  | Implement screen ( With Live Chart) | 1.54d? | 2008-06-09 | 2008-06-10 | 195 | 44.83d |
| 197 |  | Hooks the value change on screen with Temporary Measurement flow | 1.54d? | 2008-06-10 | 2008-06-12 | 196 | 44.83d |
| 198 |  | Display SFDR Measurement Value on Status bar | 1.54d | 2008-06-12 | 2008-06-16 | 197 | 44.83d |
| 199 |  | Unit test case | 1.54d? | 2008-06-16 | 2008-06-17 | 198 | 45.83d |
| 200 |  | Code Review/ Unit test case review/Design screen/ Screen usability reviews with Jan Ryles | 1.54d | 2008-06-17 | 2008-06-19 | 199 | 45.83d |
| 201 | 1.3.36 | **Configure Measurements : SINAD** | 11.54d? | 2008-06-19 | 2008-07-04 |  | 45.83d |
| 202 |  | Design screen for SINAD configuration | 1.54d? | 2008-06-19 | 2008-06-20 | 200 | 45.83d |
| 203 |  | Implement Framework for Temporary Measurement flow | 2.31d? | 2008-06-20 | 2008-06-24 | 202 | 45.83d |
| 204 |  | Implement screen ( With Live Chart) | 1.54d? | 2008-06-24 | 2008-06-26 | 203 | 45.83d |
| 205 |  | Hooks the value change on screen with Temporary Measurement flow | 1.54d? | 2008-06-26 | 2008-06-30 | 204 | 45.83d |
| 206 |  | Display SINAD Measurement Value on Status bar | 1.54d | 2008-06-30 | 2008-07-01 | 205 | 45.83d |
| 207 |  | Unit test case | 1.54d? | 2008-07-01 | 2008-07-03 | 206 | 46.83d |
| 208 |  | Code Review/ Unit test case review/Design screen/ Screen usability reviews with Jan Ryles | 1.54d | 2008-07-03 | 2008-07-04 | 207 | 46.83d |
| 209 | 1.3.37 | **Configure Measurements : Harmonic Power Value** | 11.54d? | 2008-07-04 | 2008-07-22 |  | 46.83d |
| 210 |  | Design screen for Harmonic Power configuration | 1.54d? | 2008-07-04 | 2008-07-08 | 208 | 46.83d |

| ID | WBS | Task | Duration | Start | Finish | Predecessors | Total float |
| --- | --- | --- | --- | --- | --- | --- | --- |
| 211 |  | Implement Framework for Temporary Measurement flow | 2.31d? | 2008-07-08 | 2008-07-10 | 210 | 46.83d |
| 212 |  | Implement screen ( With Live Chart) | 1.54d? | 2008-07-10 | 2008-07-14 | 211 | 46.83d |
| 213 |  | Hooks the value change on screen with Temporary Measurement flow | 1.54d? | 2008-07-14 | 2008-07-15 | 212 | 46.83d |
| 214 |  | Display Harmonic power value Measurement Value on Status bar | 1.54d | 2008-07-15 | 2008-07-17 | 213 | 46.83d |
| 215 |  | Unit test case | 1.54d? | 2008-07-17 | 2008-07-18 | 214 | 46.83d |
| 216 |  | Code Review/ Unit test case review/Design screen/ Screen usability reviews with Jan Ryles | 1.54d | 2008-07-18 | 2008-07-22 | 215 | 46.83d |
| 217 | 1.3.38 | **Configure Measurements : Side band power** | 11.54d? | 2008-07-22 | 2008-08-06 |  | 46.83d |
| 218 |  | Design screen for Side band power configuration | 1.54d? | 2008-07-22 | 2008-07-23 | 216 | 46.83d |
| 219 |  | Implement Framework for Temporary Measurement flow | 2.31d? | 2008-07-23 | 2008-07-28 | 218 | 46.83d |
| 220 |  | Implement screen ( With Live Chart) | 1.54d? | 2008-07-28 | 2008-07-29 | 219 | 46.83d |
| 221 |  | Hooks the value change on screen with Temporary Measurement flow | 1.54d? | 2008-07-29 | 2008-07-31 | 220 | 47.83d |
| 222 |  | Display side band power Measurement Value on Status bar | 1.54d | 2008-07-31 | 2008-08-01 | 221 | 47.83d |
| 223 |  | Unit test case | 1.54d? | 2008-08-01 | 2008-08-05 | 222 | 47.83d |
| 224 |  | Code Review/ Unit test case review/Design screen/ Screen usability reviews with Jan Ryles | 1.54d | 2008-08-05 | 2008-08-06 | 223 | 48.83d |
| 225 | 1.3.39 | **Configure Measurements : Band power value** | 12.54d? | 2008-08-06 | 2008-08-25 |  | 48.83d |
| 226 |  | Design screen for band power configuration | 1.54d? | 2008-08-06 | 2008-08-08 | 224, 168 | 48.83d |
| 227 |  | Implement Framework for Temporary Measurement flow | 2.31d? | 2008-08-08 | 2008-08-12 | 226 | 48.83d |
| 228 |  | Implement screen ( With Live Chart) | 1.54d? | 2008-08-12 | 2008-08-14 | 227 | 48.83d |
| 229 |  | Hooks the value change on screen with Temporary Measurement flow | 1.54d? | 2008-08-14 | 2008-08-18 | 228 | 47.83d |
| 230 |  | Display band power Measurement Value on Status bar | 1.54d | 2008-08-18 | 2008-08-20 | 229 | 47.83d |
| 231 |  | Unit test case | 1.54d? | 2008-08-20 | 2008-08-21 | 230 | 47.83d |
| 232 |  | Code Review/ Unit test case review/Design screen/ Screen usability reviews with Jan Ryles | 1.54d | 2008-08-21 | 2008-08-25 | 231 | 48.83d |
| 233 | 1.3.40 | **Configure Measurements : Gain & Phase margin** | 12.54d? | 2008-08-25 | 2008-09-10 |  | 47.83d |
| 234 |  | Design screen for band power configuration | 1.54d? | 2008-08-25 | 2008-08-26 | 232, 224 | 48.83d |
| 235 |  | Implement Framework for Temporary Measurement flow | 2.31d? | 2008-08-26 | 2008-08-29 | 234 | 48.83d |
| 236 |  | Implement screen ( With Live Chart) | 1.54d? | 2008-08-29 | 2008-09-01 | 235 | 48.83d |
| 237 |  | Hooks the value change on screen with Temporary Measurement flow | 1.54d? | 2008-09-01 | 2008-09-04 | 236 | 47.83d |
| 238 |  | Display band power Measurement Value on Status bar | 1.54d | 2008-09-04 | 2008-09-05 | 237 | 47.83d |
| 239 |  | Unit test case | 1.54d? | 2008-09-05 | 2008-09-09 | 238 | 47.83d |
| 240 |  | Code Review/ Unit test case review/Design screen/ Screen usability reviews with Jan Ryles | 1.54d | 2008-09-09 | 2008-09-10 | 239 | 47.83d |
| 241 | 1.3.41 | **Configure Measurements : Frequency dumping** | 11.71d? | 2008-04-30 | 2008-05-16 |  | 69.28d |
| 242 |  | Design screen for Frequency dumping configuration | 1.43d? | 2008-04-30 | 2008-05-05 | 121 | 68.28d |
| 243 |  | Implement Framework for Temporary Measurement flow | 2.14d? | 2008-05-05 | 2008-05-07 | 242 | 68.28d |
| 244 |  | Implement screen ( With Live Chart) | 1.43d? | 2008-05-07 | 2008-05-08 | 243 | 68.28d |
| 245 |  | Hooks the value change on screen with Temporary Measurement flow | 1.43d? | 2008-05-08 | 2008-05-12 | 244 | 68.28d |
| 246 |  | Display frequency dumping Value on Status bar | 1.43d | 2008-05-12 | 2008-05-13 | 245 | 68.28d |
| 247 |  | Unit test case | 1.43d? | 2008-05-13 | 2008-05-15 | 246 | 69.28d |
| 248 |  | Code Review/ Unit test case review/Design screen/ Screen usability reviews with Jan Ryles | 1.43d | 2008-05-15 | 2008-05-16 | 247 | 69.28d |
| 249 | 1.3.42 | **Configure Measurements : Delay Time** | 10.77d? | 2008-09-10 | 2008-09-25 |  | 47.83d |
| 250 |  | Design screen forDelay time configuration | 1.54d? | 2008-09-10 | 2008-09-12 | 240, 232 | 47.83d |
| 251 |  | Implement Framework for Temporary Measurement flow | 1.54d? | 2008-09-12 | 2008-09-15 | 250 | 47.83d |
| 252 |  | Implement screen ( With Live Chart) | 1.54d? | 2008-09-15 | 2008-09-17 | 251 | 47.83d |
| 253 |  | Hooks the value change on screen with Temporary Measurement flow | 1.54d? | 2008-09-17 | 2008-09-18 | 252 | 47.83d |
| 254 |  | Display Delay time Value on Status bar | 1.54d | 2008-09-18 | 2008-09-22 | 253 | 47.83d |
| 255 |  | Unit test case | 1.54d? | 2008-09-22 | 2008-09-24 | 254 | 47.83d |
| 256 |  | Code Review/ Unit test case review/Design screen/ Screen usability reviews with Jan Ryles | 1.54d | 2008-09-24 | 2008-09-25 | 255 | 47.83d |
| 257 | 1.3.43 | **Configure Measurements : Maximum overshoot** | 12.77d? | 2008-09-25 | 2008-10-14 |  | 46.83d |
| 258 |  | Design screen for maximum overshoot configuration | 1.54d? | 2008-09-25 | 2008-09-29 | 256, 240 | 47.83d |
| 259 |  | Implement Framework for Temporary Measurement flow | 1.54d? | 2008-09-29 | 2008-09-30 | 258 | 47.83d |
| 260 |  | Implement screen | 1.54d? | 2008-09-30 | 2008-10-03 | 259 | 46.83d |
| 261 |  | Hooks the value change on screen with Temporary Measurement flow | 1.54d? | 2008-10-03 | 2008-10-06 | 260 | 46.83d |
| 262 |  | Display maximum overshoot Value on Status bar | 1.54d | 2008-10-06 | 2008-10-08 | 261 | 47.83d |
| 263 |  | Unit test case | 1.54d? | 2008-10-08 | 2008-10-10 | 262 | 46.83d |
| 264 |  | Code Review/ Unit test case review/Design screen/ Screen usability reviews with Jan Ryles | 1.54d | 2008-10-10 | 2008-10-14 | 263 | 46.83d |
| 265 | 1.3.44 | **Configure Measurements : Rise time** | 10d? | 2008-05-16 | 2008-05-30 |  | 69.28d |
| 266 |  | Design screen for Rise time configuration | 1.43d? | 2008-05-16 | 2008-05-19 | 248 | 69.28d |
| 267 |  | Implement Framework for Temporary Measurement flow | 1.43d? | 2008-05-19 | 2008-05-21 | 266 | 69.28d |
| 268 |  | Implement screen | 1.43d? | 2008-05-21 | 2008-05-22 | 267 | 69.28d |
| 269 |  | Hooks the value change on screen with Temporary Measurement flow | 1.43d? | 2008-05-22 | 2008-05-26 | 268 | 69.28d |
| 270 |  | Display rise time Value on Status bar | 1.43d | 2008-05-26 | 2008-05-27 | 269 | 69.28d |
| 271 |  | Unit test case | 1.43d? | 2008-05-27 | 2008-05-29 | 270 | 69.28d |
| 272 |  | Code Review/ Unit test case review/Design screen/ Screen usability reviews with Jan Ryles | 1.43d | 2008-05-29 | 2008-05-30 | 271 | 70.28d |
| 273 | 1.3.45 | **Configure Measurements : Setting time** | 10d | 2008-05-30 | 2008-06-13 |  | 70.28d |
| 274 |  | Design screen for Setting time configuration | 1.43d | 2008-05-30 | 2008-06-02 | 272, 256 | 70.28d |
| 275 |  | Implement Framework for Temporary Measurement flow | 1.43d | 2008-06-02 | 2008-06-04 | 274 | 70.28d |
| 276 |  | Implement screen | 1.43d | 2008-06-04 | 2008-06-05 | 275 | 70.28d |
| 277 |  | Hooks the value change on screen with Temporary Measurement flow | 1.43d | 2008-06-05 | 2008-06-09 | 276 | 70.28d |
| 278 |  | Display setting time Value on Status bar | 1.43d | 2008-06-09 | 2008-06-10 | 277 | 70.28d |
| 279 |  | Unit test case | 1.43d | 2008-06-10 | 2008-06-12 | 278 | 70.28d |
| 280 |  | Code Review/ Unit test case review/Design screen/ Screen usability reviews with Jan Ryles | 1.43d | 2008-06-12 | 2008-06-13 | 279 | 70.28d |

| ID | WBS | Task | Duration | Start | Finish | Predecessors | Total float | Constraint |
| --- | --- | --- | --- | --- | --- | --- | --- | --- |
| 281 | 1.3.46 | **Configure Measurements : Decay Time** | 10.61d? | 2008-03-03 | 2008-03-17 |  | 95.81d |  |
| 282 |  | Design screen for decay time configuration | 2.04d? | 2008-03-03 | 2008-03-05 |  | 95.81d | start no earlier than 2008-03-03 |
| 283 |  | Implement Framework for Temporary Measurement flow | 1.43d? | 2008-03-05 | 2008-03-06 | 282 | 95.81d |  |
| 284 |  | Implement screen | 1.43d? | 2008-03-06 | 2008-03-07 | 283 | 95.81d |  |
| 285 |  | Hooks the value change on screen with Temporary Measurement flow | 1.43d? | 2008-03-07 | 2008-03-11 | 284 | 95.81d |  |
| 286 |  | Display decay time Value on Status bar | 1.43d | 2008-03-11 | 2008-03-12 | 285 | 95.81d |  |
| 287 |  | Unit test case | 1.43d? | 2008-03-12 | 2008-03-14 | 286 | 95.81d |  |
| 288 |  | Code Review/ Unit test case review/Design screen/ Screen usability reviews with Jan Ryles | 1.43d | 2008-03-14 | 2008-03-17 | 287 | 95.81d |  |
| 289 | 1.3.47 | **Configure Measurements : Pulse width** | 11d? | 2008-03-17 | 2008-04-01 |  | 94.81d |  |
| 290 |  | Design screen for pulse width configuration | 1.43d? | 2008-03-17 | 2008-03-19 | 288 | 95.81d |  |
| 291 |  | Implement Framework for Temporary Measurement flow | 1.43d? | 2008-03-19 | 2008-03-20 | 290 | 95.81d |  |
| 292 |  | Implement screen | 1.43d? | 2008-03-20 | 2008-03-24 | 291 | 94.81d |  |
| 293 |  | Hooks the value change on screen with Temporary Measurement flow | 1.43d? | 2008-03-24 | 2008-03-26 | 292 | 94.81d |  |
| 294 |  | Display pulse width Value on Status bar | 1.43d | 2008-03-26 | 2008-03-27 | 293 | 94.81d |  |
| 295 |  | Unit test case | 1.43d? | 2008-03-27 | 2008-03-31 | 294 | 94.81d |  |
| 296 |  | Code Review/ Unit test case review/Design screen/ Screen usability reviews with Jan Ryles | 1.43d | 2008-03-31 | 2008-04-01 | 295 | 94.81d |  |
| 297 | 1.3.48 | **Configure Measurements : Voltage Max** | 11d? | 2008-04-01 | 2008-04-16 |  | 94.81d |  |
| 298 |  | Design screen for voltage max configuration | 1.43d? | 2008-04-01 | 2008-04-03 | 296 | 94.81d |  |
| 299 |  | Implement Framework for Temporary Measurement flow | 1.43d? | 2008-04-03 | 2008-04-04 | 298 | 94.81d |  |
| 300 |  | Implement screen | 1.43d? | 2008-04-04 | 2008-04-07 | 299 | 95.81d |  |
| 301 |  | Hooks the value change on screen with Temporary Measurement flow | 1.43d? | 2008-04-07 | 2008-04-09 | 300 | 95.81d |  |
| 302 |  | Display voltage max value on Status bar | 1.43d | 2008-04-09 | 2008-04-10 | 301 | 95.81d |  |
| 303 |  | Unit test case | 1.43d? | 2008-04-10 | 2008-04-15 | 302 | 94.81d |  |
| 304 |  | Code Review/ Unit test case review/Design screen/ Screen usability reviews with Jan Ryles | 1.43d | 2008-04-15 | 2008-04-16 | 303 | 94.81d |  |
| 305 | 1.3.49 | **Configure Measurements : Voltage Min** | 11.77d? | 2008-10-14 | 2008-10-30 |  | 46.83d |  |
| 306 |  | Design screen for voltage max configuration | 1.54d? | 2008-10-14 | 2008-10-15 | 264 | 46.83d |  |
| 307 |  | Implement Framework for Temporary Measurement flow | 1.54d? | 2008-10-15 | 2008-10-17 | 306 | 46.83d |  |
| 308 |  | Implement screen | 1.54d? | 2008-10-17 | 2008-10-20 | 307 | 46.83d |  |
| 309 |  | Hooks the value change on screen with Temporary Measurement flow | 1.54d? | 2008-10-20 | 2008-10-22 | 308 | 46.83d |  |
| 310 |  | Display voltage min value on Status bar | 1.54d | 2008-10-22 | 2008-10-24 | 309 | 47.83d |  |
| 311 |  | Unit test case | 1.54d? | 2008-10-24 | 2008-10-27 | 310 | 47.83d |  |
| 312 |  | Code Review/ Unit test case review/Design screen/ Screen usability reviews with Jan Ryles | 1.54d | 2008-10-27 | 2008-10-30 | 311 | 46.83d |  |
| 313 | 1.3.50 | **Configure Complex Conjugate** | 11.43d? | 2008-06-13 | 2008-06-30 |  | 70.28d |  |
| 314 |  | Design screen for complex conjugate configuration | 1.43d? | 2008-06-13 | 2008-06-16 | 280, 272 | 70.28d |  |
| 315 |  | Implement Framework for Temporary Measurement flow to display Complex conjugate result | 2.86d? | 2008-06-16 | 2008-06-19 | 314 | 70.28d |  |
| 316 |  | Implement screen | 2.14d? | 2008-06-19 | 2008-06-23 | 315 | 70.28d |  |
| 317 |  | Hooks the value change on screen with Temporary Measurement flow | 2.14d? | 2008-06-23 | 2008-06-26 | 316 | 70.28d |  |
| 318 |  | Unit test case | 1.43d? | 2008-06-26 | 2008-06-27 | 317 | 71.28d |  |
| 319 |  | Code Review/ Unit test case review/Design screen/ Screen usability reviews with Jan Ryles | 1.43d | 2008-06-27 | 2008-06-30 | 318 | 71.28d |  |
| 320 | 1.3.51 | **Configure Limit line Analysis** | 11.43d? | 2008-06-23 | 2008-07-08 |  | 50d |  |
| 321 |  | Design screen for limit line configuration | 1.43d? | 2008-06-23 | 2008-06-24 | 168, 280 | 50d |  |
| 322 |  | Implement Framework for Temporary Measurement flow to display Complex conjugate result | 2.86d? | 2008-06-24 | 2008-06-27 | 321 | 50d |  |
| 323 |  | Implement screen | 2.14d? | 2008-06-27 | 2008-07-01 | 322 | 51d |  |
| 324 |  | Hooks the value change on screen with Temporary Measurement flow | 2.14d? | 2008-07-01 | 2008-07-03 | 323 | 51d |  |
| 325 |  | Unit test case | 1.43d? | 2008-07-03 | 2008-07-07 | 324 | 51d |  |
| 326 |  | Code Review/ Unit test case review/Design screen/ Screen usability reviews with Jan Ryles | 1.43d | 2008-07-07 | 2008-07-08 | 325 | 51d |  |
| 327 | 1.3.52 | **Configure Math Analysis** | 12.31d? | 2008-10-30 | 2008-11-17 |  | 46.83d |  |
| 328 |  | Design screen for limit line configuration | 1.54d? | 2008-10-30 | 2008-10-31 | 312 | 46.83d |  |
| 329 |  | Implement Framework for Temporary Measurement flow to display Complex conjugate result | 3.08d? | 2008-10-31 | 2008-11-05 | 328 | 46.83d |  |
| 330 |  | Implement screen | 2.31d? | 2008-11-05 | 2008-11-10 | 329 | 46.83d |  |
| 331 |  | Hooks the value change on screen with Temporary Measurement flow | 2.31d? | 2008-11-10 | 2008-11-12 | 330 | 46.83d |  |
| 332 |  | Unit test case | 1.54d? | 2008-11-12 | 2008-11-13 | 331 | 46.83d |  |
| 333 |  | Code Review/ Unit test case review/Design screen/ Screen usability reviews with Jan Ryles | 1.54d | 2008-11-13 | 2008-11-17 | 332 | 46.83d |  |
| 334 | 1.3.53 | **Local/Remote Mode Implication** | 4.29d? | 2008-07-08 | 2008-07-14 |  | 51d |  |
| 335 |  | Configuring all FP components in Local & Remote mode | 2.14d? | 2008-07-08 | 2008-07-10 | 326 | 51d |  |
| 336 |  | Unit testing | 2.14d? | 2008-07-10 | 2008-07-14 | 335 | 51d |  |
| 337 | 1.3.54 | **LAN Configuration** | 10d? | 2008-11-17 | 2008-12-01 |  | 46.83d |  |
| 338 |  | Screen design/Implemenattion | 2.31d? | 2008-11-17 | 2008-11-19 | 333 | 46.83d |  |
| 339 |  | Implementation | 4.62d? | 2008-11-19 | 2008-11-26 | 338 | 46.83d |  |
| 340 |  | Unit test case for Changing configuration | 3.08d? | 2008-11-26 | 2008-12-01 | 339 | 46.83d |  |
| 341 | 1.3.55 | **Display System Information** | 11d? | 2008-12-04 | 2008-12-19 |  | 38.13d |  |
| 342 |  | Screen for System information | 2.31d? | 2008-12-04 | 2008-12-08 | 149, 336 | 39.13d |  |
| 343 |  | Implementation | 4.62d? | 2008-12-08 | 2008-12-16 | 342 | 38.13d |  |
| 344 |  | Unit test case | 3.08d? | 2008-12-16 | 2008-12-19 | 343 | 38.13d |  |
| 345 | 1.3.56 | **Display Hardware information** | 7.15d? | 2008-12-01 | 2008-12-10 |  | 45.83d |  |
| 346 |  | Screen design for Hardware information | 1.54d? | 2008-12-01 | 2008-12-02 | 340 | 46.83d |  |
| 347 |  | Implementation | 3.08d? | 2008-12-02 | 2008-12-08 | 346 | 46.83d |  |
| 348 |  | Unit Test cases | 1.54d? | 2008-12-08 | 2008-12-10 | 347 | 45.83d |  |
| 349 | 1.3.57 | **Web service** | 6.15d? | 2008-12-10 | 2008-12-18 |  | 45.83d |  |
| 350 |  | Basix LXI support pages | 3.08d? | 2008-12-10 | 2008-12-15 | 348 | 45.83d |  |

| ID | WBS | Task | Duration | Start | Finish | Predecessors | Total float |
| --- | --- | --- | --- | --- | --- | --- | --- |
| 351 |  | With in Device Testing | 3.08d? | 2008-12-15 | 2008-12-18 | 350 | 45.83d |
| 352 | 1.3.58 | **Software Licensing** | 20d? | 2008-07-14 | 2008-08-11 |  | 51d |
| 353 |  | Design screen for Display License | 2.86d? | 2008-07-14 | 2008-07-17 | 336, 344 | 51d |
| 354 |  | Design screen for License Activation | 2.86d? | 2008-07-17 | 2008-07-22 | 353 | 51d |
| 355 |  | Design screen for License De-Activation | 2.86d? | 2008-07-22 | 2008-07-25 | 354 | 51d |
| 356 |  | Implementing Licensing Framework | 4.29d? | 2008-07-25 | 2008-07-31 | 355 | 52d |
| 357 |  | Integrate Mirage Lic framework with CDF Licensing Capability | 4.29d? | 2008-07-31 | 2008-08-06 | 356 | 53d |
| 358 |  | Unit test case for Lic verification (GUI, Measurement, SCPI etc) | 2.86d? | 2008-08-06 | 2008-08-11 | 357 | 53d |
| 359 | 1.3.59 | **Software Version Display / Install update** | 11.77d? | 2008-12-19 | 2009-01-06 |  | 37.13d |
| 360 |  | Design screen for displaying Software Version | 1.54d? | 2008-12-19 | 2008-12-23 | 344, 103 | 38.13d |
| 361 |  | Design screen for Installing software update | 2.31d? | 2008-12-23 | 2008-12-26 | 360 | 37.13d |
| 362 |  | Implemenation ( Display Software version) | 2.31d? | 2008-12-26 | 2008-12-30 | 361 | 37.13d |
| 363 |  | Implementation ( Install updates) | 2.31d? | 2008-12-30 | 2009-01-01 | 362 | 37.13d |
| 364 |  | Unit test case | 2.31d? | 2009-01-01 | 2009-01-06 | 363 | 37.13d |
| 365 | 1.3.60 | **Self Test** | 1.54d? | 2009-03-20 | 2009-03-23 |  | 43.29d |
| 366 |  | TBD | 1.54d? | 2009-03-20 | 2009-03-23 | 364 | 43.29d |
| 367 | 1.3.61 | **Calibration** | 5.62d? | 2008-12-18 | 2008-12-26 |  | 44.83d |
| 368 |  | Auto Calibration | 3.08d? | 2008-12-18 | 2008-12-23 | 351 | 45.83d |
| 369 |  | Calibrate once | 1.54d? | 2008-12-23 | 2008-12-26 | 368 | 44.83d |
| 370 | 1.3.62 | **User Preference** | 12.31d? | 2009-01-06 | 2009-01-22 |  | 37.13d |
| 371 |  | Warning Beap | 1.54d? | 2009-01-06 | 2009-01-07 | 364 | 37.13d |
| 372 |  | Front Panel lock out | 1.54d? | 2009-01-07 | 2009-01-09 | 371 | 37.13d |
| 373 |  | Date/Time Format | 1.54d? | 2009-01-09 | 2009-01-12 | 372 | 37.13d |
| 374 |  | Color Schema | 3.08d? | 2009-01-12 | 2009-01-15 | 373 | 37.13d |
| 375 |  | Power ON & Preset State | 4.62d? | 2009-01-15 | 2009-01-22 | 374 | 37.13d |
| 376 | 1.3.63 | **Help** | 9.23d? | 2009-01-22 | 2009-02-04 |  | 37.13d |
| 377 |  | Access online manual help & Display version | 2.31d? | 2009-01-22 | 2009-01-26 | 375 | 37.13d |
| 378 |  | Installed localized help file | 1.54d? | 2009-01-26 | 2009-01-28 | 377 | 37.13d |
| 379 |  | Print Help in different format | 1.54d? | 2009-01-28 | 2009-01-29 | 378 | 37.13d |
| 380 |  | Link each help button with its page | 3.85d? | 2009-01-29 | 2009-02-04 | 379 | 37.13d |
| 381 | 1.3.64 | **Charting** | 157.55d? | 2008-06-30 | 2009-02-05 |  | 44.83d |
| 382 | 1.3.64.1 | **Linear spectrum Chart** | 18.57d? | 2008-06-30 | 2008-07-25 |  | 71.28d |
| 383 |  | Implement Chart View Object | 3.57d? | 2008-06-30 | 2008-07-04 | 319 | 71.28d |
| 384 |  | Support multiple X-Axis Type ( Lin, Log) | 2.86d? | 2008-07-04 | 2008-07-09 | 383 | 72.28d |
| 385 |  | Support multiple Data point units | 1.43d? | 2008-07-09 | 2008-07-10 | 384 | 72.28d |
| 386 |  | Y-Axis Scaling ( Auto Sclaing) Display only | 1.43d? | 2008-07-10 | 2008-07-14 | 385 | 72.28d |
| 387 |  | Multiple channels support | 2.86d? | 2008-07-14 | 2008-07-17 | 386 | 72.28d |
| 388 |  | Integrate with data push mechnaism | 1.43d? | 2008-07-17 | 2008-07-18 | 387 | 72.28d |
| 389 |  | unit testing | 2.86d? | 2008-07-18 | 2008-07-23 | 388 | 73.28d |
| 390 |  | Code Review/ Unit test case review/Design screen/ Screen usability reviews with Jan Ryles | 2.14d | 2008-07-23 | 2008-07-25 | 389 | 73.28d |
| 391 | 1.3.64.2 | **Auto Power spectrum Chart** | 7.14d? | 2008-07-25 | 2008-08-05 |  | 73.28d |
| 392 |  | Implement Chart View Object | 2.14d? | 2008-07-25 | 2008-07-29 | 390 | 73.28d |
| 393 |  | Support multiple X-Axis Type ( Lin, Log) & Y-Axis scaling | 1.43d? | 2008-07-29 | 2008-07-31 | 392 | 73.28d |
| 394 |  | Support multiple Data point units and Multiple channels support\Marker support | 1.43d? | 2008-07-31 | 2008-08-01 | 393 | 73.28d |
| 395 |  | Unit test case | 1.43d? | 2008-08-01 | 2008-08-04 | 394 | 73.28d |
| 396 |  | Code Review/ Unit test case review/Design screen/ Screen usability reviews with Jan Ryles | 0.71d | 2008-08-04 | 2008-08-05 | 395 | 73.28d |
| 397 | 1.3.64.3 | **Cross Power spectrum Chart** | 18.86d? | 2008-08-05 | 2008-09-01 |  | 73.28d |
| 398 |  | Implement Chart View Object | 5.71d? | 2008-08-05 | 2008-08-13 | 396 | 73.28d |
| 399 |  | Support multiple X-Axis Type ( Lin, Log) | 1.43d? | 2008-08-13 | 2008-08-14 | 398 | 73.28d |
| 400 |  | Support multiple Data point units | 1.43d? | 2008-08-14 | 2008-08-19 | 399 | 72.28d |
| 401 |  | Y-Axis Scaling ( Auto Sclaing) Display only | 1.43d? | 2008-08-19 | 2008-08-20 | 400 | 72.28d |
| 402 |  | Multiple channels support | 1.43d? | 2008-08-20 | 2008-08-22 | 401 | 72.28d |
| 403 |  | Marker support | 1.43d? | 2008-08-22 | 2008-08-25 | 402 | 72.28d |
| 404 |  | Integrate with data push mechnaism | 1.43d? | 2008-08-25 | 2008-08-26 | 403 | 72.28d |
| 405 |  | unit test case | 2.14d? | 2008-08-26 | 2008-08-29 | 404 | 72.28d |
| 406 |  | Code Review/ Unit test case review/Design screen/ Screen usability reviews with Jan Ryles | 1.43d | 2008-08-29 | 2008-09-01 | 405 | 73.28d |
| 407 | 1.3.64.4 | **Frequency Response Chart** | 7.43d? | 2008-09-01 | 2008-09-10 |  | 72.28d |
| 408 |  | Implement Chart View Object | 1.43d? | 2008-09-01 | 2008-09-02 | 406 | 73.28d |
| 409 |  | Support multiple X-Axis Type ( Lin, Log) & Y-Axis scaling | 0.71d? | 2008-09-02 | 2008-09-04 | 408 | 72.28d |
| 410 |  | Support multiple Data point units | 0.71d? | 2008-09-04 | 2008-09-05 | 409 | 72.28d |
| 411 |  | Multiple channels support\Marker support | 1.43d? | 2008-09-05 | 2008-09-08 | 410 | 72.28d |
| 412 |  | Unit test case | 1.43d? | 2008-09-08 | 2008-09-10 | 411 | 72.28d |
| 413 |  | Code Review/ Unit test case review/Design screen/ Screen usability reviews with Jan Ryles | 0.71d? | 2008-09-10 | 2008-09-10 | 412 | 72.28d |
| 414 | 1.3.64.5 | **Coherence Chart** | 5d? | 2008-09-10 | 2008-09-17 |  | 72.28d |
| 415 |  | Implement Chart View Object | 0.71d? | 2008-09-10 | 2008-09-11 | 413 | 72.28d |
| 416 |  | Support multiple X-Axis Type ( Lin, Log) & Y-Axis scaling | 0.71d? | 2008-09-11 | 2008-09-12 | 415 | 72.28d |
| 417 |  | Support multiple Data point units | 1.43d? | 2008-09-12 | 2008-09-15 | 416 | 72.28d |
| 418 |  | Multiple channels support\Marker support | 0.71d? | 2008-09-15 | 2008-09-16 | 417 | 73.28d |
| 419 |  | Unit test case | 0.71d? | 2008-09-16 | 2008-09-17 | 418 | 73.28d |
| 420 |  | Code Review/ Unit test case review/Design screen/ Screen usability reviews with Jan Ryles | 0.71d? | 2008-09-17 | 2008-09-17 | 419 | 73.28d |

| ID | WBS | Task | Duration | Start | Finish | Predecessors | Total float |
| --- | --- | --- | --- | --- | --- | --- | --- |
| 421 | 1.3.64.6 | **Orbit Chart** | 7.86d? | 2008-09-17 | 2008-09-29 |  | 73.28d |
| 422 |  | Implement Chart View Object | 2.14d? | 2008-09-17 | 2008-09-22 | 420 | 73.28d |
| 423 |  | Support multiple X-Axis Type ( Lin, Log) & Y-Axis scaling | 1.43d? | 2008-09-22 | 2008-09-23 | 422 | 73.28d |
| 424 |  | Support multiple Data point units | 1.43d? | 2008-09-23 | 2008-09-24 | 423 | 73.28d |
| 425 |  | Multiple channels support\Marker support | 0.71d? | 2008-09-24 | 2008-09-25 | 424 | 73.28d |
| 426 |  | Unit test case | 1.43d? | 2008-09-25 | 2008-09-29 | 425 | 73.28d |
| 427 |  | Code Review/ Unit test case review/Design screen/ Screen usability reviews with Jan Ryles | 0.71d? | 2008-09-29 | 2008-09-29 | 426 | 73.28d |
| 428 | 1.3.64.7 | **Scope View Chart** | 10.57d? | 2008-09-29 | 2008-10-14 |  | 71.28d |
| 429 |  | Implement Chart View Object | 2.86d? | 2008-09-29 | 2008-10-03 | 427 | 72.28d |
| 430 |  | Support multiple X-Axis Type ( Lin, Log) & Y-Axis scaling | 1.43d? | 2008-10-03 | 2008-10-07 | 429 | 72.28d |
| 431 |  | Support multiple Data point units | 1.43d? | 2008-10-07 | 2008-10-08 | 430 | 72.28d |
| 432 |  | Multiple channels support\Marker support | 0.71d? | 2008-10-08 | 2008-10-10 | 431 | 71.28d |
| 433 |  | Unit test case | 1.43d? | 2008-10-10 | 2008-10-13 | 432 | 71.28d |
| 434 |  | Code Review/ Unit test case review/Design screen/ Screen usability reviews with Jan Ryles | 0.71d? | 2008-10-13 | 2008-10-14 | 433 | 71.28d |
| 435 | 1.3.64.8 | **Normal Variance Chart** | 7.14d? | 2008-10-14 | 2008-10-23 |  | 71.28d |
| 436 |  | Implement Chart View Object | 1.43d? | 2008-10-14 | 2008-10-15 | 434 | 71.28d |
| 437 |  | Support multiple X-Axis Type ( Lin, Log) & Y-Axis scaling | 1.43d? | 2008-10-15 | 2008-10-17 | 436 | 71.28d |
| 438 |  | Support multiple Data point units | 1.43d? | 2008-10-17 | 2008-10-20 | 437 | 71.28d |
| 439 |  | Multiple channels support\Marker support | 0.71d? | 2008-10-20 | 2008-10-21 | 438 | 71.28d |
| 440 |  | Unit test case | 1.43d? | 2008-10-21 | 2008-10-22 | 439 | 71.28d |
| 441 |  | Code Review/ Unit test case review/Design screen/ Screen usability reviews with Jan Ryles | 0.71d? | 2008-10-22 | 2008-10-23 | 440 | 71.28d |
| 442 | 1.3.64.9 | **Common Graph Cordinate implementation** | 12.43d? | 2008-10-23 | 2008-11-10 |  | 70.28d |
| 443 |  | Linear Magnitude | 1.43d? | 2008-10-23 | 2008-10-24 | 441 | 71.28d |
| 444 |  | Log Magnitude | 1.43d? | 2008-10-24 | 2008-10-29 | 443 | 70.28d |
| 445 |  | DB Magnitude | 1.43d? | 2008-10-29 | 2008-10-30 | 444 | 70.28d |
| 446 |  | Real Imagainary | 1.43d? | 2008-10-30 | 2008-11-03 | 445 | 70.28d |
| 447 |  | Phase, UnWrapped Phase | 1.43d? | 2008-11-03 | 2008-11-04 | 446 | 70.28d |
| 448 |  | Group Delay | 1.43d? | 2008-11-04 | 2008-11-06 | 447 | 70.28d |
| 449 |  | Polar | 1.43d? | 2008-11-06 | 2008-11-07 | 448 | 70.28d |
| 450 |  | Code Review/ Unit test case review/Design screen/ Screen usability reviews with Jan Ryles | 1.43d? | 2008-11-07 | 2008-11-10 | 449 | 70.28d |
| 451 | 1.3.64.10 | **Nyquist Chart** | 7.69d? | 2008-12-26 | 2009-01-07 |  | 44.83d |
| 452 |  | Implement Chart View Object | 1.54d? | 2008-12-26 | 2008-12-29 | 369 | 44.83d |
| 453 |  | Support multiple X-Axis Type ( Lin, Log) & Y-Axis scaling | 1.54d? | 2008-12-29 | 2008-12-31 | 452 | 44.83d |
| 454 |  | Support multiple Data point units | 1.54d? | 2008-12-31 | 2009-01-01 | 453 | 44.83d |
| 455 |  | Multiple channels support\Marker support | 0.77d? | 2009-01-01 | 2009-01-02 | 454 | 44.83d |
| 456 |  | Unit test case | 1.54d? | 2009-01-02 | 2009-01-06 | 455 | 44.83d |
| 457 |  | Code Review/ Unit test case review/Design screen/ Screen usability reviews with Jan Ryles | 0.77d? | 2009-01-06 | 2009-01-07 | 456 | 44.83d |
| 458 | 1.3.64.11 | **Nichols chart** | 7.69d? | 2009-01-07 | 2009-01-16 |  | 44.83d |
| 459 |  | Implement Chart View Object | 1.54d? | 2009-01-07 | 2009-01-08 | 457 | 44.83d |
| 460 |  | Support multiple X-Axis Type ( Lin, Log) & Y-Axis scaling | 1.54d? | 2009-01-08 | 2009-01-12 | 459 | 44.83d |
| 461 |  | Support multiple Data point units | 0.77d? | 2009-01-12 | 2009-01-12 | 460 | 44.83d |
| 462 |  | Multiple channels support\Marker support | 1.54d? | 2009-01-12 | 2009-01-14 | 461 | 44.83d |
| 463 |  | Unit test case | 1.54d? | 2009-01-14 | 2009-01-15 | 462 | 44.83d |
| 464 |  | Code Review/ Unit test case review/Design screen/ Screen usability reviews with Jan Ryles | 0.77d? | 2009-01-15 | 2009-01-16 | 463 | 44.83d |
| 465 | 1.3.64.12 | **WaterFall** | 17.14d? | 2008-11-10 | 2008-12-04 |  | 70.28d |
| 466 |  | Implement Chart View Object | 4.29d? | 2008-11-10 | 2008-11-17 | 450 | 70.28d |
| 467 |  | Z-Axis Range support | 3.57d? | 2008-11-17 | 2008-11-20 | 466 | 70.28d |
| 468 |  | Skew angle | 2.86d? | 2008-11-20 | 2008-11-25 | 467 | 70.28d |
| 469 |  | Line clipping | 2.86d? | 2008-11-25 | 2008-11-28 | 468 | 70.28d |
| 470 |  | Unit test case | 2.86d? | 2008-11-28 | 2008-12-03 | 469 | 70.28d |
| 471 |  | Code Review/ Unit test case review/Design screen/ Screen usability reviews with Jan Ryles | 0.71d? | 2008-12-03 | 2008-12-04 | 470 | 70.28d |
| 472 | 1.3.64.13 | **Spectrogram** | 13.85d? | 2009-01-16 | 2009-02-05 |  | 44.83d |
| 473 |  | Implement Chart View Object | 6.15d? | 2009-01-16 | 2009-01-26 | 464 | 44.83d |
| 474 |  | multiple color intensity | 1.54d? | 2009-01-26 | 2009-01-28 | 473 | 44.83d |
| 475 |  | Z-Axis Range , Top, Bottom | 2.31d? | 2009-01-28 | 2009-01-30 | 474 | 44.83d |
| 476 |  | Unit test case | 2.31d? | 2009-01-30 | 2009-02-04 | 475 | 44.83d |
| 477 |  | Code Review/ Unit test case review/Design screen/ Screen usability reviews with Jan Ryles | 1.54d? | 2009-02-04 | 2009-02-05 | 476 | 44.83d |
| 478 | 1.3.65 | **Common Marker Development** | 22d? | 2008-12-04 | 2009-01-05 |  | 68.28d |
| 479 |  | Design Marker Framework | 2.14d? | 2008-12-04 | 2008-12-08 | 471 | 70.28d |
| 480 |  | Implementation | 4.29d? | 2008-12-08 | 2008-12-15 | 479 | 69.28d |
| 481 |  | Support Different shape | 0.71d? | 2008-12-15 | 2008-12-16 | 480 | 69.28d |
| 482 |  | Support XY Marker | 1.43d? | 2008-12-16 | 2008-12-17 | 481 | 69.28d |
| 483 |  | Support Marker Format Phase | 1.43d? | 2008-12-17 | 2008-12-19 | 482 | 69.28d |
| 484 |  | Support Marker Format Magnitude | 1.43d? | 2008-12-19 | 2008-12-22 | 483 | 69.28d |
| 485 |  | Support Marker Format DB | 1.43d? | 2008-12-22 | 2008-12-23 | 484 | 69.28d |
| 486 |  | Support Peak Trace Marker | 1.43d? | 2008-12-23 | 2008-12-26 | 485 | 68.28d |
| 487 |  | Support Next Peak | 1.43d? | 2008-12-26 | 2008-12-29 | 486 | 68.28d |
| 488 |  | Support Next Largest Peak | 1.43d? | 2008-12-29 | 2008-12-31 | 487 | 68.28d |
| 489 |  | Code Review/ Unit test case review/Design screen/ Screen usability reviews with Jan Ryles | 2.86d? | 2008-12-31 | 2009-01-05 | 488 | 68.28d |
| 490 | 1.3.66 | **File Service** | 4.57d? | 2008-08-11 | 2008-08-18 |  | 53d |

| ID | WBS | Task | Duration | Start | Finish | Predecessors | Total float |
| --- | --- | --- | --- | --- | --- | --- | --- |
| 491 |  | Define File/Directory structure hierarchy | 2.86d? | 2008-08-11 | 2008-08-14 | 358 | 53d |
| 492 |  | Review with team | 0.71d? | 2008-08-14 | 2008-08-18 | 491 | 53d |
| 493 | 1.3.67 | **Save Configuration** | 11.43d? | 2008-08-18 | 2008-09-02 |  | 53d |
| 494 |  | Save & Recall stratgies | 0.71d? | 2008-08-18 | 2008-08-18 | 492 | 53d |
| 495 |  | Design framework for Saving configuration | 1.43d? | 2008-08-19 | 2008-08-20 | 494 | 53d |
| 496 |  | Implement exposed interface in each searlizable objects | 3.57d? | 2008-08-20 | 2008-08-25 | 495 | 53d |
| 497 |  | Design & implement screen to trigger Saving mechanism | 1.43d? | 2008-08-26 | 2008-08-27 | 496 | 53d |
| 498 |  | unit testing | 2.86d? | 2008-08-27 | 2008-09-01 | 497 | 53d |
| 499 |  | design review/unit test review/usability review | 1.43d? | 2008-09-01 | 2008-09-02 | 498 | 53d |
| 500 | 1.3.68 | **Load Configuration** | 8.14d? | 2008-09-02 | 2008-09-12 |  | 52d |
| 501 |  | Design framework for loading configuration | 0.71d? | 2008-09-02 | 2008-09-04 | 499 | 52d |
| 502 |  | Implement exposed interface in each searlizable objects | 1.43d? | 2008-09-04 | 2008-09-05 | 501 | 52d |
| 503 |  | Design & implement screen to trigger loading mechanism | 1.43d? | 2008-09-05 | 2008-09-09 | 502 | 52d |
| 504 |  | unit testing | 2.86d? | 2008-09-09 | 2008-09-12 | 503 | 52d |
| 505 |  | design review/unit test review/usability review | 0.71d? | 2008-09-12 | 2008-09-12 | 504 | 52d |
| 506 | 1.3.69 | **View Configuration** | 4.62d? | 2009-02-05 | 2009-02-12 |  | 44.83d |
| 507 |  | Design & implement screen to trigger loading mechanism | 2.31d? | 2009-02-05 | 2009-02-09 | 477 | 44.83d |
| 508 |  | unit testing | 1.54d? | 2009-02-09 | 2009-02-11 | 507 | 44.83d |
| 509 |  | design review/unit test review/usability review | 0.77d? | 2009-02-11 | 2009-02-12 | 508 | 44.83d |
| 510 | 1.3.70 | **Save Trace** | 8.57d? | 2009-01-05 | 2009-01-15 |  | 68.28d |
| 511 |  | Design framework for Saving trace | 2.14d? | 2009-01-05 | 2009-01-07 | 489, 505 | 68.28d |
| 512 |  | Design & implement screen to trigger saving mechanism | 3.57d? | 2009-01-07 | 2009-01-12 | 511 | 68.28d |
| 513 |  | unit testing | 2.14d? | 2009-01-12 | 2009-01-14 | 512 | 68.28d |
| 514 |  | design review/unit test review/usability review | 0.71d? | 2009-01-14 | 2009-01-15 | 513 | 68.28d |
| 515 | 1.3.71 | **Recall trace** | 4.29d? | 2009-01-15 | 2009-01-21 |  | 68.28d |
| 516 |  | Design framework for Loading trace | 0.71d? | 2009-01-15 | 2009-01-16 | 514 | 68.28d |
| 517 |  | Design & implement screen to trigger Loading mechanism | 1.43d? | 2009-01-16 | 2009-01-19 | 516 | 68.28d |
| 518 |  | unit testing | 1.43d? | 2009-01-19 | 2009-01-21 | 517 | 68.28d |
| 519 |  | design review/unit test review/usability review | 0.71d? | 2009-01-21 | 2009-01-21 | 518 | 68.28d |
| 520 | 1.3.72 | **Backward comptability** | 10d? | 2009-01-21 | 2009-02-04 |  | 68.28d |
| 521 |  | SDF Data Reader | 1.43d? | 2009-01-21 | 2009-01-23 | 519, 489 | 68.28d |
| 522 |  | Design SDF Data Reader | 2.86d? | 2009-01-23 | 2009-01-28 | 521 | 68.28d |
| 523 |  | Implement Data Reader | 2.14d? | 2009-01-28 | 2009-01-30 | 522 | 68.28d |
| 524 |  | unit testing | 2.86d? | 2009-01-30 | 2009-02-04 | 523 | 68.28d |
| 525 |  | design review/unit test review | 0.71d? | 2009-02-04 | 2009-02-04 | 524 | 68.28d |
| 526 | 1.3.73 | **CSV Data Writer** | 6.15d? | 2009-02-04 | 2009-02-12 |  | 37.13d |
| 527 |  | Design CSV Data Writer | 0.77d? | 2009-02-04 | 2009-02-05 | 380 | 37.13d |
| 528 |  | Implement Data Writer | 3.08d? | 2009-02-05 | 2009-02-10 | 527 | 37.13d |
| 529 |  | unit testing | 1.54d? | 2009-02-10 | 2009-02-12 | 528 | 37.13d |
| 530 |  | design review/unit test review | 0.77d? | 2009-02-12 | 2009-02-12 | 529 | 37.13d |
| 531 | 1.3.74 | **CSV Data Reader** | 6.15d? | 2009-02-12 | 2009-02-23 |  | 37.13d |
| 532 |  | Design CSV Data Reader | 0.77d? | 2009-02-12 | 2009-02-13 | 530 | 37.13d |
| 533 |  | Implement Data Reader | 3.08d? | 2009-02-13 | 2009-02-18 | 532 | 37.13d |
| 534 |  | unit testing | 1.54d? | 2009-02-18 | 2009-02-20 | 533 | 37.13d |
| 535 |  | design review/unit test review | 0.77d? | 2009-02-20 | 2009-02-23 | 534 | 37.13d |
| 536 | 1.3.75 | **HDF5 Data Writer** | 16.92d? | 2009-02-23 | 2009-03-18 |  | 37.13d |
| 537 |  | Design HDF5 Data Writer | 3.85d? | 2009-02-23 | 2009-02-26 | 535 | 37.13d |
| 538 |  | Implement Data Writer | 3.08d? | 2009-02-26 | 2009-03-04 | 537 | 37.13d |
| 539 |  | unit testing | 3.08d? | 2009-03-04 | 2009-03-09 | 538 | 37.13d |
| 540 |  | MathLab Compatbility test | 6.15d? | 2009-03-09 | 2009-03-17 | 539 | 37.13d |
| 541 |  | design review/unit test review | 0.77d? | 2009-03-17 | 2009-03-18 | 540 | 37.13d |
| 542 | 1.3.76 | **HDF5 Data Reader** | 10d? | 2009-03-18 | 2009-04-01 |  | 37.13d |
| 543 |  | Design HDF5 Data Reader | 0.77d? | 2009-03-18 | 2009-03-18 | 541 | 37.13d |
| 544 |  | Implement Data Reader | 3.08d? | 2009-03-18 | 2009-03-23 | 543 | 37.13d |
| 545 |  | unit testing | 1.54d? | 2009-03-23 | 2009-03-25 | 544 | 37.13d |
| 546 |  | Corrupt file handling | 3.08d? | 2009-03-25 | 2009-03-30 | 545 | 37.13d |
| 547 |  | design review/unit test review | 1.54d? | 2009-03-30 | 2009-04-01 | 546 | 37.13d |
| 548 | 1.3.77 | **Refactor at Swept sine mode** | 12.86d? | 2008-09-12 | 2008-10-01 |  | 52d |
| 549 |  | GUI | 4.29d? | 2008-09-12 | 2008-09-19 | 505, 519 | 52d |
| 550 |  | Automation Interface | 4.29d? | 2008-09-19 | 2008-09-25 | 549 | 52d |
| 551 |  | Analysis and Measurement Layer | 4.29d? | 2008-09-25 | 2008-10-01 | 550 | 52d |
| 552 | 1.3.78 | **Refactor at Octave Mode** | 14.86d? | 2008-10-01 | 2008-10-22 |  | 52d |
| 553 |  | GUI | 4.29d? | 2008-10-01 | 2008-10-08 | 551 | 52d |
| 554 |  | Automation Interface | 4.29d? | 2008-10-08 | 2008-10-16 | 553 | 52d |
| 555 |  | Analysis and Measurement Layer | 4.29d? | 2008-10-16 | 2008-10-22 | 554 | 52d |
| 556 | 1.4 | **Analysis Layer** | 241.7d? | 2008-04-16 | 2009-03-20 |  | 44.83d |
| 557 | 1.4.1 | **Trace management** | 13.86d? | 2008-10-22 | 2008-11-11 |  | 51d |
| 558 |  | Design Interface | 1.43d? | 2008-10-22 | 2008-10-23 | 555 | 52d |
| 559 |  | Review interface design with Team leads | 0.71d? | 2008-10-23 | 2008-10-24 | 558 | 52d |
| 560 |  | Implementation of Trace Management | 5.71d? | 2008-10-24 | 2008-11-04 | 559 | 51d |

| ID | WBS | Task | Duration | Start | Finish | Predecessors | Total float |
| --- | --- | --- | --- | --- | --- | --- | --- |
| 561 |  | Unit testing | 4.29d? | 2008-11-04 | 2008-11-10 | 560 | 51d |
| 562 |  | Code Review | 0.71d? | 2008-11-10 | 2008-11-11 | 561 | 51d |
| 563 | 1.4.2 | **Measurement Flow management Framework** | 12.14d? | 2008-11-11 | 2008-11-27 |  | 51d |
| 564 |  | Design Interface | 2.14d? | 2008-11-11 | 2008-11-13 | 562 | 51d |
| 565 |  | Review interface design with Team leads | 0.71d? | 2008-11-13 | 2008-11-14 | 564 | 51d |
| 566 |  | Implementation of Measurement Flow Management | 5.71d? | 2008-11-14 | 2008-11-21 | 565 | 51d |
| 567 |  | Unit testing | 2.86d? | 2008-11-21 | 2008-11-26 | 566 | 51d |
| 568 |  | Code Review | 0.71d? | 2008-11-26 | 2008-11-27 | 567 | 51d |
| 569 | 1.4.3 | **Measurement Flow: Linear spectrum** | 5.71d? | 2008-11-27 | 2008-12-05 |  | 51d |
| 570 |  | Design Interface | 0.71d? | 2008-11-27 | 2008-11-28 | 568 | 51d |
| 571 |  | Review interface design with Team leads | 0.71d? | 2008-11-28 | 2008-11-28 | 570 | 51d |
| 572 |  | Implementation of Measurement Flow | 2.14d? | 2008-12-01 | 2008-12-03 | 571 | 51d |
| 573 |  | Unit testing | 1.43d? | 2008-12-03 | 2008-12-04 | 572 | 51d |
| 574 |  | Code Review | 0.71d? | 2008-12-04 | 2008-12-05 | 573 | 51d |
| 575 | 1.4.4 | **Measurement Flow: Auto power spectrum** | 7.43d? | 2008-12-05 | 2008-12-16 |  | 50d |
| 576 |  | Design Interface | 0.71d? | 2008-12-05 | 2008-12-08 | 574 | 51d |
| 577 |  | Review interface design with Team leads | 0.71d? | 2008-12-08 | 2008-12-08 | 576 | 51d |
| 578 |  | Implementation of Measurement Flow | 2.86d? | 2008-12-08 | 2008-12-12 | 577 | 50d |
| 579 |  | Unit testing | 1.43d? | 2008-12-12 | 2008-12-16 | 578 | 50d |
| 580 |  | Code Review | 0.71d? | 2008-12-16 | 2008-12-16 | 579 | 50d |
| 581 | 1.4.5 | **Measurement Flow: Cross power spectrum** | 7.43d? | 2008-12-16 | 2008-12-26 |  | 49d |
| 582 |  | Design Interface | 0.71d? | 2008-12-16 | 2008-12-17 | 580 | 50d |
| 583 |  | Review interface design with Team leads | 0.71d? | 2008-12-17 | 2008-12-18 | 582 | 50d |
| 584 |  | Implementation of Measurement Flow | 2.86d? | 2008-12-18 | 2008-12-23 | 583 | 50d |
| 585 |  | Unit testing | 1.43d? | 2008-12-23 | 2008-12-24 | 584 | 50d |
| 586 |  | Code Review | 0.71d? | 2008-12-24 | 2008-12-26 | 585 | 49d |
| 587 | 1.4.6 | **Measurement Flow: FRF** | 9.29d? | 2008-12-26 | 2009-01-08 |  | 49d |
| 588 |  | Design Interface | 1.43d? | 2008-12-26 | 2008-12-29 | 586 | 49d |
| 589 |  | Review interface design with Team leads | 0.71d? | 2008-12-29 | 2008-12-30 | 588 | 49d |
| 590 |  | Implementation of Measurement Flow | 4.29d? | 2008-12-30 | 2009-01-05 | 589 | 49d |
| 591 |  | Unit testing | 2.14d? | 2009-01-05 | 2009-01-07 | 590 | 49d |
| 592 |  | Code Review | 0.71d? | 2009-01-07 | 2009-01-08 | 591 | 49d |
| 593 | 1.4.7 | **Measurement Flow: Coherance** | 6.43d? | 2009-01-08 | 2009-01-16 |  | 49d |
| 594 |  | Design Interface | 0.71d? | 2009-01-08 | 2009-01-09 | 592 | 49d |
| 595 |  | Review interface design with Team leads | 0.71d? | 2009-01-09 | 2009-01-09 | 594 | 49d |
| 596 |  | Implementation of Measurement Flow | 2.86d? | 2009-01-09 | 2009-01-14 | 595 | 49d |
| 597 |  | Unit testing | 1.43d? | 2009-01-14 | 2009-01-16 | 596 | 49d |
| 598 |  | Code Review | 0.71d? | 2009-01-16 | 2009-01-16 | 597 | 49d |
| 599 | 1.4.8 | **Measurement Flow: Normal Variance** | 6.92d? | 2009-02-12 | 2009-02-23 |  | 44.83d |
| 600 |  | Design Interface | 0.77d? | 2009-02-12 | 2009-02-12 | 509 | 44.83d |
| 601 |  | Review interface design with Team leads | 0.77d? | 2009-02-12 | 2009-02-13 | 600 | 44.83d |
| 602 |  | Implementation of Measurement Flow | 3.08d? | 2009-02-13 | 2009-02-18 | 601 | 44.83d |
| 603 |  | Unit testing | 1.54d? | 2009-02-18 | 2009-02-20 | 602 | 44.83d |
| 604 |  | Code Review | 0.77d? | 2009-02-20 | 2009-02-23 | 603 | 44.83d |
| 605 | 1.4.9 | **Measurement : Harmonic Power, THD** | 16.29d? | 2008-04-16 | 2008-05-08 |  | 93.81d |
| 606 |  | Design Interface | 1.43d? | 2008-04-16 | 2008-04-21 | 304 | 93.81d |
| 607 |  | Review interface design with Team leads | 0.71d? | 2008-04-21 | 2008-04-21 | 606 | 93.81d |
| 608 |  | Implementation of Measurement Flow | 5.71d? | 2008-04-21 | 2008-04-29 | 607 | 93.81d |
| 609 |  | Intermediate result | 2.14d? | 2008-04-29 | 2008-05-02 | 608 | 93.81d |
| 610 |  | Unit testing | 3.57d? | 2008-05-02 | 2008-05-08 | 609 | 93.81d |
| 611 |  | Code Review | 0.71d? | 2008-05-08 | 2008-05-08 | 610 | 93.81d |
| 612 | 1.4.10 | **Measurement : Side band Power** | 10d? | 2008-05-08 | 2008-05-22 |  | 93.81d |
| 613 |  | Design Interface | 1.43d? | 2008-05-08 | 2008-05-12 | 611 | 93.81d |
| 614 |  | Review interface design with Team leads | 0.71d? | 2008-05-12 | 2008-05-13 | 613 | 93.81d |
| 615 |  | Implementation of Measurement Flow | 2.14d? | 2008-05-13 | 2008-05-15 | 614 | 93.81d |
| 616 |  | Intermediate result | 2.14d? | 2008-05-15 | 2008-05-19 | 615 | 93.81d |
| 617 |  | Unit testing | 2.86d? | 2008-05-19 | 2008-05-22 | 616 | 93.81d |
| 618 |  | Code Review | 0.71d? | 2008-05-22 | 2008-05-22 | 617 | 93.81d |
| 619 | 1.4.11 | **Measurement : Band Power** | 10d? | 2008-05-22 | 2008-06-05 |  | 93.81d |
| 620 |  | Design Interface | 1.43d? | 2008-05-22 | 2008-05-26 | 618 | 93.81d |
| 621 |  | Review interface design with Team leads | 0.71d? | 2008-05-26 | 2008-05-27 | 620 | 94.81d |
| 622 |  | Implementation of Measurement Flow | 2.14d? | 2008-05-27 | 2008-05-29 | 621 | 94.81d |
| 623 |  | Intermediate result | 2.14d? | 2008-05-29 | 2008-06-02 | 622 | 94.81d |
| 624 |  | Unit testing | 2.86d? | 2008-06-02 | 2008-06-05 | 623 | 95.81d |
| 625 |  | Code Review | 0.71d? | 2008-06-05 | 2008-06-05 | 624 | 95.81d |
| 626 | 1.4.12 | **Measurement : THD+n ENOB, SNR,SFDR,SINAD** | 12.14d? | 2008-06-05 | 2008-06-24 |  | 95.81d |
| 627 |  | Design Interface | 1.43d? | 2008-06-05 | 2008-06-09 | 625 | 95.81d |
| 628 |  | Review interface design with Team leads | 0.71d? | 2008-06-09 | 2008-06-10 | 627 | 95.81d |
| 629 |  | Implementation of Measurement Flow | 3.57d? | 2008-06-10 | 2008-06-13 | 628 | 95.81d |
| 630 |  | Intermediate result | 1.43d? | 2008-06-13 | 2008-06-17 | 629 | 95.81d |

| ID | WBS | Task | Duration | Start | Finish | Predecessors | Total float |
| --- | --- | --- | --- | --- | --- | --- | --- |
| 631 |  | Unit testing | 4.29d? | 2008-06-17 | 2008-06-23 | 630 | 96.81d |
| 632 |  | Code Review | 0.71d? | 2008-06-23 | 2008-06-24 | 631 | 96.81d |
| 633 | 1.4.13 | **Measurement : Gain & Phase margin** | 11.43d? | 2008-06-24 | 2008-07-09 |  | 96.81d |
| 634 |  | Design Interface | 1.43d? | 2008-06-24 | 2008-06-25 | 632 | 96.81d |
| 635 |  | Review interface design with Team leads | 0.71d? | 2008-06-25 | 2008-06-26 | 634 | 96.81d |
| 636 |  | Implementation of Measurement Flow | 2.86d? | 2008-06-26 | 2008-07-01 | 635 | 96.81d |
| 637 |  | Intermediate result | 2.86d? | 2008-07-01 | 2008-07-03 | 636 | 96.81d |
| 638 |  | Unit testing | 2.86d? | 2008-07-03 | 2008-07-08 | 637 | 96.81d |
| 639 |  | Code Review | 0.71d? | 2008-07-08 | 2008-07-09 | 638 | 96.81d |
| 640 | 1.4.14 | **Measurement : Frequency Damping** | 10d? | 2008-07-09 | 2008-07-23 |  | 96.81d |
| 641 |  | Design Interface | 1.43d? | 2008-07-09 | 2008-07-10 | 639 | 96.81d |
| 642 |  | Review interface design with Team leads | 0.71d? | 2008-07-10 | 2008-07-11 | 641 | 96.81d |
| 643 |  | Implementation of Measurement Flow | 4.29d? | 2008-07-11 | 2008-07-17 | 642 | 96.81d |
| 644 |  | Unit testing | 2.86d? | 2008-07-17 | 2008-07-22 | 643 | 96.81d |
| 645 |  | Code Review | 0.71d? | 2008-07-22 | 2008-07-23 | 644 | 96.81d |
| 646 | 1.4.15 | **Measurement : delay time, decay time, rise time, pulse width etc** | 13.57d? | 2008-07-23 | 2008-08-12 |  | 96.81d |
| 647 |  | Design Interface | 2.14d? | 2008-07-23 | 2008-07-25 | 645 | 96.81d |
| 648 |  | Review interface design with Team leads | 1.43d? | 2008-07-25 | 2008-07-29 | 647 | 97.81d |
| 649 |  | Implementation of Measurement Flow | 5.71d? | 2008-07-29 | 2008-08-05 | 648 | 97.81d |
| 650 |  | Unit testing | 3.57d? | 2008-08-05 | 2008-08-11 | 649 | 97.81d |
| 651 |  | Code Review | 0.71d? | 2008-08-11 | 2008-08-12 | 650 | 98.81d |
| 652 | 1.4.16 | **Analysis : Complex conjugate** | 7.86d? | 2009-02-04 | 2009-02-16 |  | 68.28d |
| 653 |  | Design Interface | 1.43d? | 2009-02-04 | 2009-02-06 | 525 | 68.28d |
| 654 |  | Review interface design with Team leads | 0.71d? | 2009-02-06 | 2009-02-09 | 653 | 68.28d |
| 655 |  | Implementation of Measurement Flow | 2.86d? | 2009-02-09 | 2009-02-11 | 654 | 68.28d |
| 656 |  | Unit testing | 2.14d? | 2009-02-11 | 2009-02-16 | 655 | 68.28d |
| 657 |  | Code Review | 0.71d | 2009-02-16 | 2009-02-16 | 656 | 68.28d |
| 658 | 1.4.17 | **Analysis : Limit Lines** | 7.14d? | 2009-01-16 | 2009-01-28 |  | 49d |
| 659 |  | Design Interface | 0.71d? | 2009-01-16 | 2009-01-19 | 598 | 49d |
| 660 |  | Review interface design with Team leads | 0.71d? | 2009-01-19 | 2009-01-20 | 659 | 49d |
| 661 |  | Implementation of Measurement Flow | 2.86d? | 2009-01-20 | 2009-01-23 | 660 | 49d |
| 662 |  | Unit testing | 2.14d? | 2009-01-23 | 2009-01-27 | 661 | 49d |
| 663 |  | Code Review | 0.71d | 2009-01-27 | 2009-01-28 | 662 | 49d |
| 664 | 1.4.18 | **Analysis : Basic Math** | 18.43d? | 2008-08-12 | 2008-09-05 |  | 96.81d |
| 665 |  | Design Interface | 2.86d? | 2008-08-12 | 2008-08-14 | 651 | 98.81d |
| 666 |  | Review interface design with Team leads | 0.71d? | 2008-08-14 | 2008-08-18 | 665 | 97.81d |
| 667 |  | Implementation of Measurement Flow | 5.71d? | 2008-08-18 | 2008-08-26 | 666 | 97.81d |
| 668 |  | Analysis advance math | 1.43d? | 2008-08-26 | 2008-08-27 | 667 | 97.81d |
| 669 |  | Unit testing | 5.71d? | 2008-08-27 | 2008-09-05 | 668 | 96.81d |
| 670 | 1.4.19 | **Not defined ( Advance math)** | 1.43d | 2008-09-05 | 2008-09-08 |  | 96.81d |
| 671 |  | Code Review | 1.43d | 2008-09-05 | 2008-09-08 | 669 | 96.81d |
| 672 | 1.4.20 | **Unit Conversion** | 21d? | 2008-09-08 | 2008-10-07 |  | 95.81d |
| 673 |  | Design interface for unit conversion | 2.86d? | 2008-09-08 | 2008-09-11 | 670 | 96.81d |
| 674 |  | Review with tech leads | 0.71d? | 2008-09-11 | 2008-09-12 | 673 | 96.81d |
| 675 |  | Implementation | 5.71d? | 2008-09-12 | 2008-09-22 | 674 | 96.81d |
| 676 |  | Unit testing | 3.57d? | 2008-09-22 | 2008-09-25 | 675 | 96.81d |
| 677 |  | How unit will ripple down | 5.71d? | 2008-09-25 | 2008-10-06 | 676 | 95.81d |
| 678 |  | Code Review | 1.43d | 2008-10-06 | 2008-10-07 | 677 | 95.81d |
| 679 | 1.4.21 | **Mode Management ( Local/remote)** | 7.14d? | 2009-01-28 | 2009-02-06 |  | 49d |
| 680 |  | Design interface for configuring AL mode | 1.43d? | 2009-01-28 | 2009-01-29 | 663 | 49d |
| 681 |  | Review with tech leads | 0.71d? | 2009-01-29 | 2009-01-30 | 680 | 49d |
| 682 |  | Implementation | 2.86d? | 2009-01-30 | 2009-02-04 | 681 | 49d |
| 683 |  | Unit testing | 1.43d? | 2009-02-04 | 2009-02-05 | 682 | 49d |
| 684 |  | Code Review | 0.71d | 2009-02-05 | 2009-02-06 | 683 | 49d |
| 685 | 1.4.22 | **Averaging FFT Types** | 24.86d? | 2008-10-07 | 2008-11-11 |  | 93.81d |
| 686 |  | Design interface/framework | 2.86d? | 2008-10-07 | 2008-10-13 | 678 | 94.81d |
| 687 |  | Partial average Result Calculation | 1.43d? | 2008-10-13 | 2008-10-15 | 686 | 94.81d |
| 688 |  | reviews with tech leads | 1.43d? | 2008-10-15 | 2008-10-16 | 687 | 94.81d |
| 689 |  | Implementation (RMS) | 2.86d? | 2008-10-16 | 2008-10-21 | 688 | 94.81d |
| 690 |  | Verification (RMS) | 0.71d? | 2008-10-21 | 2008-10-22 | 689 | 94.81d |
| 691 |  | Unit testing (RMS) | 0.71d? | 2008-10-22 | 2008-10-22 | 690 | 94.81d |
| 692 |  | Implementation (RMS Exp) | 1.43d? | 2008-10-22 | 2008-10-24 | 691 | 94.81d |
| 693 |  | Verification (RMS Exp) | 0.71d? | 2008-10-24 | 2008-10-27 | 692 | 94.81d |
| 694 |  | Unit testing (RMS Exp) | 0.71d? | 2008-10-27 | 2008-10-27 | 693 | 94.81d |
| 695 |  | Implementation (Time) | 1.43d? | 2008-10-27 | 2008-10-30 | 694 | 93.81d |
| 696 |  | Verification (Time) | 0.71d? | 2008-10-30 | 2008-10-30 | 695 | 93.81d |
| 697 |  | Unit testing (Time) | 0.71d? | 2008-10-30 | 2008-10-31 | 696 | 93.81d |
| 698 |  | Implementation (Time Exp) | 1.43d? | 2008-10-31 | 2008-11-04 | 697 | 93.81d |
| 699 |  | Verification (Time Exp) | 0.71d? | 2008-11-04 | 2008-11-04 | 698 | 93.81d |
| 700 |  | Unit testing (Time Exp) | 0.71d? | 2008-11-04 | 2008-11-05 | 699 | 93.81d |

| ID | WBS | Task | Duration | Start | Finish | Predecessors | Total float |
| --- | --- | --- | --- | --- | --- | --- | --- |
| 701 |  | Implementation (Peak Hold) | 1.43d? | 2008-11-05 | 2008-11-06 | 700 | 93.81d |
| 702 |  | Verification (Peak Hold) | 0.71d? | 2008-11-06 | 2008-11-07 | 701 | 93.81d |
| 703 |  | Unit testing (Peak Hold) | 0.71d? | 2008-11-07 | 2008-11-10 | 702 | 93.81d |
| 704 |  | Code Review | 1.43d? | 2008-11-10 | 2008-11-11 | 703 | 93.81d |
| 705 | 1.4.23 | **Averaging : Swept Sine** | 10d? | 2008-11-11 | 2008-11-25 |  | 93.81d |
| 706 |  | Design interface/framework | 1.43d? | 2008-11-11 | 2008-11-13 | 704 | 93.81d |
| 707 |  | Partial average Result Calculation | 1.43d? | 2008-11-13 | 2008-11-14 | 706 | 93.81d |
| 708 |  | reviews with tech leads | 0.71d? | 2008-11-14 | 2008-11-17 | 707 | 93.81d |
| 709 |  | Implementation | 2.86d? | 2008-11-17 | 2008-11-20 | 708 | 93.81d |
| 710 |  | Verification | 1.43d? | 2008-11-20 | 2008-11-21 | 709 | 93.81d |
| 711 |  | Unit testing | 1.43d? | 2008-11-21 | 2008-11-25 | 710 | 93.81d |
| 712 |  | Code Review | 0.71d? | 2008-11-25 | 2008-11-25 | 711 | 93.81d |
| 713 | 1.4.24 | **Averaging : Octave** | 16.71d? | 2008-11-25 | 2008-12-18 |  | 92.81d |
| 714 |  | Design interface/framework | 1.43d? | 2008-11-25 | 2008-11-27 | 712 | 93.81d |
| 715 |  | Partial average Result Calculation | 1.43d? | 2008-11-27 | 2008-11-28 | 714 | 93.81d |
| 716 |  | reviews with tech leads | 1.43d? | 2008-11-28 | 2008-12-02 | 715 | 93.81d |
| 717 |  | Implementation | 5.71d? | 2008-12-02 | 2008-12-10 | 716 | 92.81d |
| 718 |  | Verification | 2.86d? | 2008-12-10 | 2008-12-15 | 717 | 92.81d |
| 719 |  | Unit testing | 1.43d? | 2008-12-15 | 2008-12-17 | 718 | 92.81d |
| 720 |  | Code Review | 1.43d? | 2008-12-17 | 2008-12-18 | 719 | 92.81d |
| 721 | 1.4.25 | **Analyzer mode management :: FFT Analyzer** | 8.57d? | 2009-02-06 | 2009-02-18 |  | 49d |
| 722 |  | Design interface/Framework for mode change | 1.43d? | 2009-02-06 | 2009-02-09 | 684, 663 | 49d |
| 723 |  | Review with tech leads | 0.71d? | 2009-02-09 | 2009-02-10 | 722 | 49d |
| 724 |  | implementation | 4.29d? | 2009-02-10 | 2009-02-16 | 723 | 49d |
| 725 |  | Unit testing | 1.43d? | 2009-02-16 | 2009-02-18 | 724 | 49d |
| 726 |  | Code Review | 0.71d | 2009-02-18 | 2009-02-18 | 725 | 49d |
| 727 | 1.4.26 | **Analyzer mode management: Swept Sine** | 7.86d? | 2009-02-18 | 2009-03-02 |  | 49d |
| 728 |  | Design interface/Framework for mode change | 1.43d? | 2009-02-18 | 2009-02-20 | 726 | 49d |
| 729 |  | Review with tech leads | 0.71d? | 2009-02-20 | 2009-02-20 | 728 | 49d |
| 730 |  | implementation | 3.57d? | 2009-02-20 | 2009-02-26 | 729 | 49d |
| 731 |  | Unit testing | 1.43d? | 2009-02-26 | 2009-02-27 | 730 | 49d |
| 732 |  | Code Review | 0.71d | 2009-02-27 | 2009-03-02 | 731 | 49d |
| 733 | 1.4.27 | **Analyzer mode management: Octave** | 10d? | 2009-03-02 | 2009-03-16 |  | 48.57d |
| 734 |  | Design interface/Framework for mode change | 1.43d? | 2009-03-02 | 2009-03-04 | 732, 731 | 49d |
| 735 |  | Review with tech leads | 1.43d? | 2009-03-04 | 2009-03-05 | 734 | 49d |
| 736 |  | implementation | 3.57d? | 2009-03-05 | 2009-03-11 | 735 | 49d |
| 737 |  | Unit testing | 2.14d? | 2009-03-11 | 2009-03-13 | 736 | 48.57d |
| 738 |  | Code Review | 0.71d | 2009-03-13 | 2009-03-16 | 737 | 48.57d |
| 739 | 1.4.28 | **Error & Exception** | 2.86d? | 2008-12-18 | 2008-12-23 |  | 92.81d |
| 740 |  | Define Error code for AL | 1.43d? | 2008-12-18 | 2008-12-19 | 720 | 92.81d |
| 741 |  | Provide Error code Vs Description string | 1.43d? | 2008-12-19 | 2008-12-23 | 740 | 92.81d |
| 742 | 1.4.29 | **Marker measurements** | 62.99d? | 2008-12-23 | 2009-03-20 |  | 44.83d |
| 743 |  | Design Marker support in AML | 2.31d? | 2009-02-23 | 2009-02-25 | 604 | 44.83d |
| 744 |  | Review with Tech leads | 0.77d? | 2009-02-25 | 2009-02-26 | 743 | 44.83d |
| 745 |  | Implementation : THD | 1.54d? | 2009-02-26 | 2009-02-27 | 744 | 44.83d |
| 746 |  | Unit Testing : THD | 0.77d? | 2009-02-27 | 2009-03-02 | 745 | 44.83d |
| 747 |  | Implementation : THD + n | 1.54d? | 2009-03-02 | 2009-03-04 | 746 | 44.83d |
| 748 |  | Unit Testing : THD+n | 0.77d? | 2009-03-04 | 2009-03-04 | 747 | 44.83d |
| 749 |  | Implementation : ENOB | 1.54d? | 2009-03-04 | 2009-03-06 | 748 | 44.83d |
| 750 |  | Unit Testing : ENOB | 0.77d? | 2009-03-06 | 2009-03-09 | 749 | 44.83d |
| 751 |  | Implementation : SNR | 1.54d? | 2009-03-09 | 2009-03-10 | 750 | 44.83d |
| 752 |  | Unit Testing : SNR | 0.77d? | 2009-03-10 | 2009-03-11 | 751 | 44.83d |
| 753 |  | Implementation : SFDR | 1.54d? | 2009-03-11 | 2009-03-12 | 752 | 44.83d |
| 754 |  | Unit Testing : SFDR | 0.77d? | 2009-03-12 | 2009-03-13 | 753 | 44.83d |
| 755 |  | Implementation : SINAD | 1.54d? | 2009-03-13 | 2009-03-17 | 754 | 44.83d |
| 756 |  | Unit Testing : SINAD | 0.77d? | 2009-03-17 | 2009-03-18 | 755 | 44.83d |
| 757 |  | Implementation : Frequency Damping | 1.54d? | 2009-03-18 | 2009-03-19 | 756 | 44.83d |
| 758 |  | Unit Testing : Frequency Damping | 0.77d? | 2009-03-19 | 2009-03-20 | 757 | 44.83d |
| 759 |  | Implementation : Decay Time | 1.43d? | 2008-12-23 | 2008-12-24 | 741 | 92.81d |
| 760 |  | Unit Testing : Decay Time | 0.71d? | 2008-12-24 | 2008-12-26 | 759 | 91.81d |
| 761 |  | Implementation :Rise Time | 1.43d? | 2008-12-26 | 2008-12-29 | 760 | 91.81d |
| 762 |  | Unit Testing : Rise Time | 0.71d? | 2008-12-29 | 2008-12-30 | 761 | 91.81d |
| 763 |  | Implementation : setting Time | 1.43d? | 2008-12-30 | 2009-01-01 | 762 | 91.81d |
| 764 |  | Unit Testing : setting Time | 0.71d? | 2009-01-01 | 2009-01-01 | 763 | 91.81d |
| 765 |  | Implementation : Delay Time | 1.43d? | 2009-01-01 | 2009-01-05 | 764 | 91.81d |
| 766 |  | Unit Testing : Delay Time | 0.71d? | 2009-01-05 | 2009-01-05 | 765 | 91.81d |
| 767 |  | Implementation : Pulse width | 1.43d? | 2009-01-05 | 2009-01-07 | 766 | 91.81d |
| 768 |  | Unit Testing : Pulse width | 0.71d? | 2009-01-07 | 2009-01-08 | 767 | 91.81d |
| 769 |  | Implementation : Voltage Max | 1.43d? | 2009-01-08 | 2009-01-09 | 768 | 91.81d |
| 770 |  | Unit Testing : Voltage Max | 0.71d? | 2009-01-09 | 2009-01-12 | 769 | 91.81d |

| ID | WBS | Task | Duration | Start | Finish | Predecessors | Total float |
| --- | --- | --- | --- | --- | --- | --- | --- |
| 771 |  | Implementation : Voltage Min | 1.43d? | 2009-01-12 | 2009-01-13 | 770 | 91.81d |
| 772 |  | Unit Testing : Voltage Min | 0.71d? | 2009-01-13 | 2009-01-14 | 771 | 91.81d |
| 773 | 1.5 | **Measurement Layer** | 329.15d? | 2008-02-04 | 2009-05-08 |  | 9.99d |
| 774 | 1.5.1 | **Managed interface definition** | 71.15d? | 2008-02-21 | 2008-06-02 |  | 9.99d |
| 775 | 1.5.1.1 | **Defining (first pass)interfaces for all MVP meas** | 2.86d | 2008-02-21 | 2008-02-26 |  | 9.99d |
| 776 |  | Review with team & Incorporate Review decisions | 2.86d | 2008-02-21 | 2008-02-26 | 1556 | 9.99d |
| 777 | 1.5.1.2 | **Transforms** | 5d? | 2008-02-26 | 2008-03-04 |  | 9.99d |
| 778 |  | FFT | 0.71d? | 2008-02-26 | 2008-02-27 | 776 | 9.99d |
| 779 |  | STFT | 0.71d? | 2008-02-27 | 2008-02-28 | 778 | 9.99d |
| 780 |  | Windowing | 0.71d | 2008-02-28 | 2008-02-28 | 779 | 9.99d |
| 781 |  | Window coeff for IE needs, Managed & Unmanaged | 1.43d? | 2008-02-28 | 2008-03-03 | 780 | 9.99d |
| 782 |  | Resampling | 0.71d | 2008-03-03 | 2008-03-03 | 781 | 9.99d |
| 783 |  | ZoomFFT | 0.71d | 2008-03-04 | 2008-03-04 | 782 | 9.99d |
| 784 | 1.5.1.3 | **Spectrums** | 4.57d? | 2008-03-18 | 2008-03-25 |  | 9.99d |
| 785 |  | Linear | 0.71d | 2008-03-18 | 2008-03-19 | 1544 | 10.99d |
| 786 |  | Power | 0.71d? | 2008-03-19 | 2008-03-20 | 785 | 10.99d |
| 787 |  | Phase | 0.71d? | 2008-03-20 | 2008-03-20 | 786 | 10.99d |
| 788 |  | Auto power | 0.71d? | 2008-03-20 | 2008-03-24 | 787 | 9.99d |
| 789 |  | Cross power | 0.71d? | 2008-03-24 | 2008-03-25 | 788 | 9.99d |
| 790 | 1.5.1.4 | **Filters** | 7.14d? | 2008-03-25 | 2008-04-03 |  | 9.99d |
| 791 |  | Weighting filters | 2.86d? | 2008-03-25 | 2008-03-28 | 789 | 9.99d |
| 792 |  | CCIR | 2.14d? | 2008-03-28 | 2008-04-01 | 791 | 9.99d |
| 793 |  | Low Pass, high pass, band pass, notch | 2.14d? | 2008-04-01 | 2008-04-03 | 792 | 10.99d |
| 794 | 1.5.1.5 | **Distortion** | 4.29d? | 2008-04-03 | 2008-04-09 |  | 11.99d |
| 795 |  | THD | 0.71d? | 2008-04-03 | 2008-04-04 | 793 | 11.99d |
| 796 |  | THD + Noise | 0.71d? | 2008-04-04 | 2008-04-04 | 795 | 11.99d |
| 797 |  | SINAD | 0.71d? | 2008-04-04 | 2008-04-07 | 796 | 11.99d |
| 798 |  | ENOB | 0.71d? | 2008-04-07 | 2008-04-08 | 797 | 11.99d |
| 799 |  | SNR | 0.71d? | 2008-04-08 | 2008-04-09 | 798 | 11.99d |
| 800 |  | SFDR | 0.71d? | 2008-04-09 | 2008-04-09 | 799 | 11.99d |
| 801 |  | Averaging | 4.29d? | 2008-04-09 | 2008-04-17 | 800 | 11.99d |
| 802 |  | Coherence | 1.43d? | 2008-04-17 | 2008-04-21 | 801 | 10.99d |
| 803 | 1.5.1.8 | **Signal Generation** | 4.29d? | 2008-04-21 | 2008-04-25 |  | 10.99d |
| 804 |  | Sine | 0.71d? | 2008-04-21 | 2008-04-22 | 802 | 10.99d |
| 805 |  | Square | 0.71d? | 2008-04-22 | 2008-04-22 | 804 | 10.99d |
| 806 | 1.5.1.8.3 | **Noise** | 2.86d? | 2008-04-22 | 2008-04-25 |  | 10.99d |
| 807 |  | Random | 0.71d? | 2008-04-22 | 2008-04-23 | 805 | 10.99d |
| 808 |  | Pink | 0.71d? | 2008-04-23 | 2008-04-24 | 807 | 10.99d |
| 809 |  | White | 0.71d? | 2008-04-24 | 2008-04-25 | 808 | 10.99d |
| 810 |  | Gaussian | 0.71d? | 2008-04-25 | 2008-04-25 | 809 | 10.99d |
| 811 |  | Octave | 1.43d? | 2008-04-25 | 2008-04-29 | 810 | 10.99d |
| 812 | 1.5.1.10 | **Math** | 6.71d? | 2008-04-29 | 2008-05-07 |  | 9.99d |
| 813 |  | Cepstrum | 0.71d? | 2008-04-29 | 2008-04-29 | 811 | 10.99d |
| 814 |  | Basic Complex math | 0.71d? | 2008-04-29 | 2008-04-30 | 813 | 10.99d |
| 815 |  | Hilbert | 1.43d? | 2008-04-30 | 2008-05-05 | 814 | 9.99d |
| 816 |  | Conversions | 1.43d? | 2008-05-05 | 2008-05-06 | 815 | 9.99d |
| 817 |  | Differentiation/Integration | 0.71d? | 2008-05-06 | 2008-05-07 | 816 | 9.99d |
| 818 |  | Statistical (mean,mode…) | 0.71d? | 2008-05-07 | 2008-05-07 | 817 | 9.99d |
| 819 | 1.5.1.11 | **Limit lines** | 1.43d? | 2008-05-07 | 2008-05-09 |  | 9.99d |
| 820 |  | Upper limit | 0.71d? | 2008-05-07 | 2008-05-08 | 818 | 9.99d |
| 821 |  | Lower limit | 0.71d? | 2008-05-08 | 2008-05-09 | 820 | 9.99d |
| 822 | 1.5.1.12 | **Swept Sine** | 5d? | 2008-05-09 | 2008-05-16 |  | 9.99d |
| 823 |  | Gain, Phase margins | 0.71d? | 2008-05-09 | 2008-05-12 | 821 | 9.99d |
| 824 |  | Frequency, Damping | 0.71d? | 2008-05-12 | 2008-05-12 | 823 | 9.99d |
| 825 |  | Frequency Response | 1.43d? | 2008-05-12 | 2008-05-14 | 824 | 9.99d |
| 826 |  | Variance | 0.71d? | 2008-05-14 | 2008-05-14 | 825 | 9.99d |
| 827 |  | Group Delay | 1.43d? | 2008-05-14 | 2008-05-16 | 826 | 9.99d |
| 828 | 1.5.1.13 | **Marker Functions** | 4.29d? | 2008-05-16 | 2008-05-22 |  | 9.99d |
| 829 |  | Peak Search | 0.71d? | 2008-05-16 | 2008-05-19 | 827 | 9.99d |
| 830 |  | Next Largest Peak | 0.71d? | 2008-05-19 | 2008-05-19 | 829 | 9.99d |
| 831 |  | Next Peak Right | 0.71d? | 2008-05-19 | 2008-05-20 | 830 | 9.99d |
| 832 |  | Next Peak Left | 0.71d? | 2008-05-20 | 2008-05-21 | 831 | 9.99d |
| 833 |  | Peak Tracking | 0.71d? | 2008-05-21 | 2008-05-21 | 832 | 9.99d |
| 834 |  | Marker to Center | 0.71d? | 2008-05-21 | 2008-05-22 | 833 | 9.99d |
| 835 |  | Orbit | 0.71d? | 2008-05-22 | 2008-05-23 | 834 | 9.99d |
| 836 | 1.5.1.15 | **Time measurements** | 5.71d? | 2008-05-23 | 2008-06-02 |  | 9.99d |
| 837 |  | Delay time function | 0.71d? | 2008-05-23 | 2008-05-26 | 835 | 9.99d |
| 838 |  | Maximum overshoot | 0.71d? | 2008-05-26 | 2008-05-26 | 837 | 9.99d |
| 839 |  | Rise time | 0.71d? | 2008-05-26 | 2008-05-27 | 838 | 9.99d |
| 840 |  | Decay Time | 0.71d? | 2008-05-27 | 2008-05-28 | 839 | 9.99d |

| ID | WBS | Task | Duration | Start | Finish | Predecessors | Total float |
| --- | --- | --- | --- | --- | --- | --- | --- |
| 841 |  | Pulse Width | 0.71d? | 2008-05-28 | 2008-05-28 | 840 | 9.99d |
| 842 |  | Voltage Max | 0.71d? | 2008-05-28 | 2008-05-29 | 841 | 9.99d |
| 843 |  | Voltage Min | 0.71d? | 2008-05-29 | 2008-05-30 | 842 | 9.99d |
| 844 |  | Settling time | 0.71d? | 2008-05-30 | 2008-06-02 | 843 | 9.99d |
| 845 | 1.5.2 | **Data model design** | 6.43d? | 2008-06-02 | 2008-06-10 |  | 9.99d |
| 846 |  | Review the current design/implementation | 0.71d? | 2008-06-02 | 2008-06-02 | 844 | 9.99d |
| 847 |  | Complete the implementation | 2.86d? | 2008-06-02 | 2008-06-05 | 846 | 9.99d |
| 848 |  | Review with the team & update | 1.43d? | 2008-06-05 | 2008-06-09 | 847 | 9.99d |
| 849 |  | Build some test cases | 1.43d? | 2008-06-09 | 2008-06-10 | 848 | 9.99d |
| 850 | 1.5.3 | **Infrastrucutre development** | 12.14d? | 2008-06-10 | 2008-06-26 |  | 9.99d |
| 851 |  | VS Project setup and tuning | 2.86d? | 2008-06-10 | 2008-06-13 | 849 | 9.99d |
| 852 |  | Performance test framework and setup | 2.86d? | 2008-06-13 | 2008-06-18 | 851 | 9.99d |
| 853 |  | Verfication test process and guidelines | 3.57d? | 2008-06-18 | 2008-06-23 | 852 | 9.99d |
| 854 |  | Documentation tool setup for library users | 0.71d? | 2008-06-23 | 2008-06-24 | 853 | 9.99d |
| 855 |  | FxCop setup | 2.14d? | 2008-06-24 | 2008-06-26 | 854 | 9.99d |
| 856 | 1.5.4 | **Research/Implementation** | 329.15d? | 2008-02-04 | 2009-05-08 |  | 9.99d |
| 857 | 1.5.4.1 | **FFT** | 8.57d? | 2008-06-26 | 2008-07-09 |  | 9.99d |
| 858 |  | Review meas catalog & update | 0.71d? | 2008-06-26 | 2008-06-27 | 855 | 9.99d |
| 859 |  | Review managed & Native interface definitions | 0.71d? | 2008-06-27 | 2008-06-30 | 858 | 9.99d |
| 860 |  | Implementation | 2.14d? | 2008-06-30 | 2008-07-02 | 859 | 9.99d |
| 861 |  | Unit test the code | 0.71d? | 2008-07-02 | 2008-07-02 | 860 | 9.99d |
| 862 | 1.5.4.1.5 | **Verifcation** | 2.14d? | 2008-07-02 | 2008-07-07 |  | 9.99d |
| 863 |  | Develop the verification code in Matlab | 0.71d? | 2008-07-02 | 2008-07-03 | 861 | 9.99d |
| 864 |  | Define the test input data & pass to ML & MATLAB | 0.71d? | 2008-07-03 | 2008-07-04 | 863 | 9.99d |
| 865 |  | Compare the outputs | 0.71d? | 2008-07-04 | 2008-07-07 | 864 | 9.99d |
| 866 |  | Measure performance & document mesaurements | 1.43d? | 2008-07-07 | 2008-07-08 | 865 | 9.99d |
| 867 |  | Interface definition, code, Nunit , Result & Doc review | 0.71d? | 2008-07-08 | 2008-07-09 | 866 | 9.99d |
| 868 | 1.5.4.2 | **STFT** | 10.71d? | 2008-07-09 | 2008-07-23 |  | 9.99d |
| 869 |  | Review meas catalog & update | 0.71d? | 2008-07-09 | 2008-07-09 | 867 | 9.99d |
| 870 |  | Review managed & Native interface definitions | 0.71d? | 2008-07-09 | 2008-07-10 | 869 | 9.99d |
| 871 |  | Implementation Write code | 5d? | 2008-07-10 | 2008-07-17 | 870 | 9.99d |
| 872 |  | Unit test the code | 0.71d? | 2008-07-17 | 2008-07-18 | 871 | 9.99d |
| 873 | 1.5.4.2.5 | **Verifcation** | 2.14d? | 2008-07-18 | 2008-07-22 |  | 9.99d |
| 874 |  | Develop the verification code in Matlab | 0.71d? | 2008-07-18 | 2008-07-21 | 872 | 9.99d |
| 875 |  | Define the test input data & pass to ML & MATLAB | 0.71d? | 2008-07-21 | 2008-07-21 | 874 | 9.99d |
| 876 |  | Compare the outputs | 0.71d? | 2008-07-21 | 2008-07-22 | 875 | 9.99d |
| 877 |  | Measure performance & document mesaurements | 0.71d? | 2008-07-22 | 2008-07-23 | 876 | 9.99d |
| 878 |  | Interface definition, code, Nunit , Result & Doc review | 0.71d? | 2008-07-23 | 2008-07-23 | 877 | 9.99d |
| 879 | 1.5.4.3 | **Windowing** | 7.14d? | 2008-07-23 | 2008-08-04 |  | 9.99d |
| 880 |  | Review meas catalog & update | 0.71d? | 2008-07-23 | 2008-07-24 | 878 | 9.99d |
| 881 |  | Review managed & Native interface definitions | 0.71d? | 2008-07-24 | 2008-07-25 | 880 | 9.99d |
| 882 |  | Write code | 1.43d? | 2008-07-25 | 2008-07-28 | 881 | 9.99d |
| 883 |  | Unit test the code | 0.71d? | 2008-07-28 | 2008-07-29 | 882 | 9.99d |
| 884 | 1.5.4.3.5 | **Verifcation** | 2.14d? | 2008-07-29 | 2008-07-31 |  | 9.99d |
| 885 |  | Develop the verification code in Matlab | 0.71d? | 2008-07-29 | 2008-07-30 | 883 | 9.99d |
| 886 |  | Define the test input data & pass to ML & MATLAB | 0.71d? | 2008-07-30 | 2008-07-30 | 885 | 9.99d |
| 887 |  | Compare the outputs | 0.71d? | 2008-07-30 | 2008-07-31 | 886 | 9.99d |
| 888 |  | Measure performance & document mesaurements | 0.71d? | 2008-07-31 | 2008-08-01 | 887 | 9.99d |
| 889 |  | Interface definition, code, Nunit , Result & Doc review | 0.71d? | 2008-08-01 | 2008-08-04 | 888 | 10.99d |
| 890 | 1.5.4.4 | **Resampling** | 11d? | 2008-08-04 | 2008-08-19 |  | 9.99d |
| 891 |  | Review meas catalog & update | 1.43d? | 2008-08-04 | 2008-08-05 | 889 | 10.99d |
| 892 |  | Review managed & Native interface definitions | 1.43d? | 2008-08-05 | 2008-08-06 | 891 | 10.99d |
| 893 |  | Write code | 2.86d? | 2008-08-06 | 2008-08-11 | 892 | 10.99d |
| 894 |  | Unit test the code | 0.71d? | 2008-08-11 | 2008-08-12 | 893 | 10.99d |
| 895 | 1.5.4.4.5 | **Verifcation** | 2.14d? | 2008-08-12 | 2008-08-14 |  | 10.99d |
| 896 |  | Develop the verification code in Matlab | 0.71d? | 2008-08-12 | 2008-08-13 | 894 | 10.99d |
| 897 |  | Define the test input data & pass to ML & MATLAB | 0.71d? | 2008-08-13 | 2008-08-13 | 896 | 10.99d |
| 898 |  | Compare the outputs | 0.71d? | 2008-08-13 | 2008-08-14 | 897 | 10.99d |
| 899 |  | Measure performance & document mesaurements | 0.71d? | 2008-08-14 | 2008-08-18 | 898 | 9.99d |
| 900 |  | Interface definition, code, Nunit , Result & Doc review | 0.71d? | 2008-08-18 | 2008-08-19 | 899 | 9.99d |
| 901 | 1.5.4.5 | **ZoomFFT** | 10d? | 2008-08-19 | 2008-09-02 |  | 9.99d |
| 902 |  | Review meas catalog & update | 0.71d? | 2008-08-19 | 2008-08-19 | 900 | 9.99d |
| 903 |  | Review managed & Native interface definitions | 0.71d? | 2008-08-19 | 2008-08-20 | 902 | 9.99d |
| 904 |  | Write code | 2.86d? | 2008-08-20 | 2008-08-25 | 903 | 10.99d |
| 905 |  | Unit test the code | 1.43d? | 2008-08-25 | 2008-08-26 | 904 | 10.99d |
| 906 | 1.5.4.5.5 | **Verifcation** | 2.86d? | 2008-08-26 | 2008-08-29 |  | 10.99d |
| 907 |  | Develop the verification code in Matlab | 1.43d? | 2008-08-26 | 2008-08-28 | 905 | 10.99d |
| 908 |  | Define the test input data & pass to ML & MATLAB | 0.71d? | 2008-08-28 | 2008-08-28 | 907 | 10.99d |
| 909 |  | Compare the outputs | 0.71d? | 2008-08-28 | 2008-08-29 | 908 | 10.99d |
| 910 |  | Measure performance & document mesaurements | 0.71d? | 2008-08-29 | 2008-09-01 | 909 | 10.99d |

| ID | WBS | Task | Duration | Start | Finish | Predecessors | Total float |
| --- | --- | --- | --- | --- | --- | --- | --- |
| 911 |  | Interface definition, code, Nunit , Result & Doc review | 0.71d? | 2008-09-01 | 2008-09-02 | 910 | 10.99d |
| 912 | 1.5.4.6 | **Spectrums** | 31.57d? | 2008-09-02 | 2008-10-15 |  | 10.99d |
| 913 | 1.5.4.6.1 | **Linear** | 7.43d? | 2008-09-02 | 2008-09-11 |  | 9.99d |
| 914 |  | Review meas catalog & update | 0.71d? | 2008-09-02 | 2008-09-02 | 911 | 10.99d |
| 915 |  | Review managed & Native interface definitions | 0.71d? | 2008-09-02 | 2008-09-04 | 914 | 9.99d |
| 916 |  | Write code | 0.71d? | 2008-09-04 | 2008-09-05 | 915 | 9.99d |
| 917 |  | Unit test the code | 0.71d? | 2008-09-05 | 2008-09-05 | 916 | 9.99d |
| 918 | 1.5.4.6.1.5 | **Verifcation** | 2.14d? | 2008-09-05 | 2008-09-10 |  | 9.99d |
| 919 |  | Develop the verification code in Matlab | 0.71d? | 2008-09-05 | 2008-09-08 | 917 | 9.99d |
| 920 |  | Define the test input data & pass to ML & MATLAB | 0.71d? | 2008-09-08 | 2008-09-09 | 919 | 9.99d |
| 921 |  | Compare the outputs | 0.71d? | 2008-09-09 | 2008-09-10 | 920 | 9.99d |
| 922 |  | Measure performance & document mesaurements | 0.71d? | 2008-09-10 | 2008-09-10 | 921 | 9.99d |
| 923 |  | Interface definition, code, Nunit , Result & Doc review | 0.71d? | 2008-09-10 | 2008-09-11 | 922 | 9.99d |
| 924 | 1.5.4.6.2 | **Power** | 6.43d? | 2008-09-11 | 2008-09-19 |  | 9.99d |
| 925 |  | Review meas catalog & update | 0.71d? | 2008-09-11 | 2008-09-12 | 923 | 9.99d |
| 926 |  | Review managed & Native interface definitions | 0.71d? | 2008-09-12 | 2008-09-12 | 925 | 9.99d |
| 927 |  | Write code | 0.71d? | 2008-09-12 | 2008-09-15 | 926 | 9.99d |
| 928 |  | Unit test the code | 0.71d? | 2008-09-15 | 2008-09-16 | 927 | 9.99d |
| 929 | 1.5.4.6.2.5 | **Verifcation** | 2.14d? | 2008-09-16 | 2008-09-18 |  | 9.99d |
| 930 |  | Develop the verification code in Matlab | 0.71d? | 2008-09-16 | 2008-09-17 | 928 | 9.99d |
| 931 |  | Define the test input data & pass to ML & MATLAB | 0.71d? | 2008-09-17 | 2008-09-17 | 930 | 9.99d |
| 932 |  | Compare the outputs | 0.71d? | 2008-09-17 | 2008-09-18 | 931 | 9.99d |
| 933 |  | Measure performance & document mesaurements | 0.71d? | 2008-09-18 | 2008-09-19 | 932 | 10.99d |
| 934 |  | Interface definition, code, Nunit , Result & Doc review | 0.71d? | 2008-09-19 | 2008-09-19 | 933 | 10.99d |
| 935 | 1.5.4.6.3 | **Phase** | 7.86d? | 2008-09-19 | 2008-10-01 |  | 10.99d |
| 936 |  | Review meas catalog & update | 0.71d? | 2008-09-19 | 2008-09-22 | 934 | 10.99d |
| 937 |  | Review managed & Native interface definitions | 0.71d? | 2008-09-22 | 2008-09-23 | 936 | 10.99d |
| 938 |  | Write code | 1.43d? | 2008-09-23 | 2008-09-24 | 937 | 10.99d |
| 939 |  | Unit test the code | 0.71d? | 2008-09-24 | 2008-09-25 | 938 | 11.99d |
| 940 | 1.5.4.6.3.5 | **Verifcation** | 2.86d? | 2008-09-25 | 2008-09-30 |  | 11.99d |
| 941 |  | Develop the verification code in Matlab | 1.43d? | 2008-09-25 | 2008-09-26 | 939 | 11.99d |
| 942 |  | Define the test input data & pass to ML & MATLAB | 0.71d? | 2008-09-26 | 2008-09-29 | 941 | 11.99d |
| 943 |  | Compare the outputs | 0.71d? | 2008-09-29 | 2008-09-30 | 942 | 11.99d |
| 944 |  | Measure performance & document mesaurements | 0.71d? | 2008-09-30 | 2008-10-01 | 943 | 11.99d |
| 945 |  | Interface definition, code, Nunit , Result & Doc review | 0.71d? | 2008-10-01 | 2008-10-01 | 944 | 11.99d |
| 946 | 1.5.4.6.4 | **Cross power** | 9.86d? | 2008-10-01 | 2008-10-15 |  | 10.99d |
| 947 |  | Review meas catalog & update | 0.71d? | 2008-10-01 | 2008-10-03 | 945 | 10.99d |
| 948 |  | Review managed & Native interface definitions | 0.71d? | 2008-10-03 | 2008-10-06 | 947 | 10.99d |
| 949 |  | Write code | 1.43d? | 2008-10-06 | 2008-10-07 | 948 | 10.99d |
| 950 |  | Unit test the code | 0.71d? | 2008-10-07 | 2008-10-08 | 949 | 10.99d |
| 951 | 1.5.4.6.4.5 | **Verifcation** | 3.86d? | 2008-10-08 | 2008-10-14 |  | 10.99d |
| 952 |  | Develop the verification code in Matlab | 1.43d? | 2008-10-08 | 2008-10-10 | 950 | 9.99d |
| 953 |  | Define the test input data & pass to ML & MATLAB | 0.71d? | 2008-10-10 | 2008-10-13 | 952 | 9.99d |
| 954 |  | Compare the outputs | 0.71d? | 2008-10-13 | 2008-10-14 | 953 | 9.99d |
| 955 |  | Measure performance & document mesaurements | 0.71d? | 2008-10-14 | 2008-10-14 | 954 | 10.99d |
| 956 |  | Interface definition, code, Nunit , Result & Doc review | 0.71d? | 2008-10-14 | 2008-10-15 | 955 | 10.99d |
| 957 | 1.5.4.7 | **Limit lines** | 18.86d? | 2008-10-15 | 2008-11-11 |  | 9.99d |
| 958 |  | Review meas catalog & update | 0.71d? | 2008-10-15 | 2008-10-16 | 956 | 10.99d |
| 959 |  | Review managed & Native interface definitions | 0.71d? | 2008-10-16 | 2008-10-17 | 958 | 10.99d |
| 960 |  | Write code | 5d? | 2008-10-17 | 2008-10-24 | 959 | 10.99d |
| 961 |  | Unit test the code | 2.14d? | 2008-10-24 | 2008-10-29 | 960 | 9.99d |
| 962 | 1.5.4.7.5 | **Verifcation** | 3.57d? | 2008-10-29 | 2008-11-03 |  | 9.99d |
| 963 |  | Develop the verification code in Matlab | 1.43d? | 2008-10-29 | 2008-10-30 | 961 | 9.99d |
| 964 |  | Define the test input data & pass to ML & MATLAB | 1.43d? | 2008-10-30 | 2008-11-03 | 963 | 9.99d |
| 965 |  | Compare the outputs | 0.71d? | 2008-11-03 | 2008-11-03 | 964 | 9.99d |
| 966 |  | Measure performance & document mesaurements | 0.71d? | 2008-11-03 | 2008-11-04 | 965 | 9.99d |
| 967 |  | Interface definition, code, Nunit , Result & Doc review | 0.71d? | 2008-11-04 | 2008-11-05 | 966 | 9.99d |
| 968 |  | Upper limit | 2.14d? | 2008-11-05 | 2008-11-07 | 967 | 9.99d |
| 969 |  | Lower limit | 2.14d? | 2008-11-07 | 2008-11-11 | 968 | 9.99d |
| 970 | 1.5.4.8 | **Swept Sine** | 14.29d? | 2008-11-11 | 2008-12-01 |  | 9.99d |
| 971 |  | Review meas catalog & update | 0.71d? | 2008-11-11 | 2008-11-12 | 969 | 9.99d |
| 972 |  | Review managed & Native interface definitions | 1.43d? | 2008-11-12 | 2008-11-13 | 971 | 9.99d |
| 973 |  | Write code | 5d? | 2008-11-13 | 2008-11-20 | 972 | 9.99d |
| 974 |  | Unit test the code | 2.14d? | 2008-11-20 | 2008-11-24 | 973 | 9.99d |
| 975 | 1.5.4.8.5 | **Verifcation** | 3.57d? | 2008-11-24 | 2008-11-28 |  | 9.99d |
| 976 |  | Develop the verification code in Matlab | 1.43d? | 2008-11-24 | 2008-11-26 | 974 | 9.99d |
| 977 |  | Define the test input data & pass to ML & MATLAB | 1.43d? | 2008-11-26 | 2008-11-27 | 976 | 10.99d |
| 978 |  | Compare the outputs | 0.71d? | 2008-11-27 | 2008-11-28 | 977 | 10.99d |
| 979 |  | Measure performance & document mesaurements | 0.71d? | 2008-11-28 | 2008-12-01 | 978 | 10.99d |
| 980 |  | Interface definition, code, Nunit , Result & Doc review | 0.71d? | 2008-12-01 | 2008-12-01 | 979 | 10.99d |

| ID | WBS | Task | Duration | Start | Finish | Predecessors | Total float |
| --- | --- | --- | --- | --- | --- | --- | --- |
| 981 | 1.5.4.9 | **Gain, Phase margins** | 15.29d? | 2008-12-01 | 2008-12-23 |  | 10.99d |
| 982 |  | Review meas catalog & update | 0.71d? | 2008-12-01 | 2008-12-02 | 980 | 10.99d |
| 983 |  | Review managed & Native interface definitions | 1.43d? | 2008-12-02 | 2008-12-03 | 982 | 10.99d |
| 984 |  | Write code | 5d? | 2008-12-03 | 2008-12-11 | 983 | 10.99d |
| 985 |  | Unit test the code | 2.14d? | 2008-12-11 | 2008-12-16 | 984 | 10.99d |
| 986 | 1.5.4.9.5 | **Verifcation** | 3.57d? | 2008-12-16 | 2008-12-19 |  | 10.99d |
| 987 |  | Develop the verification code in Matlab | 1.43d? | 2008-12-16 | 2008-12-17 | 985 | 10.99d |
| 988 |  | Define the test input data & pass to ML & MATLAB | 1.43d? | 2008-12-17 | 2008-12-18 | 987 | 10.99d |
| 989 |  | Compare the outputs | 0.71d? | 2008-12-18 | 2008-12-19 | 988 | 10.99d |
| 990 |  | Measure performance & document mesaurements | 0.71d? | 2008-12-19 | 2008-12-22 | 989 | 10.99d |
| 991 |  | Interface definition, code, Nunit , Result & Doc review | 0.71d? | 2008-12-22 | 2008-12-23 | 990 | 10.99d |
| 992 | 1.5.4.10 | **Frequency, Damping** | 15.29d? | 2008-12-23 | 2009-01-13 |  | 9.99d |
| 993 |  | Review meas catalog & update | 0.71d? | 2008-12-23 | 2008-12-23 | 991 | 10.99d |
| 994 |  | Review managed & Native interface definitions | 1.43d? | 2008-12-23 | 2008-12-26 | 993 | 9.99d |
| 995 |  | Write code | 5d? | 2008-12-26 | 2009-01-02 | 994 | 9.99d |
| 996 |  | Unit test the code | 2.14d? | 2009-01-02 | 2009-01-06 | 995 | 9.99d |
| 997 | 1.5.4.10.5 | **Verifcation** | 3.57d? | 2009-01-06 | 2009-01-09 |  | 9.99d |
| 998 |  | Develop the verification code in Matlab | 1.43d? | 2009-01-06 | 2009-01-07 | 996 | 9.99d |
| 999 |  | Define the test input data & pass to ML & MATLAB | 1.43d? | 2009-01-07 | 2009-01-09 | 998 | 9.99d |
| 1000 |  | Compare the outputs | 0.71d? | 2009-01-09 | 2009-01-09 | 999 | 9.99d |
| 1001 |  | Measure performance & document mesaurements | 0.71d? | 2009-01-09 | 2009-01-12 | 1000 | 9.99d |
| 1002 |  | Interface definition, code, Nunit , Result & Doc review | 0.71d? | 2009-01-12 | 2009-01-13 | 1001 | 9.99d |
| 1003 | 1.5.4.11 | **Frequency Response** | 20d? | 2009-01-13 | 2009-02-10 |  | 9.99d |
| 1004 |  | Review meas catalog & update | 0.71d? | 2009-01-13 | 2009-01-14 | 1002 | 9.99d |
| 1005 |  | Review managed & Native interface definitions | 2.14d? | 2009-01-14 | 2009-01-16 | 1004 | 9.99d |
| 1006 |  | Write code | 5.71d? | 2009-01-16 | 2009-01-23 | 1005 | 9.99d |
| 1007 |  | Unit test the code | 3.57d? | 2009-01-23 | 2009-01-29 | 1006 | 9.99d |
| 1008 | 1.5.4.11.5 | **Verifcation** | 5.71d? | 2009-01-29 | 2009-02-06 |  | 9.99d |
| 1009 |  | Develop the verification code in Matlab | 2.14d? | 2009-01-29 | 2009-02-02 | 1007 | 9.99d |
| 1010 |  | Define the test input data & pass to ML & MATLAB | 2.14d? | 2009-02-02 | 2009-02-04 | 1009 | 9.99d |
| 1011 |  | Compare the outputs | 1.43d? | 2009-02-04 | 2009-02-06 | 1010 | 9.99d |
| 1012 |  | Measure performance & document mesaurements | 0.71d? | 2009-02-06 | 2009-02-06 | 1011 | 9.99d |
| 1013 |  | Interface definition, code, Nunit , Result & Doc review | 1.43d? | 2009-02-06 | 2009-02-10 | 1012 | 9.99d |
| 1014 | 1.5.4.12 | **Variance** | 11.43d? | 2009-02-10 | 2009-02-25 |  | 9.99d |
| 1015 |  | Review meas catalog & update | 0.71d? | 2009-02-10 | 2009-02-11 | 1013 | 9.99d |
| 1016 |  | Review managed & Native interface definitions | 1.43d? | 2009-02-11 | 2009-02-12 | 1015 | 9.99d |
| 1017 |  | Write code | 2.14d? | 2009-02-12 | 2009-02-16 | 1016 | 9.99d |
| 1018 |  | Unit test the code | 1.43d? | 2009-02-16 | 2009-02-18 | 1017 | 9.99d |
| 1019 | 1.5.4.12.5 | **Verifcation** | 3.57d? | 2009-02-18 | 2009-02-23 |  | 9.99d |
| 1020 |  | Develop the verification code in Matlab | 1.43d? | 2009-02-18 | 2009-02-19 | 1018 | 9.99d |
| 1021 |  | Define the test input data & pass to ML & MATLAB | 1.43d? | 2009-02-19 | 2009-02-20 | 1020 | 9.99d |
| 1022 |  | Compare the outputs | 0.71d? | 2009-02-20 | 2009-02-23 | 1021 | 9.99d |
| 1023 |  | Measure performance & document mesaurements | 0.71d? | 2009-02-23 | 2009-02-24 | 1022 | 9.99d |
| 1024 |  | Interface definition, code, Nunit , Result & Doc review | 1.43d? | 2009-02-24 | 2009-02-25 | 1023 | 9.99d |
| 1025 | 1.5.4.13 | **Group Delay** | 51.43d? | 2009-02-25 | 2009-05-08 |  | 9.99d |
| 1026 |  | Review meas catalog & update | 0.71d? | 2009-02-25 | 2009-02-26 | 1024 | 9.99d |
| 1027 |  | Review managed & Native interface definitions | 1.43d? | 2009-02-26 | 2009-02-27 | 1026 | 9.99d |
| 1028 |  | Write code | 4.29d? | 2009-02-27 | 2009-03-06 | 1027 | 9.99d |
| 1029 |  | Unit test the code | 2.14d? | 2009-03-06 | 2009-03-10 | 1028 | 9.99d |
| 1030 | 1.5.4.13.5 | **Verifcation** | 3.57d? | 2009-03-10 | 2009-03-13 |  | 9.99d |
| 1031 |  | Develop the verification code in Matlab | 1.43d? | 2009-03-10 | 2009-03-11 | 1029 | 9.99d |
| 1032 |  | Define the test input data & pass to ML & MATLAB | 1.43d? | 2009-03-11 | 2009-03-13 | 1031 | 9.99d |
| 1033 |  | Compare the outputs | 0.71d? | 2009-03-13 | 2009-03-13 | 1032 | 9.99d |
| 1034 |  | Measure performance & document mesaurements | 0.71d? | 2009-03-13 | 2009-03-16 | 1033 | 9.99d |
| 1035 |  | Interface definition, code, Nunit , Result & Doc review | 1.43d? | 2009-05-06 | 2009-05-08 | 1034 | 9.99d |
| 1036 | 1.5.4.14 | **Distortion** | 287.08d? | 2008-02-27 | 2009-04-03 |  | 34.14d |
| 1037 | 1.5.4.14.1 | **THD** | 26d? | 2008-12-31 | 2009-02-04 |  | 31d |
| 1038 |  | Review meas catalog & update | 0.5d? | 2008-12-31 | 2008-12-31 | 1557 | 31d |
| 1039 |  | Review managed & Native interface definitions | 0.5d? | 2008-12-31 | 2008-12-31 | 1038 | 31d |
| 1040 |  | Write code | 3d? | 2009-01-06 | 2009-01-08 | 1039 | 31d |
| 1041 |  | Unit test the code | 2d? | 2009-01-12 | 2009-01-13 | 1040 | 32d |
| 1042 | 1.5.4.14.1.5 | **Verifcation** | 9d? | 2009-01-20 | 2009-01-30 |  | 32d |
| 1043 |  | Develop the verification code in Matlab | 4d? | 2009-01-20 | 2009-01-23 | 1041 | 32d |
| 1044 |  | Define the test input data & pass to ML & MATLAB | 1d? | 2009-01-28 | 2009-01-28 | 1043 | 32d |
| 1045 |  | Compare the outputs | 1d? | 2009-01-30 | 2009-01-30 | 1044 | 32d |
| 1046 |  | Measure performance & document mesaurements | 1d? | 2009-02-03 | 2009-02-03 | 1045 | 32d |
| 1047 |  | Interface definition, code, Nunit , Result & Doc review | 1d? | 2009-02-04 | 2009-02-04 | 1046 | 32d |
| 1048 | 1.5.4.14.2 | **THD + Noise** | 40d? | 2009-02-09 | 2009-04-03 |  | 33d |
| 1049 |  | Review meas catalog & update | 1d? | 2009-02-09 | 2009-02-09 | 1047 | 33d |
| 1050 |  | Review managed & Native interface definitions | 1d? | 2009-02-10 | 2009-02-10 | 1049 | 33d |

| ID | WBS | Task | Duration | Start | Finish | Predecessors | Total float |
| --- | --- | --- | --- | --- | --- | --- | --- |
| 1051 |  | Write code | 7d? | 2009-02-23 | 2009-03-03 | 1050 | 34.14d |
| 1052 |  | Unit test the code | 2d? | 2009-03-06 | 2009-03-09 | 1051 | 34.14d |
| 1053 | 1.5.4.14.2.5 | **Verifcation** | 10d? | 2009-03-12 | 2009-03-25 |  | 34.14d |
| 1054 |  | Develop the verification code in Matlab | 4d? | 2009-03-12 | 2009-03-17 | 1052 | 34.14d |
| 1055 |  | Define the test input data & pass to ML & MATLAB | 1d? | 2009-03-18 | 2009-03-18 | 1054 | 34.14d |
| 1056 |  | Compare the outputs | 1d? | 2009-03-25 | 2009-03-25 | 1055 | 34.14d |
| 1057 |  | Measure performance & document mesaurements | 1d? | 2009-03-26 | 2009-03-26 | 1056 | 34.14d |
| 1058 |  | Interface definition, code, Nunit , Result & Doc review | 2d? | 2009-04-02 | 2009-04-03 | 1057 | 34.14d |
| 1059 | 1.5.4.14.3 | **SINAD** | 10.77d? | 2008-02-27 | 2008-03-13 |  | 188.53d |
| 1060 |  | Review meas catalog & update | 0.77d? | 2008-02-27 | 2008-02-28 | 1113, 1058 | 188.53d |
| 1061 |  | Review managed & Native interface definitions | 0.77d? | 2008-02-28 | 2008-02-29 | 1060 | 188.53d |
| 1062 |  | Write code | 3.08d? | 2008-02-29 | 2008-03-05 | 1061 | 188.53d |
| 1063 |  | Unit test the code | 1.54d? | 2008-03-05 | 2008-03-07 | 1062 | 188.53d |
| 1064 | 1.5.4.14.3.5 | **Verifcation** | 3.08d? | 2008-03-07 | 2008-03-12 |  | 188.53d |
| 1065 |  | Develop the verification code in Matlab | 1.54d? | 2008-03-07 | 2008-03-10 | 1063 | 188.53d |
| 1066 |  | Define the test input data & pass to ML & MATLAB | 0.77d? | 2008-03-10 | 2008-03-11 | 1065 | 188.53d |
| 1067 |  | Compare the outputs | 0.77d? | 2008-03-11 | 2008-03-12 | 1066 | 188.53d |
| 1068 |  | Measure performance & document mesaurements | 0.77d? | 2008-03-12 | 2008-03-12 | 1067 | 188.53d |
| 1069 |  | Interface definition, code, Nunit , Result & Doc review | 0.77d? | 2008-03-12 | 2008-03-13 | 1068 | 188.53d |
| 1070 | 1.5.4.14.4 | **ENOB** | 11d? | 2008-03-13 | 2008-03-28 |  | 188.53d |
| 1071 |  | Review meas catalog & update | 0.77d? | 2008-03-13 | 2008-03-14 | 1069 | 188.53d |
| 1072 |  | Review managed & Native interface definitions | 0.77d? | 2008-03-14 | 2008-03-17 | 1071 | 188.53d |
| 1073 |  | Write code | 1.54d? | 2008-03-17 | 2008-03-18 | 1072 | 188.53d |
| 1074 |  | Unit test the code | 1.54d? | 2008-03-18 | 2008-03-20 | 1073 | 188.53d |
| 1075 | 1.5.4.14.4.5 | **Verifcation** | 4.08d? | 2008-03-20 | 2008-03-26 |  | 188.53d |
| 1076 |  | Develop the verification code in Matlab | 1.54d? | 2008-03-20 | 2008-03-24 | 1074 | 188.53d |
| 1077 |  | Define the test input data & pass to ML & MATLAB | 0.77d? | 2008-03-24 | 2008-03-25 | 1076 | 188.53d |
| 1078 |  | Compare the outputs | 0.77d? | 2008-03-25 | 2008-03-26 | 1077 | 188.53d |
| 1079 |  | Measure performance & document mesaurements | 0.77d? | 2008-03-26 | 2008-03-27 | 1078 | 188.53d |
| 1080 |  | Interface definition, code, Nunit , Result & Doc review | 1.54d? | 2008-03-27 | 2008-03-28 | 1079 | 188.53d |
| 1081 | 1.5.4.14.5 | **SNR** | 9.23d? | 2008-03-28 | 2008-04-10 |  | 188.53d |
| 1082 |  | Review meas catalog & update | 0.77d? | 2008-03-28 | 2008-03-31 | 1080 | 188.53d |
| 1083 |  | Review managed & Native interface definitions | 0.77d? | 2008-03-31 | 2008-04-01 | 1082 | 188.53d |
| 1084 |  | Write code | 1.54d? | 2008-04-01 | 2008-04-02 | 1083 | 188.53d |
| 1085 |  | Unit test the code | 1.54d? | 2008-04-02 | 2008-04-04 | 1084 | 188.53d |
| 1086 | 1.5.4.14.5.5 | **Verifcation** | 3.08d? | 2008-04-04 | 2008-04-09 |  | 188.53d |
| 1087 |  | Develop the verification code in Matlab | 1.54d? | 2008-04-04 | 2008-04-07 | 1085 | 188.53d |
| 1088 |  | Define the test input data & pass to ML & MATLAB | 0.77d? | 2008-04-07 | 2008-04-08 | 1087 | 189.53d |
| 1089 |  | Compare the outputs | 0.77d? | 2008-04-08 | 2008-04-09 | 1088 | 189.53d |
| 1090 |  | Measure performance & document mesaurements | 0.77d? | 2008-04-09 | 2008-04-10 | 1089 | 189.53d |
| 1091 |  | Interface definition, code, Nunit , Result & Doc review | 0.77d? | 2008-04-10 | 2008-04-10 | 1090 | 189.53d |
| 1092 | 1.5.4.14.6 | **SFDR** | 12.77d? | 2008-04-10 | 2008-04-29 |  | 187.53d |
| 1093 |  | Review meas catalog & update | 0.77d? | 2008-04-10 | 2008-04-11 | 1091 | 189.53d |
| 1094 |  | Review managed & Native interface definitions | 0.77d? | 2008-04-11 | 2008-04-15 | 1093 | 188.53d |
| 1095 |  | Write code | 3.08d? | 2008-04-15 | 2008-04-21 | 1094 | 187.53d |
| 1096 |  | Unit test the code | 1.54d? | 2008-04-21 | 2008-04-23 | 1095 | 187.53d |
| 1097 | 1.5.4.14.6.5 | **Verifcation** | 3.08d? | 2008-04-23 | 2008-04-28 |  | 187.53d |
| 1098 |  | Develop the verification code in Matlab | 1.54d? | 2008-04-23 | 2008-04-24 | 1096 | 187.53d |
| 1099 |  | Define the test input data & pass to ML & MATLAB | 0.77d? | 2008-04-24 | 2008-04-25 | 1098 | 187.53d |
| 1100 |  | Compare the outputs | 0.77d? | 2008-04-25 | 2008-04-28 | 1099 | 187.53d |
| 1101 |  | Measure performance & document mesaurements | 0.77d? | 2008-04-28 | 2008-04-28 | 1100 | 187.53d |
| 1102 |  | Interface definition, code, Nunit , Result & Doc review | 0.77d? | 2008-04-28 | 2008-04-29 | 1101 | 187.53d |
| 1103 | 1.5.4.15 | **Averaging** | 17.92d? | 2008-02-04 | 2008-02-27 |  | 38d |
| 1104 |  | Review meas catalog & update | 1.54d? | 2008-02-04 | 2008-02-05 | 1102 | 38d |
| 1105 |  | Review managed & Native interface definitions | 0.77d? | 2008-02-05 | 2008-02-06 | 1104 | 38d |
| 1106 |  | Write code | 4.62d? | 2008-02-06 | 2008-02-13 | 1105 | 37d |
| 1107 |  | Unit test the code | 1.54d? | 2008-02-13 | 2008-02-15 | 1106 | 37d |
| 1108 | 1.5.4.15.5 | **Verifcation** | 6.15d? | 2008-02-15 | 2008-02-25 |  | 37d |
| 1109 |  | Develop the verification code in Matlab | 4.62d? | 2008-02-15 | 2008-02-22 | 1107 | 37d |
| 1110 |  | Define the test input data & pass to ML & MATLAB | 0.77d? | 2008-02-22 | 2008-02-22 | 1109 | 38d |
| 1111 |  | Compare the outputs | 0.77d? | 2008-02-22 | 2008-02-25 | 1110 | 38d |
| 1112 |  | Measure performance & document mesaurements | 0.77d? | 2008-02-25 | 2008-02-26 | 1111 | 38d |
| 1113 |  | Interface definition, code, Nunit , Result & Doc review | 1.54d? | 2008-02-26 | 2008-02-27 | 1112 | 39d |
| 1114 | 1.5.4.16 | **Signal Generation** | 65d? | 2008-02-04 | 2008-05-02 |  | 37.91d |
| 1115 | 1.5.4.16.1 | **Sine** | 8.69d? | 2008-02-04 | 2008-02-14 |  | 38.91d |
| 1116 |  | Review meas catalog & update | 0.77d? | 2008-02-04 | 2008-02-04 |  | 39.91d |
| 1117 |  | Review managed & Native interface definitions | 0.77d? | 2008-02-04 | 2008-02-05 | 1116 | 39.91d |
| 1118 |  | Write code | 0.77d? | 2008-02-05 | 2008-02-06 | 1117 | 39.91d |
| 1119 |  | Unit test the code | 0.77d? | 2008-02-06 | 2008-02-07 | 1118 | 39.91d |
| 1120 | 1.5.4.16.1.5 | **Verifcation** | 4.08d? | 2008-02-07 | 2008-02-13 |  | 38.91d |

| ID | WBS | Task | Duration | Start | Finish | Predecessors | Total float |
| --- | --- | --- | --- | --- | --- | --- | --- |
| 1121 |  | Develop the verification code in Matlab | 1.54d? | 2008-02-07 | 2008-02-08 | 1119 | 39.91d |
| 1122 |  | Define the test input data & pass to ML & MATLAB | 0.77d? | 2008-02-08 | 2008-02-12 | 1121 | 38.91d |
| 1123 |  | Compare the outputs | 0.77d? | 2008-02-12 | 2008-02-13 | 1122 | 38.91d |
| 1124 |  | Measure performance & document mesaurements | 0.77d? | 2008-02-13 | 2008-02-13 | 1123 | 38.91d |
| 1125 |  | Interface definition, code, Nunit , Result & Doc review | 0.77d? | 2008-02-13 | 2008-02-14 | 1124 | 38.91d |
| 1126 | 1.5.4.16.2 | **Square** | 7.69d? | 2008-02-14 | 2008-02-26 |  | 38.91d |
| 1127 |  | Review meas catalog & update | 0.77d? | 2008-02-14 | 2008-02-15 | 1125 | 38.91d |
| 1128 |  | Review managed & Native interface definitions | 0.77d? | 2008-02-15 | 2008-02-18 | 1127 | 38.91d |
| 1129 |  | Write code | 0.77d? | 2008-02-18 | 2008-02-18 | 1128 | 38.91d |
| 1130 |  | Unit test the code | 0.77d? | 2008-02-18 | 2008-02-19 | 1129 | 38.91d |
| 1131 | 1.5.4.16.2.5 | **Verifcation** | 3.08d? | 2008-02-19 | 2008-02-22 |  | 39.91d |
| 1132 |  | Develop the verification code in Matlab | 1.54d? | 2008-02-19 | 2008-02-21 | 1130 | 39.91d |
| 1133 |  | Define the test input data & pass to ML & MATLAB | 0.77d? | 2008-02-21 | 2008-02-22 | 1132 | 39.91d |
| 1134 |  | Compare the outputs | 0.77d? | 2008-02-22 | 2008-02-22 | 1133 | 39.91d |
| 1135 |  | Measure performance & document mesaurements | 0.77d? | 2008-02-22 | 2008-02-25 | 1134 | 40.91d |
| 1136 |  | Interface definition, code, Nunit , Result & Doc review | 0.77d? | 2008-02-25 | 2008-02-26 | 1135 | 40.91d |
| 1137 | 1.5.4.16.3 | **Noise** | 48.61d? | 2008-02-26 | 2008-05-02 |  | 37.91d |
| 1138 | 1.5.4.16.3.1 | **Random** | 9.23d? | 2008-02-26 | 2008-03-10 |  | 40.91d |
| 1139 |  | Review meas catalog & update | 0.77d? | 2008-02-26 | 2008-02-27 | 1136 | 40.91d |
| 1140 |  | Review managed & Native interface definitions | 0.77d? | 2008-02-27 | 2008-02-27 | 1139 | 40.91d |
| 1141 |  | Write code | 0.77d? | 2008-02-27 | 2008-02-28 | 1140 | 40.91d |
| 1142 |  | Unit test the code | 0.77d? | 2008-02-28 | 2008-02-29 | 1141 | 40.91d |
| 1143 | 1.5.4.16.3.1.5 | **Verifcation** | 4.62d? | 2008-02-29 | 2008-03-07 |  | 40.91d |
| 1144 |  | Develop the verification code in Matlab | 3.08d? | 2008-02-29 | 2008-03-05 | 1142 | 40.91d |
| 1145 |  | Define the test input data & pass to ML & MATLAB | 0.77d? | 2008-03-05 | 2008-03-06 | 1144 | 41.91d |
| 1146 |  | Compare the outputs | 0.77d? | 2008-03-06 | 2008-03-07 | 1145 | 41.91d |
| 1147 |  | Measure performance & document mesaurements | 0.77d? | 2008-03-07 | 2008-03-07 | 1146 | 41.91d |
| 1148 |  | Interface definition, code, Nunit , Result & Doc review | 0.77d? | 2008-03-07 | 2008-03-10 | 1147 | 41.91d |
| 1149 | 1.5.4.16.3.2 | **Pink** | 14.08d? | 2008-03-10 | 2008-03-28 |  | 40.91d |
| 1150 |  | Review meas catalog & update | 0.77d? | 2008-03-10 | 2008-03-11 | 1148 | 41.91d |
| 1151 |  | Review managed & Native interface definitions | 0.77d? | 2008-03-11 | 2008-03-12 | 1150 | 41.91d |
| 1152 |  | Write code | 3.08d? | 2008-03-12 | 2008-03-17 | 1151 | 41.91d |
| 1153 |  | Unit test the code | 1.54d? | 2008-03-17 | 2008-03-18 | 1152 | 41.91d |
| 1154 | 1.5.4.16.3.2.5 | **Verifcation** | 5.62d? | 2008-03-18 | 2008-03-26 |  | 40.91d |
| 1155 |  | Develop the verification code in Matlab | 3.08d? | 2008-03-18 | 2008-03-24 | 1153 | 40.91d |
| 1156 |  | Define the test input data & pass to ML & MATLAB | 0.77d? | 2008-03-24 | 2008-03-25 | 1155 | 40.91d |
| 1157 |  | Compare the outputs | 0.77d? | 2008-03-25 | 2008-03-26 | 1156 | 40.91d |
| 1158 |  | Measure performance & document mesaurements | 0.77d? | 2008-03-26 | 2008-03-27 | 1157 | 40.91d |
| 1159 |  | Interface definition, code, Nunit , Result & Doc review | 1.54d? | 2008-03-27 | 2008-03-28 | 1158 | 40.91d |
| 1160 | 1.5.4.16.3.3 | **White** | 11.77d? | 2008-03-28 | 2008-04-15 |  | 39.91d |
| 1161 |  | Review meas catalog & update | 0.77d? | 2008-03-28 | 2008-03-31 | 1159 | 40.91d |
| 1162 |  | Review managed & Native interface definitions | 0.77d? | 2008-03-31 | 2008-04-01 | 1161 | 40.91d |
| 1163 |  | Write code | 1.54d? | 2008-04-01 | 2008-04-02 | 1162 | 40.91d |
| 1164 |  | Unit test the code | 1.54d? | 2008-04-02 | 2008-04-04 | 1163 | 40.91d |
| 1165 | 1.5.4.16.3.3.5 | **Verifcation** | 4.62d? | 2008-04-04 | 2008-04-10 |  | 40.91d |
| 1166 |  | Develop the verification code in Matlab | 3.08d? | 2008-04-04 | 2008-04-09 | 1164 | 40.91d |
| 1167 |  | Define the test input data & pass to ML & MATLAB | 0.77d? | 2008-04-09 | 2008-04-10 | 1166 | 40.91d |
| 1168 |  | Compare the outputs | 0.77d? | 2008-04-10 | 2008-04-10 | 1167 | 40.91d |
| 1169 |  | Measure performance & document mesaurements | 0.77d? | 2008-04-10 | 2008-04-11 | 1168 | 40.91d |
| 1170 |  | Interface definition, code, Nunit , Result & Doc review | 0.77d? | 2008-04-11 | 2008-04-15 | 1169 | 39.91d |
| 1171 | 1.5.4.16.3.4 | **Gaussian** | 13.54d? | 2008-04-15 | 2008-05-02 |  | 37.91d |
| 1172 |  | Review meas catalog & update | 0.77d? | 2008-04-15 | 2008-04-16 | 1170 | 39.91d |
| 1173 |  | Review managed & Native interface definitions | 0.77d? | 2008-04-16 | 2008-04-16 | 1172 | 39.91d |
| 1174 |  | Write code | 3.08d? | 2008-04-16 | 2008-04-23 | 1173 | 38.91d |
| 1175 |  | Unit test the code | 0.77d? | 2008-04-23 | 2008-04-23 | 1174 | 38.91d |
| 1176 | 1.5.4.16.3.4.5 | **Verifcation** | 4.62d? | 2008-04-23 | 2008-04-30 |  | 38.91d |
| 1177 |  | Develop the verification code in Matlab | 3.08d? | 2008-04-23 | 2008-04-28 | 1175 | 38.91d |
| 1178 |  | Define the test input data & pass to ML & MATLAB | 0.77d? | 2008-04-28 | 2008-04-29 | 1177 | 38.91d |
| 1179 |  | Compare the outputs | 0.77d? | 2008-04-29 | 2008-04-30 | 1178 | 38.91d |
| 1180 |  | Measure performance & document mesaurements | 0.77d? | 2008-04-30 | 2008-05-02 | 1179 | 37.91d |
| 1181 |  | Interface definition, code, Nunit , Result & Doc review | 0.77d? | 2008-05-02 | 2008-05-02 | 1180 | 37.91d |
| 1182 | 1.5.4.17 | **Marker Functions** | 13.31d? | 2008-09-19 | 2008-10-08 |  | 39.91d |
| 1183 |  | Review meas catalog & update | 0.77d? | 2008-09-19 | 2008-09-22 | 1342, 1181 | 40.91d |
| 1184 |  | Review managed & Native interface definitions | 0.77d? | 2008-09-22 | 2008-09-23 | 1183 | 40.91d |
| 1185 |  | Write code | 3.08d? | 2008-09-23 | 2008-09-26 | 1184 | 40.91d |
| 1186 |  | Unit test the code | 3.08d? | 2008-09-26 | 2008-10-01 | 1185 | 40.91d |
| 1187 | 1.5.4.17.5 | **Verifcation** | 4.08d? | 2008-10-01 | 2008-10-07 |  | 39.91d |
| 1188 |  | Develop the verification code in Matlab | 1.54d? | 2008-10-01 | 2008-10-03 | 1186 | 39.91d |
| 1189 |  | Define the test input data & pass to ML & MATLAB | 0.77d? | 2008-10-03 | 2008-10-06 | 1188 | 39.91d |
| 1190 |  | Compare the outputs | 0.77d? | 2008-10-06 | 2008-10-07 | 1189 | 39.91d |

| ID | WBS | Task | Duration | Start | Finish | Predecessors | Total float | Constraint |
| --- | --- | --- | --- | --- | --- | --- | --- | --- |
| 1191 |  | Measure performance & document mesaurements | 0.77d? | 2008-10-07 | 2008-10-08 | 1190 | 39.91d |  |
| 1192 |  | Interface definition, code, Nunit , Result & Doc review | 0.77d? | 2008-10-08 | 2008-10-08 | 1191 | 39.91d |  |
| 1193 | 1.5.4.18 | **Octave** | 62.46d? | 2008-10-08 | 2009-01-05 |  | 37.91d |  |
| 1194 |  | Review meas catalog & update | 1.54d? | 2008-10-08 | 2008-10-13 | 1192 | 38.91d |  |
| 1195 |  | Review managed & Native interface definitions | 1.54d? | 2008-10-13 | 2008-10-15 | 1194 | 38.91d |  |
| 1196 |  | Overall interface structure for Octave | 3.85d? | 2008-10-15 | 2008-10-20 | 1195 | 38.91d |  |
| 1197 |  | Octave band filter Design | 9.23d? | 2008-10-20 | 2008-11-04 | 1196 | 39.91d |  |
| 1198 |  | Filtering Operation | 12.31d? | 2008-11-04 | 2008-11-20 | 1197 | 39.91d |  |
| 1199 |  | Averaging Operation and Octave band power estimation | 7.69d? | 2008-11-20 | 2008-12-02 | 1198 | 39.91d |  |
| 1200 |  | Weighting Filter Operation | 3.08d? | 2008-12-02 | 2008-12-05 | 1199 | 39.91d |  |
| 1201 |  | Write code | 7.69d? | 2008-12-05 | 2008-12-17 | 1200 | 38.91d |  |
| 1202 |  | Unit test the code | 3.85d? | 2008-12-17 | 2008-12-23 | 1201 | 38.91d |  |
| 1203 | 1.5.4.18.10 | **Verifcation** | 5.62d? | 2008-12-23 | 2008-12-31 |  | 37.91d |  |
| 1204 |  | Develop the verification code in Matlab | 1.54d? | 2008-12-23 | 2008-12-26 | 1202 | 37.91d |  |
| 1205 |  | Define the test input data & pass to ML & MATLAB | 1.54d? | 2008-12-26 | 2008-12-29 | 1204 | 37.91d |  |
| 1206 |  | Compare the outputs | 1.54d? | 2008-12-29 | 2008-12-31 | 1205 | 37.91d |  |
| 1207 |  | Measure performance & document mesaurements | 1.54d? | 2008-12-31 | 2009-01-01 | 1206 | 37.91d |  |
| 1208 |  | Interface definition, code, Nunit , Result & Doc review | 1.54d? | 2009-01-01 | 2009-01-05 | 1207 | 37.91d |  |
| 1209 | 1.5.4.19 | **Orbit** | 14.62d? | 2009-01-05 | 2009-01-26 |  | 37.91d |  |
| 1210 |  | Review meas catalog & update | 0.77d? | 2009-01-05 | 2009-01-06 | 1208 | 37.91d |  |
| 1211 |  | Review managed & Native interface definitions | 0.77d? | 2009-01-06 | 2009-01-06 | 1210 | 37.91d |  |
| 1212 |  | Write code | 5.38d? | 2009-01-06 | 2009-01-14 | 1211 | 37.91d |  |
| 1213 |  | Unit test the code | 2.31d? | 2009-01-14 | 2009-01-16 | 1212 | 37.91d |  |
| 1214 | 1.5.4.19.5 | **Verifcation** | 2.31d? | 2009-01-16 | 2009-01-20 |  | 37.91d |  |
| 1215 |  | Develop the verification code in Matlab | 0.77d? | 2009-01-16 | 2009-01-19 | 1213 | 37.91d |  |
| 1216 |  | Define the test input data & pass to ML & MATLAB | 0.77d? | 2009-01-19 | 2009-01-20 | 1215 | 37.91d |  |
| 1217 |  | Compare the outputs | 0.77d? | 2009-01-20 | 2009-01-20 | 1216 | 37.91d |  |
| 1218 |  | Measure performance & document mesaurements | 1.54d? | 2009-01-20 | 2009-01-22 | 1217 | 37.91d |  |
| 1219 |  | Interface definition, code, Nunit , Result & Doc review | 1.54d? | 2009-01-22 | 2009-01-26 | 1218 | 37.91d |  |
| 1220 | 1.5.4.20 | **Filters** | 92.92d? | 2008-04-29 | 2008-09-05 |  | 184.53d |  |
| 1221 | 1.5.4.20.1 | **Weighting filters for octave analysis A- weighting filter + B-weigghting filter +C- weighting filter** | 17.92d? | 2008-04-29 | 2008-05-23 |  | 186.53d |  |
| 1222 |  | Review meas catalog & update | 0.77d? | 2008-04-29 | 2008-04-30 | 1102 | 187.53d | start no earlier than 2008-02-04 |
| 1223 |  | Review managed & Native interface definitions | 1.54d? | 2008-04-30 | 2008-05-02 | 1222 | 186.53d |  |
| 1224 |  | Write code | 6.92d? | 2008-05-02 | 2008-05-13 | 1223 | 186.53d |  |
| 1225 |  | Unit test the code | 1.54d? | 2008-05-13 | 2008-05-15 | 1224 | 186.53d |  |
| 1226 | 1.5.4.20.1.5 | **Verifcation** | 3.85d? | 2008-05-15 | 2008-05-21 |  | 186.53d |  |
| 1227 |  | Develop the verification code in Matlab | 1.54d? | 2008-05-15 | 2008-05-16 | 1225 | 186.53d |  |
| 1228 |  | Define the test input data & pass to ML & MATLAB | 1.54d? | 2008-05-16 | 2008-05-20 | 1227 | 186.53d |  |
| 1229 |  | Compare the outputs | 0.77d? | 2008-05-20 | 2008-05-21 | 1228 | 186.53d |  |
| 1230 |  | Measure performance & document mesaurements | 0.77d? | 2008-05-21 | 2008-05-22 | 1229 | 186.53d |  |
| 1231 |  | Interface definition, code, Nunit , Result & Doc review | 1.54d? | 2008-05-22 | 2008-05-23 | 1230 | 186.53d |  |
| 1232 | 1.5.4.20.2 | **General Weighting filters (A+B+C-weighting filter)** | 17.92d? | 2008-05-23 | 2008-06-18 |  | 186.53d |  |
| 1233 |  | Review meas catalog & update | 1.54d? | 2008-05-23 | 2008-05-27 | 1231 | 186.53d |  |
| 1234 |  | Review managed & Native interface definitions | 1.54d? | 2008-05-27 | 2008-05-28 | 1233 | 186.53d |  |
| 1235 |  | Write code | 7.69d? | 2008-05-28 | 2008-06-09 | 1234 | 186.53d |  |
| 1236 |  | Unit test the code | 1.54d? | 2008-06-09 | 2008-06-10 | 1235 | 186.53d |  |
| 1237 | 1.5.4.20.2.5 | **Verifcation** | 3.08d? | 2008-06-10 | 2008-06-13 |  | 186.53d |  |
| 1238 |  | Develop the verification code in Matlab | 1.54d? | 2008-06-10 | 2008-06-12 | 1236 | 186.53d |  |
| 1239 |  | Define the test input data & pass to ML & MATLAB | 0.77d? | 2008-06-12 | 2008-06-13 | 1238 | 186.53d |  |
| 1240 |  | Compare the outputs | 0.77d? | 2008-06-13 | 2008-06-13 | 1239 | 186.53d |  |
| 1241 |  | Measure performance & document mesaurements | 1.54d? | 2008-06-13 | 2008-06-17 | 1240 | 186.53d |  |
| 1242 |  | Interface definition, code, Nunit , Result & Doc review | 1d | 2008-06-17 | 2008-06-18 | 1241 | 186.53d |  |
| 1243 | 1.5.4.20.3 | **CCIR filters** | 22.77d? | 2008-06-18 | 2008-07-21 |  | 186.53d |  |
| 1244 |  | Review meas catalog & update | 1.54d? | 2008-06-18 | 2008-06-20 | 1242 | 186.53d |  |
| 1245 |  | Review managed & Native interface definitions | 1.54d? | 2008-06-20 | 2008-06-23 | 1244 | 186.53d |  |
| 1246 |  | Write code | 9.23d? | 2008-06-23 | 2008-07-04 | 1245 | 186.53d |  |
| 1247 |  | Unit test the code | 3.08d? | 2008-07-04 | 2008-07-09 | 1246 | 186.53d |  |
| 1248 | 1.5.4.20.3.5 | **Verifcation** | 4.62d? | 2008-07-09 | 2008-07-16 |  | 186.53d |  |
| 1249 |  | Develop the verification code in Matlab | 3.08d? | 2008-07-09 | 2008-07-14 | 1247 | 186.53d |  |
| 1250 |  | Define the test input data & pass to ML & MATLAB | 0.77d? | 2008-07-15 | 2008-07-15 | 1249 | 186.53d |  |
| 1251 |  | Compare the outputs | 0.77d? | 2008-07-15 | 2008-07-16 | 1250 | 186.53d |  |
| 1252 |  | Measure performance & document mesaurements | 0.77d? | 2008-07-16 | 2008-07-17 | 1251 | 186.53d |  |
| 1253 |  | Interface definition, code, Nunit , Result & Doc review | 2d? | 2008-07-17 | 2008-07-21 | 1252 | 186.53d |  |
| 1254 | 1.5.4.20.4 | **Low Pass, high pass, band pass, notch** | 18.46d? | 2008-07-21 | 2008-08-14 |  | 186.53d |  |
| 1255 |  | Review meas catalog & update | 1.54d? | 2008-07-21 | 2008-07-22 | 1253 | 186.53d |  |
| 1256 |  | Review managed & Native interface definitions | 1.54d? | 2008-07-22 | 2008-07-24 | 1255 | 186.53d |  |
| 1257 |  | Write code | 7.69d? | 2008-07-24 | 2008-08-05 | 1256 | 186.53d |  |
| 1258 |  | Unit test the code | 1.54d? | 2008-08-05 | 2008-08-06 | 1257 | 186.53d |  |
| 1259 | 1.5.4.20.4.5 | **Verifcation** | 3.85d? | 2008-08-06 | 2008-08-12 |  | 186.53d |  |
| 1260 |  | Develop the verification code in Matlab | 2.31d? | 2008-08-06 | 2008-08-08 | 1258 | 186.53d |  |

| ID | WBS | Task | Duration | Start | Finish | Predecessors | Total float |
| --- | --- | --- | --- | --- | --- | --- | --- |
| 1261 |  | Define the test input data & pass to ML & MATLAB | 0.77d? | 2008-08-08 | 2008-08-11 | 1260 | 186.53d |
| 1262 |  | Compare the outputs | 0.77d? | 2008-08-11 | 2008-08-12 | 1261 | 186.53d |
| 1263 |  | Measure performance & document mesaurements | 1.54d? | 2008-08-12 | 2008-08-13 | 1262 | 186.53d |
| 1264 |  | Interface definition, code, Nunit , Result & Doc review | 0.77d? | 2008-08-14 | 2008-08-14 | 1263 | 186.53d |
| 1265 | 1.5.4.20.5 | **Coherence** | 15.85d? | 2008-08-14 | 2008-09-05 |  | 184.53d |
| 1266 |  | Review meas catalog & update | 0.77d? | 2008-08-14 | 2008-08-18 | 1264 | 185.53d |
| 1267 |  | Review managed & Native interface definitions | 0.77d? | 2008-08-18 | 2008-08-19 | 1266 | 185.53d |
| 1268 |  | Write code | 4.62d? | 2008-08-19 | 2008-08-25 | 1267 | 185.53d |
| 1269 |  | Unit test the code | 1.54d? | 2008-08-25 | 2008-08-27 | 1268 | 185.53d |
| 1270 | 1.5.4.20.5.5 | **Verifcation** | 3.08d? | 2008-08-27 | 2008-09-01 |  | 185.53d |
| 1271 |  | Develop the verification code in Matlab | 1.54d? | 2008-08-27 | 2008-08-28 | 1269 | 185.53d |
| 1272 |  | Define the test input data & pass to ML & MATLAB | 0.77d? | 2008-08-29 | 2008-08-29 | 1271 | 185.53d |
| 1273 |  | Compare the outputs | 0.77d? | 2008-08-29 | 2008-09-01 | 1272 | 185.53d |
| 1274 |  | Measure performance & document mesaurements | 1.54d? | 2008-09-01 | 2008-09-04 | 1273 | 184.53d |
| 1275 |  | Interface definition, code, Nunit , Result & Doc review | 1.54d? | 2008-09-04 | 2008-09-05 | 1274 | 184.53d |
| 1276 | 1.5.4.21 | **Math** | 99.69d? | 2008-05-02 | 2008-09-19 |  | 37.91d |
| 1277 | 1.5.4.21.1 | **Cepstrum** | 13.08d? | 2008-05-02 | 2008-05-22 |  | 37.91d |
| 1278 |  | Review meas catalog & update | 0.77d? | 2008-05-02 | 2008-05-05 | 1181, 1275 | 37.91d |
| 1279 |  | Review managed & Native interface definitions | 0.77d? | 2008-05-05 | 2008-05-06 | 1278 | 37.91d |
| 1280 |  | Write code | 4.62d? | 2008-05-06 | 2008-05-13 | 1279 | 37.91d |
| 1281 |  | Unit test the code | 1.54d? | 2008-05-13 | 2008-05-14 | 1280 | 37.91d |
| 1282 | 1.5.4.21.1.5 | **Verifcation** | 3.08d? | 2008-05-14 | 2008-05-19 |  | 37.91d |
| 1283 |  | Develop the verification code in Matlab | 1.54d? | 2008-05-14 | 2008-05-16 | 1281 | 37.91d |
| 1284 |  | Define the test input data & pass to ML & MATLAB | 0.77d? | 2008-05-16 | 2008-05-16 | 1283 | 37.91d |
| 1285 |  | Compare the outputs | 0.77d? | 2008-05-16 | 2008-05-19 | 1284 | 37.91d |
| 1286 |  | Measure performance & document mesaurements | 0.77d? | 2008-05-19 | 2008-05-20 | 1285 | 37.91d |
| 1287 |  | Interface definition, code, Nunit , Result & Doc review | 1.54d? | 2008-05-20 | 2008-05-22 | 1286 | 37.91d |
| 1288 | 1.5.4.21.2 | **Basic Complex math** | 15.38d? | 2008-05-22 | 2008-06-12 |  | 37.91d |
| 1289 |  | Review meas catalog & update | 0.77d? | 2008-05-22 | 2008-05-22 | 1287 | 37.91d |
| 1290 |  | Review managed & Native interface definitions | 0.77d? | 2008-05-22 | 2008-05-23 | 1289 | 37.91d |
| 1291 |  | Write code | 6.15d? | 2008-05-23 | 2008-06-02 | 1290 | 37.91d |
| 1292 |  | Unit test the code | 1.54d? | 2008-06-02 | 2008-06-04 | 1291 | 37.91d |
| 1293 | 1.5.4.21.2.5 | **Verifcation** | 3.08d | 2008-06-04 | 2008-06-09 |  | 37.91d |
| 1294 |  | Develop the verification code in Matlab | 1.54d | 2008-06-04 | 2008-06-05 | 1292 | 37.91d |
| 1295 |  | Define the test input data & pass to ML & MATLAB | 0.77d | 2008-06-05 | 2008-06-06 | 1294 | 37.91d |
| 1296 |  | Compare the outputs | 0.77d | 2008-06-06 | 2008-06-09 | 1295 | 37.91d |
| 1297 |  | Measure performance & document mesaurements | 1.54d? | 2008-06-09 | 2008-06-10 | 1296 | 37.91d |
| 1298 |  | Interface definition, code, Nunit , Result & Doc review | 1.54d | 2008-06-10 | 2008-06-12 | 1297 | 37.91d |
| 1299 | 1.5.4.21.3 | **Hilbert** | 15.38d | 2008-06-12 | 2008-07-03 |  | 37.91d |
| 1300 |  | Review meas catalog & update | 0.77d | 2008-06-12 | 2008-06-13 | 1298 | 37.91d |
| 1301 |  | Review managed & Native interface definitions | 0.77d | 2008-06-13 | 2008-06-13 | 1300 | 37.91d |
| 1302 |  | Write code | 6.15d | 2008-06-13 | 2008-06-24 | 1301 | 37.91d |
| 1303 |  | Unit test the code | 1.54d | 2008-06-24 | 2008-06-25 | 1302 | 38.91d |
| 1304 | 1.5.4.21.3.5 | **Verifcation** | 3.08d | 2008-06-25 | 2008-06-30 |  | 38.91d |
| 1305 |  | Develop the verification code in Matlab | 1.54d | 2008-06-25 | 2008-06-27 | 1303 | 38.91d |
| 1306 |  | Define the test input data & pass to ML & MATLAB | 0.77d | 2008-06-27 | 2008-06-27 | 1305 | 38.91d |
| 1307 |  | Compare the outputs | 0.77d | 2008-06-27 | 2008-06-30 | 1306 | 38.91d |
| 1308 |  | Measure performance & document mesaurements | 1.54d | 2008-06-30 | 2008-07-02 | 1307 | 38.91d |
| 1309 |  | Interface definition, code, Nunit , Result & Doc review | 1.54d | 2008-07-02 | 2008-07-03 | 1308 | 38.91d |
| 1310 | 1.5.4.21.4 | **Conversions** | 21.54d? | 2008-07-03 | 2008-08-04 |  | 38.91d |
| 1311 |  | Review meas catalog & update | 0.77d? | 2008-07-03 | 2008-07-04 | 1309 | 38.91d |
| 1312 |  | Review managed & Native interface definitions | 0.77d? | 2008-07-04 | 2008-07-07 | 1311 | 38.91d |
| 1313 |  | Write code | 9.23d? | 2008-07-07 | 2008-07-18 | 1312 | 38.91d |
| 1314 |  | Unit test the code | 3.08d? | 2008-07-18 | 2008-07-23 | 1313 | 39.91d |
| 1315 | 1.5.4.21.4.5 | **Verifcation** | 4.62d? | 2008-07-23 | 2008-07-30 |  | 39.91d |
| 1316 |  | Develop the verification code in Matlab | 3.08d? | 2008-07-23 | 2008-07-28 | 1314 | 39.91d |
| 1317 |  | Define the test input data & pass to ML & MATLAB | 0.77d? | 2008-07-28 | 2008-07-29 | 1316 | 39.91d |
| 1318 |  | Compare the outputs | 0.77d? | 2008-07-29 | 2008-07-30 | 1317 | 39.91d |
| 1319 |  | Measure performance & document mesaurements | 1.54d? | 2008-07-30 | 2008-07-31 | 1318 | 39.91d |
| 1320 |  | Interface definition, code, Nunit , Result & Doc review | 1.54d? | 2008-07-31 | 2008-08-04 | 1319 | 39.91d |
| 1321 | 1.5.4.21.5 | **Differentiation/Integration** | 15.62d? | 2008-08-04 | 2008-08-25 |  | 39.91d |
| 1322 |  | Review meas catalog & update | 0.77d? | 2008-08-04 | 2008-08-05 | 1320 | 39.91d |
| 1323 |  | Review managed & Native interface definitions | 0.77d? | 2008-08-05 | 2008-08-05 | 1322 | 39.91d |
| 1324 |  | Write code | 6.15d? | 2008-08-05 | 2008-08-14 | 1323 | 39.91d |
| 1325 |  | Unit test the code | 1.54d? | 2008-08-14 | 2008-08-18 | 1324 | 40.91d |
| 1326 | 1.5.4.21.5.5 | **Verifcation** | 3.08d? | 2008-08-18 | 2008-08-21 |  | 40.91d |
| 1327 |  | Develop the verification code in Matlab | 1.54d? | 2008-08-18 | 2008-08-20 | 1325 | 40.91d |
| 1328 |  | Define the test input data & pass to ML & MATLAB | 0.77d? | 2008-08-20 | 2008-08-20 | 1327 | 40.91d |
| 1329 |  | Compare the outputs | 0.77d? | 2008-08-20 | 2008-08-21 | 1328 | 40.91d |
| 1330 |  | Measure performance & document mesaurements | 0.77d? | 2008-08-21 | 2008-08-22 | 1329 | 40.91d |

| ID | WBS | Task | Duration | Start | Finish | Predecessors | Total float |
| --- | --- | --- | --- | --- | --- | --- | --- |
| 1331 |  | Interface definition, code, Nunit , Result & Doc review | 1.54d? | 2008-08-22 | 2008-08-25 | 1330 | 40.91d |
| 1332 | 1.5.4.21.6 | **Statistical (mean,mode…)** | 18.69d? | 2008-08-25 | 2008-09-19 |  | 40.91d |
| 1333 |  | Review meas catalog & update | 0.77d? | 2008-08-25 | 2008-08-26 | 1331 | 40.91d |
| 1334 |  | Review managed & Native interface definitions | 1.54d? | 2008-08-26 | 2008-08-28 | 1333 | 40.91d |
| 1335 |  | Write code | 6.15d? | 2008-08-28 | 2008-09-08 | 1334 | 40.91d |
| 1336 |  | Unit test the code | 1.54d? | 2008-09-08 | 2008-09-09 | 1335 | 40.91d |
| 1337 | 1.5.4.21.6.5 | **Verifcation** | 4.62d? | 2008-09-09 | 2008-09-16 |  | 40.91d |
| 1338 |  | Develop the verification code in Matlab | 3.08d? | 2008-09-09 | 2008-09-15 | 1336 | 40.91d |
| 1339 |  | Define the test input data & pass to ML & MATLAB | 0.77d? | 2008-09-15 | 2008-09-15 | 1338 | 40.91d |
| 1340 |  | Compare the outputs | 0.77d? | 2008-09-15 | 2008-09-16 | 1339 | 40.91d |
| 1341 |  | Measure performance & document mesaurements | 1.54d? | 2008-09-16 | 2008-09-18 | 1340 | 40.91d |
| 1342 |  | Interface definition, code, Nunit , Result & Doc review | 1.54d? | 2008-09-18 | 2008-09-19 | 1341 | 40.91d |
| 1343 | 1.5.5 | **Testing and Result Verification** | 286.73d? | 2008-04-01 | 2009-05-06 |  | 11.42d |
| 1344 |  | Verify THD | 4.29d? | 2009-03-16 | 2009-03-20 | 1034 | 11.42d |
| 1345 |  | Verify THD+N | 2.86d? | 2009-03-20 | 2009-03-25 | 1344 | 11.42d |
| 1346 |  | Verify SINAD | 2.86d? | 2009-03-25 | 2009-03-30 | 1345 | 11.42d |
| 1347 |  | Verify ENOB | 4.29d? | 2009-03-30 | 2009-04-03 | 1346 | 11.42d |
| 1348 |  | Verify SNR | 2.86d? | 2009-04-03 | 2009-04-08 | 1347 | 11.42d |
| 1349 |  | Verify SFDR | 4.29d? | 2009-04-08 | 2009-04-15 | 1348 | 11.42d |
| 1350 |  | Verify Averaging | 4.29d? | 2009-04-15 | 2009-04-21 | 1349 | 11.42d |
| 1351 |  | Verify Signal Generation | 4.29d? | 2009-04-21 | 2009-04-27 | 1350 | 11.42d |
| 1352 |  | Verify Marker Functions | 7.14d? | 2009-04-27 | 2009-05-06 | 1351 | 11.42d |
| 1353 |  | Verify Octave | 10d? | 2008-04-01 | 2008-04-14 | 1113 | 39d |
| 1354 |  | Verify Orbit | 8d? | 2008-04-16 | 2008-04-25 | 1353 | 39d |
| 1355 |  | Verify FFT | 4.62d? | 2008-09-19 | 2008-09-26 | 1342 | 72.91d |
| 1356 |  | Verify SFFT | 6.15d? | 2008-09-26 | 2008-10-07 | 1355 | 71.91d |
| 1357 |  | Verify Windowing | 6.15d? | 2008-10-07 | 2008-10-16 | 1356 | 70.91d |
| 1358 |  | Verify Resampling | 6.15d? | 2008-10-16 | 2008-10-24 | 1357 | 70.91d |
| 1359 |  | Verify Zoom FFT | 6.15d? | 2008-10-24 | 2008-11-04 | 1358 | 69.91d |
| 1360 |  | Verify Linear Spectrum | 4.62d? | 2008-11-04 | 2008-11-11 | 1359 | 69.91d |
| 1361 |  | Verify Power Spectrum | 4.62d? | 2008-11-11 | 2008-11-18 | 1360 | 69.91d |
| 1362 |  | Verify Phase Spectrum | 4.62d? | 2008-11-18 | 2008-11-24 | 1361 | 69.91d |
| 1363 |  | Verify Cross Power | 4.62d? | 2008-11-24 | 2008-12-01 | 1362 | 69.91d |
| 1364 |  | Verify Limit Lines | 7.69d? | 2008-12-01 | 2008-12-12 | 1363 | 68.91d |
| 1365 |  | Verify Swept Sine | 6.15d? | 2008-12-12 | 2008-12-22 | 1364 | 68.91d |
| 1366 |  | Verify Gain, Phase margins | 6.15d? | 2008-12-22 | 2008-12-31 | 1365 | 67.91d |
| 1367 |  | Verify Frequency, Damping | 6.15d? | 2008-12-31 | 2009-01-08 | 1366 | 67.91d |
| 1368 |  | Verify Frequency Response | 15.38d? | 2009-01-08 | 2009-01-29 | 1367 | 67.91d |
| 1369 |  | Verify Group Delay | 6.15d? | 2009-01-29 | 2009-02-09 | 1368 | 67.91d |
| 1370 |  | Verify Variance | 6.15d? | 2009-02-09 | 2009-02-17 | 1369 | 67.91d |
| 1371 |  | Verify Weighting filters for octave analysis A- weighting filter + B-weigghting filter +C- weighting filter | 7.69d? | 2009-01-26 | 2009-02-04 | 1219 | 37.91d |
| 1372 |  | Verify General Weighting filters (A+B+C-weighting filter) | 7.69d? | 2009-02-04 | 2009-02-16 | 1371 | 37.91d |
| 1373 |  | Verify CCIR filters | 7.69d? | 2009-02-16 | 2009-02-26 | 1372 | 37.91d |
| 1374 |  | Verify Low Pass, high pass, band pass, notch | 7.69d? | 2009-02-26 | 2009-03-09 | 1373 | 37.91d |
| 1375 |  | Verify Coherence | 7.69d? | 2009-03-09 | 2009-03-19 | 1374 | 37.91d |
| 1376 |  | Verify all Math | 7.69d? | 2009-03-19 | 2009-03-31 | 1375 | 37.91d |
| 1377 | 1.5.6 | **Tests With Hardware** | 235d? | 2008-05-08 | 2009-04-01 |  | 36.14d |
| 1378 | 1.5.6.1 | **Transforms** | 20d? | 2008-05-08 | 2008-06-04 |  | 37d |
| 1379 |  | FFT | 2d? | 2008-05-08 | 2008-05-09 | 1354 | 37d |
| 1380 |  | Identify/Create actual input signals to match verification cases above | 2d? | 2008-05-12 | 2008-05-13 | 1379 | 37d |
| 1381 |  | Inject signals into hardware and capture the results. | 4d? | 2008-05-20 | 2008-05-23 | 1380 | 37d |
| 1382 |  | Compare results through hardware with software verfification | 2d? | 2008-06-02 | 2008-06-03 | 1381 | 37d |
| 1383 |  | Review Results | 1d? | 2008-06-04 | 2008-06-04 | 1382 | 37d |
| 1384 | 1.5.6.2 | **STFT** | 12d? | 2008-06-10 | 2008-06-25 |  | 37d |
| 1385 |  | Identify/Create actual input signals to match verification cases above | 2d? | 2008-06-10 | 2008-06-11 | 1383 | 37d |
| 1386 |  | Inject signals into hardware and capture the results. | 4d? | 2008-06-17 | 2008-06-20 | 1385 | 38d |
| 1387 |  | Compare results through hardware with software verfification | 2d? | 2008-06-23 | 2008-06-24 | 1386 | 38d |
| 1388 |  | Review Results | 1d? | 2008-06-25 | 2008-06-25 | 1387 | 38d |
| 1389 | 1.5.6.3 | **Windowing** | 16d? | 2008-06-26 | 2008-07-17 |  | 38d |
| 1390 |  | Identify/Create actual input signals to match verification cases above | 1d? | 2008-06-26 | 2008-06-26 | 1388 | 38d |
| 1391 |  | Inject signals into hardware and capture the results. | 2d? | 2008-06-27 | 2008-06-30 | 1390 | 38d |
| 1392 |  | Compare results through hardware with software verfification | 2d? | 2008-07-01 | 2008-07-02 | 1391 | 38d |
| 1393 |  | Review Results | 1d? | 2008-07-17 | 2008-07-17 | 1392 | 38d |
| 1394 | 1.5.6.4 | **Resampling** | 21d? | 2008-07-24 | 2008-08-21 |  | 36d |
| 1395 |  | Identify/Create actual input signals to match verification cases above | 4d? | 2008-07-24 | 2008-07-29 | 1393 | 38d |
| 1396 |  | Inject signals into hardware and capture the results. | 4d? | 2008-08-05 | 2008-08-08 | 1395 | 38d |
| 1397 |  | Compare results through hardware with software verfification | 4d? | 2008-08-15 | 2008-08-20 | 1396 | 36d |
| 1398 |  | Review Results | 1d? | 2008-08-21 | 2008-08-21 | 1397 | 36d |
| 1399 | 1.5.6.5 | **ZoomFFT** | 13d? | 2008-08-26 | 2008-09-11 |  | 36d |
| 1400 |  | Identify/Create actual input signals to match verification cases above | 2d? | 2008-08-26 | 2008-08-27 | 1398 | 36d |

| ID | WBS | Task | Duration | Start | Finish | Predecessors | Total float |
| --- | --- | --- | --- | --- | --- | --- | --- |
| 1401 |  | Inject signals into hardware and capture the results. | 2d? | 2008-09-01 | 2008-09-02 | 1400 | 36d |
| 1402 |  | Compare results through hardware with software verfification | 2d? | 2008-09-08 | 2008-09-09 | 1401 | 36d |
| 1403 |  | Review Results | 1d? | 2008-09-11 | 2008-09-11 | 1402 | 36d |
| 1404 | 1.5.6.6 | **Spectrums** | 49d? | 2008-09-15 | 2008-11-20 |  | 36d |
| 1405 | 1.5.6.6.1 | **Linear** | 9d? | 2008-09-15 | 2008-09-25 |  | 36d |
| 1406 |  | Identify/Create actual input signals to match verification cases above | 1d? | 2008-09-15 | 2008-09-15 | 1403 | 36d |
| 1407 |  | Inject signals into hardware and capture the results. | 2d? | 2008-09-18 | 2008-09-19 | 1406 | 36d |
| 1408 |  | Compare results through hardware with software verfification | 1d? | 2008-09-23 | 2008-09-23 | 1407 | 36d |
| 1409 |  | Review Results | 1d? | 2008-09-25 | 2008-09-25 | 1408 | 36d |
| 1410 | 1.5.6.6.2 | **Power** | 9d? | 2008-09-29 | 2008-10-09 |  | 36d |
| 1411 |  | Identify/Create actual input signals to match verification cases above | 1d? | 2008-09-29 | 2008-09-29 | 1409 | 36d |
| 1412 |  | Inject signals into hardware and capture the results. | 2d? | 2008-10-02 | 2008-10-03 | 1411 | 36d |
| 1413 |  | Compare results through hardware with software verfification | 1d? | 2008-10-07 | 2008-10-07 | 1412 | 36d |
| 1414 |  | Review Results | 1d? | 2008-10-09 | 2008-10-09 | 1413 | 36d |
| 1415 | 1.5.6.6.3 | **Phase** | 9d? | 2008-10-13 | 2008-10-23 |  | 36d |
| 1416 |  | Identify/Create actual input signals to match verification cases above | 1d? | 2008-10-13 | 2008-10-13 | 1414 | 36d |
| 1417 |  | Inject signals into hardware and capture the results. | 2d? | 2008-10-16 | 2008-10-17 | 1416 | 36d |
| 1418 |  | Compare results through hardware with software verfification | 1d? | 2008-10-21 | 2008-10-21 | 1417 | 36d |
| 1419 |  | Review Results | 1d? | 2008-10-23 | 2008-10-23 | 1418 | 36d |
| 1420 | 1.5.6.6.4 | **Auto power** | 9d? | 2008-10-27 | 2008-11-06 |  | 36d |
| 1421 |  | Identify/Create actual input signals to match verification cases above | 1d? | 2008-10-27 | 2008-10-27 | 1419 | 36d |
| 1422 |  | Inject signals into hardware and capture the results. | 2d? | 2008-10-29 | 2008-10-30 | 1421 | 36d |
| 1423 |  | Compare results through hardware with software verfification | 1d? | 2008-11-04 | 2008-11-04 | 1422 | 38d |
| 1424 |  | Review Results | 1d? | 2008-11-06 | 2008-11-06 | 1423 | 37d |
| 1425 | 1.5.6.6.5 | **Cross power** | 9d? | 2008-11-10 | 2008-11-20 |  | 37d |
| 1426 |  | Identify/Create actual input signals to match verification cases above | 1d? | 2008-11-10 | 2008-11-10 | 1424 | 39d |
| 1427 |  | Inject signals into hardware and capture the results. | 2d? | 2008-11-13 | 2008-11-14 | 1426 | 39d |
| 1428 |  | Compare results through hardware with software verfification | 1d? | 2008-11-17 | 2008-11-17 | 1427 | 39d |
| 1429 |  | Review Results | 1d? | 2008-11-20 | 2008-11-20 | 1428 | 37d |
| 1430 | 1.5.6.7 | **Limit lines** | 20d? | 2008-11-21 | 2008-12-18 |  | 37d |
| 1431 | 1.5.6.7.1 | **Upper limit** | 9d? | 2008-11-21 | 2008-12-03 |  | 37d |
| 1432 |  | Identify/Create actual input signals to match verification cases above | 1d? | 2008-11-21 | 2008-11-21 | 1429 | 37d |
| 1433 |  | Inject signals into hardware and capture the results. | 2d? | 2008-11-24 | 2008-11-25 | 1432 | 37d |
| 1434 |  | Compare results through hardware with software verfification | 1d? | 2008-12-02 | 2008-12-02 | 1433 | 37d |
| 1435 |  | Review Results | 1d? | 2008-12-03 | 2008-12-03 | 1434 | 37d |
| 1436 | 1.5.6.7.2 | **Lower limit** | 9d? | 2008-12-08 | 2008-12-18 |  | 38d |
| 1437 |  | Identify/Create actual input signals to match verification cases above | 1d? | 2008-12-08 | 2008-12-08 | 1435 | 39d |
| 1438 |  | Inject signals into hardware and capture the results. | 2d? | 2008-12-11 | 2008-12-12 | 1437 | 39d |
| 1439 |  | Compare results through hardware with software verfification | 1d? | 2008-12-15 | 2008-12-15 | 1438 | 39d |
| 1440 |  | Review Results | 1d? | 2008-12-18 | 2008-12-18 | 1439 | 38d |
| 1441 | 1.5.6.8 | **Swept Sine** | 70d? | 2008-12-25 | 2009-04-01 |  | 36.14d |
| 1442 | 1.5.6.8.1 | **Gain, Phase margins** | 12d? | 2008-12-25 | 2009-01-09 |  | 36d |
| 1443 |  | Identify/Create actual input signals to match verification cases above | 4d? | 2008-12-25 | 2008-12-30 | 1440 | 38d |
| 1444 |  | Inject signals into hardware and capture the results. | 2d? | 2009-01-01 | 2009-01-02 | 1443 | 38d |
| 1445 |  | Compare results through hardware with software verfification | 1d? | 2009-01-05 | 2009-01-05 | 1444 | 38d |
| 1446 |  | Review Results | 1d? | 2009-01-09 | 2009-01-09 | 1445 | 36d |
| 1447 | 1.5.6.8.2 | **Frequency, Damping** | 14d? | 2009-01-14 | 2009-02-02 |  | 36d |
| 1448 |  | Identify/Create actual input signals to match verification cases above | 4d? | 2009-01-14 | 2009-01-19 | 1446 | 36d |
| 1449 |  | Inject signals into hardware and capture the results. | 2d? | 2009-01-26 | 2009-01-27 | 1448 | 36d |
| 1450 |  | Compare results through hardware with software verfification | 1d? | 2009-01-29 | 2009-01-29 | 1449 | 36d |
| 1451 |  | Review Results | 1d? | 2009-02-02 | 2009-02-02 | 1450 | 36d |
| 1452 | 1.5.6.8.3 | **Frequency Response** | 8d? | 2009-02-05 | 2009-02-16 |  | 36d |
| 1453 |  | Identify/Create actual input signals to match verification cases above | 2d? | 2009-02-05 | 2009-02-06 | 1451 | 36d |
| 1454 |  | Inject signals into hardware and capture the results. | 2d? | 2009-02-11 | 2009-02-12 | 1453 | 36d |
| 1455 |  | Compare results through hardware with software verfification | 1d? | 2009-02-13 | 2009-02-13 | 1454 | 36d |
| 1456 |  | Review Results | 1d? | 2009-02-16 | 2009-02-16 | 1455 | 36d |
| 1457 | 1.5.6.8.4 | **Variance** | 17d? | 2009-02-17 | 2009-03-11 |  | 36d |
| 1458 |  | Identify/Create actual input signals to match verification cases above | 4d? | 2009-02-17 | 2009-02-20 | 1456 | 36d |
| 1459 |  | Inject signals into hardware and capture the results. | 2d? | 2009-03-04 | 2009-03-05 | 1458 | 36d |
| 1460 |  | Compare results through hardware with software verfification | 1d? | 2009-03-10 | 2009-03-10 | 1459 | 38d |
| 1461 |  | Review Results | 1d? | 2009-03-11 | 2009-03-11 | 1460 | 38d |
| 1462 | 1.5.6.8.5 | **Group Delay** | 10d? | 2009-03-19 | 2009-04-01 |  | 36.14d |
| 1463 |  | Identify/Create actual input signals to match verification cases above | 4d? | 2009-03-19 | 2009-03-24 | 1461 | 38d |
| 1464 |  | Inject signals into hardware and capture the results. | 2d? | 2009-03-27 | 2009-03-30 | 1463 | 36.14d |
| 1465 |  | Compare results through hardware with software verfification | 1d? | 2009-03-31 | 2009-03-31 | 1464 | 36.14d |
| 1466 |  | Review Results | 1d? | 2009-04-01 | 2009-04-01 | 1465 | 36.14d |
| 1467 | 1.5.7 | **Unmanaged interface definition** | 199d? | 2008-02-08 | 2008-11-12 |  | 34d |
| 1468 |  | Identify IE needs | 4d? | 2008-02-08 | 2008-02-13 | 20 | 35d |
| 1469 |  | Identify Heroes needs | 4d? | 2008-02-14 | 2008-02-19 | 1468 | 35d |
| 1470 |  | Define interface style/model | 12d? | 2008-02-20 | 2008-03-06 | 1469 | 35d |

| ID | WBS | Task | Duration | Start | Finish | Predecessors | Total float |
| --- | --- | --- | --- | --- | --- | --- | --- |
| 1471 |  | Review with IE and Hereos team | 2d? | 2008-03-07 | 2008-03-10 | 1470 | 35d |
| 1472 |  | Incorporate review decisions | 4d? | 2008-03-11 | 2008-03-14 | 1471 | 35d |
| 1473 | 1.5.7.6 | **Transforms** | 7d? | 2008-03-17 | 2008-03-25 |  | 35d |
| 1474 |  | FFT | 2d? | 2008-03-17 | 2008-03-18 | 1472 | 35d |
| 1475 |  | STFT | 2d? | 2008-03-19 | 2008-03-20 | 1474 | 35d |
| 1476 |  | Windowing | 1d? | 2008-03-21 | 2008-03-21 | 1475 | 35d |
| 1477 |  | Resampling | 1d? | 2008-03-24 | 2008-03-24 | 1476 | 35d |
| 1478 |  | ZoomFFT | 1d? | 2008-03-25 | 2008-03-25 | 1477 | 35d |
| 1479 | 1.5.7.7 | **Spectrums** | 15d? | 2008-03-26 | 2008-04-15 |  | 35d |
| 1480 |  | Linear | 1d? | 2008-03-26 | 2008-03-26 | 1478 | 35d |
| 1481 |  | Power | 1d? | 2008-03-27 | 2008-03-27 | 1480 | 35d |
| 1482 |  | Phase | 1d? | 2008-03-28 | 2008-03-28 | 1481 | 35d |
| 1483 |  | Auto power | 1d? | 2008-03-31 | 2008-03-31 | 1482 | 35d |
| 1484 |  | Cross power | 1d? | 2008-04-15 | 2008-04-15 | 1483 | 35d |
| 1485 | 1.5.7.8 | **Filters** | 24d? | 2008-04-28 | 2008-05-29 |  | 35d |
| 1486 |  | Weighting filters | 8d? | 2008-04-28 | 2008-05-07 | 1484 | 35d |
| 1487 |  | CCIR | 4d? | 2008-05-14 | 2008-05-19 | 1486 | 35d |
| 1488 |  | Low Pass, high pass, band pass, notch | 4d? | 2008-05-26 | 2008-05-29 | 1487 | 35d |
| 1489 | 1.5.7.9 | **Distortion** | 12d? | 2008-05-30 | 2008-06-16 |  | 35d |
| 1490 |  | THD | 1d? | 2008-05-30 | 2008-05-30 | 1488 | 35d |
| 1491 |  | THD + Noise | 2d? | 2008-06-05 | 2008-06-06 | 1490 | 35d |
| 1492 |  | SINAD | 1d? | 2008-06-09 | 2008-06-09 | 1491 | 35d |
| 1493 |  | ENOB | 1d? | 2008-06-12 | 2008-06-12 | 1492 | 35d |
| 1494 |  | SNR | 1d? | 2008-06-13 | 2008-06-13 | 1493 | 35d |
| 1495 |  | SFDR | 1d? | 2008-06-16 | 2008-06-16 | 1494 | 35d |
| 1496 |  | Averaging | 10d? | 2008-07-03 | 2008-07-16 | 1495 | 35d |
| 1497 |  | Coherence | 2d? | 2008-07-18 | 2008-07-21 | 1496 | 35d |
| 1498 | 1.5.7.12 | **Signal Generation** | 10d? | 2008-07-22 | 2008-08-04 |  | 35d |
| 1499 |  | Sine | 1d? | 2008-07-22 | 2008-07-22 | 1497 | 35d |
| 1500 |  | Square | 1d? | 2008-07-23 | 2008-07-23 | 1499 | 35d |
| 1501 | 1.5.7.12.3 | **Noise** | 4d? | 2008-07-30 | 2008-08-04 |  | 35d |
| 1502 |  | Random | 1d? | 2008-07-30 | 2008-07-30 | 1500 | 35d |
| 1503 |  | Pink | 1d? | 2008-07-31 | 2008-07-31 | 1502 | 35d |
| 1504 |  | White | 1d? | 2008-08-01 | 2008-08-01 | 1503 | 35d |
| 1505 |  | Gaussian | 1d? | 2008-08-04 | 2008-08-04 | 1504 | 35d |
| 1506 |  | Octave | 2d? | 2008-08-11 | 2008-08-12 | 1505 | 35d |
| 1507 | 1.5.7.14 | **Math** | 21d? | 2008-08-13 | 2008-09-10 |  | 35d |
| 1508 |  | Cepstrum | 2d? | 2008-08-13 | 2008-08-14 | 1506 | 35d |
| 1509 |  | Basic Complex math | 2d? | 2008-08-22 | 2008-08-25 | 1508 | 35d |
| 1510 |  | Hilbert | 2d? | 2008-08-28 | 2008-08-29 | 1509 | 35d |
| 1511 |  | Conversions | 2d? | 2008-09-03 | 2008-09-04 | 1510 | 35d |
| 1512 |  | Differentiation/Integration | 1d? | 2008-09-05 | 2008-09-05 | 1511 | 35d |
| 1513 |  | Statistical (mean,mode…) | 1d? | 2008-09-10 | 2008-09-10 | 1512 | 35d |
| 1514 | 1.5.7.15 | **Limit lines** | 3d? | 2008-09-12 | 2008-09-16 |  | 35d |
| 1515 |  | Upper limit | 1d? | 2008-09-12 | 2008-09-12 | 1513 | 35d |
| 1516 |  | Lower limit | 1d? | 2008-09-16 | 2008-09-16 | 1515 | 35d |
| 1517 | 1.5.7.16 | **Swept Sine** | 10d? | 2008-09-17 | 2008-09-30 |  | 35d |
| 1518 |  | Gain, Phase margins | 1d? | 2008-09-17 | 2008-09-17 | 1516 | 35d |
| 1519 |  | Frequency, Damping | 1d? | 2008-09-22 | 2008-09-22 | 1518 | 35d |
| 1520 |  | Frequency Response | 1d? | 2008-09-24 | 2008-09-24 | 1519 | 35d |
| 1521 |  | Variance | 1d? | 2008-09-26 | 2008-09-26 | 1520 | 35d |
| 1522 |  | Group Delay | 1d? | 2008-09-30 | 2008-09-30 | 1521 | 35d |
| 1523 | 1.5.7.17 | **Marker Functions** | 11d? | 2008-10-01 | 2008-10-15 |  | 35d |
| 1524 |  | Peak Search | 1d? | 2008-10-01 | 2008-10-01 | 1522 | 35d |
| 1525 |  | Next Largest Peak | 1d? | 2008-10-06 | 2008-10-06 | 1524 | 35d |
| 1526 |  | Next Peak Right | 1d? | 2008-10-08 | 2008-10-08 | 1525 | 35d |
| 1527 |  | Next Peak Left | 1d? | 2008-10-10 | 2008-10-10 | 1526 | 35d |
| 1528 |  | Peak Tracking | 1d? | 2008-10-14 | 2008-10-14 | 1527 | 35d |
| 1529 |  | Marker to Center | 1d? | 2008-10-15 | 2008-10-15 | 1528 | 35d |
| 1530 |  | Orbit | 1d? | 2008-10-20 | 2008-10-20 | 1529 | 35d |
| 1531 | 1.5.7.19 | **Time measurements** | 16d? | 2008-10-22 | 2008-11-12 |  | 34d |
| 1532 |  | Delay time function | 1d? | 2008-10-22 | 2008-10-22 | 1530 | 35d |
| 1533 |  | Maximum overshoot | 1d? | 2008-10-24 | 2008-10-24 | 1532 | 35d |
| 1534 |  | Rise time | 1d? | 2008-10-28 | 2008-10-28 | 1533 | 35d |
| 1535 |  | Decay Time | 2d? | 2008-10-31 | 2008-11-03 | 1534 | 35d |
| 1536 |  | Pulse Width | 1d? | 2008-11-05 | 2008-11-05 | 1535 | 35d |
| 1537 |  | Voltage Max | 1d? | 2008-11-07 | 2008-11-07 | 1536 | 35d |
| 1538 |  | Voltage Min | 1d? | 2008-11-11 | 2008-11-11 | 1537 | 34d |
| 1539 |  | Settling time | 1d? | 2008-11-12 | 2008-11-12 | 1538 | 34d |
| 1540 | 1.5.8 | **Error codes definition** | 10d? | 2008-03-04 | 2008-03-18 |  | 9.99d |

| ID | WBS | Task | Duration | Start | Finish | Predecessors | Total float | Constraint |
| --- | --- | --- | --- | --- | --- | --- | --- | --- |
| 1541 |  | Categorize errors | 4.29d? | 2008-03-04 | 2008-03-10 | 783 | 9.99d |  |
| 1542 |  | Error code translation proposal/plan | 4.29d? | 2008-03-11 | 2008-03-17 | 1541 | 10.99d |  |
| 1543 |  | Review with team | 0.71d? | 2008-03-17 | 2008-03-17 | 1542 | 10.99d |  |
| 1544 |  | Incorporate review decisions | 0.71d? | 2008-03-18 | 2008-03-18 | 1543 | 10.99d |  |
| 1545 | 1.5.9 | **Define meas to be implemented in MVP** | 22d? | 2008-11-18 | 2008-12-17 |  | 32d |  |
| 1546 |  | List the meas for MVP | 2d? | 2008-11-18 | 2008-11-19 | 1539 | 34d |  |
| 1547 |  | Identify dependecies on other meas | 4d? | 2008-11-26 | 2008-12-01 | 1546 | 34d |  |
| 1548 |  | Review with team | 2d? | 2008-12-04 | 2008-12-05 | 1547 | 32d |  |
| 1549 |  | Incorporate review decisions | 2d? | 2008-12-09 | 2008-12-10 | 1548 | 32d |  |
| 1550 |  | Finalize meas definition for MVP | 2d? | 2008-12-16 | 2008-12-17 | 1549 | 32d |  |
| 1551 | 1.5.10 | **Infrastructure Development** | 233d? | 2008-02-04 | 2008-12-24 |  | 10.99d |  |
| 1552 |  | Process to keep development tools in sync on development machines | 2.86d? | 2008-02-04 | 2008-02-06 |  | 10.99d |  |
| 1553 |  | Unit test framework setup | 2.86d? | 2008-02-06 | 2008-02-12 | 1552 | 9.99d |  |
| 1554 |  | Test result reporting and tracking | 4.29d? | 2008-02-12 | 2008-02-18 | 1553 | 9.99d |  |
| 1555 |  | Folder structure (OS, Unit test, performance test, verfication test and results) | 1.43d? | 2008-02-18 | 2008-02-20 | 1554 | 9.99d |  |
| 1556 |  | Defect tracking system | 1.43d? | 2008-02-20 | 2008-02-21 | 1555 | 9.99d |  |
| 1557 |  | Work with LP to understand their needs | 4d? | 2008-12-19 | 2008-12-24 | 1550, 1556 | 31d |  |
| 1558 | 1.6 | **AI Less SLIC Single Commands** | 339.14d? | 2008-02-04 | 2009-05-22 |  | 0d |  |
| 1559 |  | Develop Code and Nunit tests for 200 Parser Commands (15 per Day) | 18.57d? | 2008-02-04 | 2008-02-29 |  | 0d | start no earlier than 2008-02-04 |
| 1560 | 1.6.2 | **Instrument Engine AI Layer** | 102.57d | 2008-02-29 | 2008-07-23 |  | 0d |  |
| 1561 |  | Design Frequency IE Interface | 2.86d | 2008-02-29 | 2008-03-05 | 1559 | 0d |  |
| 1562 |  | Implement Frequency IE Interface | 2.86d | 2008-03-05 | 2008-03-10 | 1561 | 0d |  |
| 1563 |  | Nunit Frequency IE Interface | 1.43d | 2008-03-10 | 2008-03-11 | 1562 | 0d |  |
| 1564 |  | Design Channel IE Interface | 7.14d | 2008-03-11 | 2008-03-20 | 1563 | 0d |  |
| 1565 |  | Implement Channel IE Interface | 7.14d | 2008-03-20 | 2008-04-01 | 1564 | 0d |  |
| 1566 |  | Nunit Channel IE Interface | 4.29d | 2008-04-02 | 2008-04-08 | 1565 | 0d |  |
| 1567 |  | Design Trigger IE Interface | 7.14d | 2008-04-08 | 2008-04-21 | 1566 | 0d |  |
| 1568 |  | Implement Trigger IE Interface | 7.14d | 2008-04-21 | 2008-04-30 | 1567 | 0d |  |
| 1569 |  | Nunit Trigger IE Interface | 4.29d | 2008-04-30 | 2008-05-07 | 1568 | 0d |  |
| 1570 |  | Design Source IE Interface | 7.14d | 2008-05-07 | 2008-05-16 | 1569 | 0d |  |
| 1571 |  | Implement Source IE Interface | 7.14d | 2008-05-19 | 2008-05-28 | 1570 | 0d |  |
| 1572 |  | Nunit Source IE Interface | 4.29d | 2008-05-28 | 2008-06-03 | 1571 | 0d |  |
| 1573 |  | Design CAL IE Interface | 2.86d | 2008-06-03 | 2008-06-06 | 1572 | 0d |  |
| 1574 |  | Implement CAL IE Interface | 2.86d | 2008-06-06 | 2008-06-11 | 1573 | 0d |  |
| 1575 |  | Nunit CAL IE Interface | 1.43d | 2008-06-11 | 2008-06-12 | 1574 | 0d |  |
| 1576 |  | Design Data Access Free Run Mode IE Interface | 2.86d | 2008-06-12 | 2008-06-17 | 1575 | 0d |  |
| 1577 |  | Implement Data Access Free Run Mode IE Interface | 2.86d | 2008-06-17 | 2008-06-20 | 1576 | 0d |  |
| 1578 |  | Nunit Data Access Free Run Mode IE Interface | 1.43d | 2008-06-20 | 2008-06-23 | 1577 | 0d |  |
| 1579 |  | Design Data Access Trigger Mode IE Interface | 5.71d | 2008-06-23 | 2008-07-01 | 1578 | 0d |  |
| 1580 |  | Implement Data Access Trigger Mode IE Interface | 5.71d | 2008-07-01 | 2008-07-09 | 1579 | 0d |  |
| 1581 |  | Nunit Data Access Trigger Mode IE Interface | 2.86d | 2008-07-09 | 2008-07-11 | 1580 | 0d |  |
| 1582 |  | Design Data Access Octave Mode IE Interface | 2.86d | 2008-07-11 | 2008-07-16 | 1581 | 0d |  |
| 1583 |  | Implement Data Access Octave Mode IE Interface | 2.86d | 2008-07-16 | 2008-07-21 | 1582 | 0d |  |
| 1584 |  | Nunit Data Access Octave Mode IE Interface | 1.43d | 2008-07-21 | 2008-07-23 | 1583 | 0d |  |
| 1585 | 1.6.3 | **Status System** | 20d? | 2008-07-08 | 2008-08-05 |  | 101.4d |  |
| 1586 |  | Design Status System Registers | 7.69d? | 2008-07-08 | 2008-07-17 | 1665 | 101.4d |  |
| 1587 |  | Implement Status System Execution Routines | 7.69d | 2008-07-17 | 2008-07-29 | 1586 | 101.4d |  |
| 1588 |  | Nunit Status System | 4.62d | 2008-07-29 | 2008-08-05 | 1587 | 102.4d |  |
| 1589 | 1.6.4 | **SCPI Required Commands** | 40.46d? | 2008-08-05 | 2008-09-30 |  | 101.4d |  |
| 1590 |  | Design SCPI Required Commands | 15.38d? | 2008-08-05 | 2008-08-27 | 1588 | 102.4d |  |
| 1591 |  | Implement SCPI Required Commands | 15.38d? | 2008-08-27 | 2008-09-18 | 1590 | 101.4d |  |
| 1592 |  | Nunit SCPI Required commands | 7.69d? | 2008-09-18 | 2008-09-30 | 1591 | 101.4d |  |
| 1593 | 1.6.5 | **Analyzer Modes** | 15.71d? | 2008-07-23 | 2008-08-13 |  | 0d |  |
| 1594 |  | Design FFT Mode | 4.29d? | 2008-07-23 | 2008-07-29 | 1584 | 0d |  |
| 1595 |  | Design Octave Mode | 4.29d? | 2008-07-29 | 2008-08-04 | 1594 | 0d |  |
| 1596 |  | Design Stepped Sine Mode | 7.14d? | 2008-08-04 | 2008-08-13 | 1595 | 0d |  |
| 1597 | 1.6.6 | **Frequency Execution Routines** | 5.29d? | 2008-08-13 | 2008-08-21 |  | 0d |  |
| 1598 |  | Implement | 2.86d? | 2008-08-13 | 2008-08-19 | 1596 | 0d |  |
| 1599 |  | Nunit | 1.43d? | 2008-08-19 | 2008-08-21 | 1598 | 0d |  |
| 1600 | 1.6.7 | **Averaging Execution Routines** | 8.57d? | 2008-08-21 | 2008-09-02 |  | 0d |  |
| 1601 |  | Implement | 5.71d? | 2008-08-21 | 2008-08-28 | 1599 | 0d |  |
| 1602 |  | Nunit | 2.86d? | 2008-08-28 | 2008-09-02 | 1601 | 0d |  |
| 1603 | 1.6.8 | **Source Execution Routines** | 16.71d? | 2008-09-02 | 2008-09-25 |  | 0d |  |
| 1604 |  | Implement | 11.43d? | 2008-09-02 | 2008-09-19 | 1602 | 0d |  |
| 1605 |  | Nunit | 4.29d? | 2008-09-19 | 2008-09-25 | 1604 | 0d |  |
| 1606 | 1.6.9 | **Channel Execution Routines** | 17.71d? | 2008-09-25 | 2008-10-21 |  | 0d |  |
| 1607 |  | Implement | 11.43d? | 2008-09-25 | 2008-10-14 | 1605 | 0d |  |
| 1608 |  | Nunit | 4.29d? | 2008-10-14 | 2008-10-21 | 1607 | 0d |  |
| 1609 | 1.6.10 | **Trigger Execution Routines** | 16.71d? | 2008-10-21 | 2008-11-12 |  | 0d |  |
| 1610 |  | Implement | 11.43d? | 2008-10-21 | 2008-11-06 | 1608 | 0d |  |

| ID | WBS | Task | Duration | Start | Finish | Predecessors | Total float | Constraint |
| --- | --- | --- | --- | --- | --- | --- | --- | --- |
| 1611 |  | Nunit | 4.29d? | 2008-11-06 | 2008-11-12 | 1610 | 0d |  |
| 1612 |  | Nunit For TCA Commands | 7.69d? | 2008-09-30 | 2008-10-14 | 1592, 1611, 1667 | 99.4d |  |
| 1613 | 1.6.12 | **Trace Commands** | 47.71d | 2008-11-12 | 2009-01-19 |  | 0d |  |
| 1614 |  | Design AI - Analysis Layer Interface | 4.29d | 2008-11-12 | 2008-11-19 | 1611 | 0d |  |
| 1615 |  | Implement AI -- Analysis Layer Interface | 4.29d | 2008-11-19 | 2008-11-25 | 1614 | 0d |  |
| 1616 |  | Design Trace Combinations | 14.29d | 2008-11-25 | 2008-12-16 | 1615 | 0d |  |
| 1617 |  | Implement Trace Combinations | 14.29d | 2008-12-16 | 2009-01-06 | 1616 | 0d |  |
| 1618 |  | Implement Fetch Command | 2.86d | 2009-01-06 | 2009-01-09 | 1617 | 0d |  |
| 1619 |  | Nunit Fetch Commands | 5.71d | 2009-01-09 | 2009-01-19 | 1618 | 0d |  |
| 1620 | 1.6.13 | **Measurement Value** | 88.57d | 2009-01-19 | 2009-05-22 |  | 0d |  |
| 1621 |  | Design MV Combinations (19 Measurements * 2 Days per Measurment) | 54.29d | 2009-01-19 | 2009-04-03 | 1619, 1668 | 0d |  |
| 1622 |  | Implement Trace Combinations | 14.29d | 2009-04-03 | 2009-04-24 | 1621 | 0d |  |
| 1623 |  | Implement Fetch Command | 14.29d | 2009-04-24 | 2009-05-14 | 1622 | 0d |  |
| 1624 |  | Nunit Fetch Commands | 5.71d | 2009-05-14 | 2009-05-22 | 1623 | 0d |  |
| 1625 | 1.6.14 | **Analysis** | 105.45d | 2008-06-24 | 2008-11-19 |  | 117.32d |  |
| 1626 |  | Design Analysis Combinations (3 Measurements * 3 Days per Measurment) | 16.36d | 2008-06-24 | 2008-07-17 | 1668 | 117.32d |  |
| 1627 |  | Design Equation Parser | 9.09d | 2008-07-17 | 2008-07-30 | 1626 | 117.32d |  |
| 1628 |  | Implement Equation Parser | 36.36d | 2008-07-30 | 2008-09-18 | 1627 | 117.32d |  |
| 1629 |  | Implement Trace Combinations | 18.18d | 2008-09-18 | 2008-10-14 | 1628 | 117.32d |  |
| 1630 |  | Implement Fetch Command | 18.18d | 2008-10-14 | 2008-11-07 | 1629 | 117.32d |  |
| 1631 |  | Nunit Fetch Commands | 7.27d | 2008-11-07 | 2008-11-19 | 1630 | 117.32d |  |
| 1632 | 1.6.15 | **Lan Configuration** | 13.31d | 2008-10-14 | 2008-10-31 |  | 98.4d |  |
| 1633 |  | Port from Heroes | 7.69d | 2008-10-14 | 2008-10-23 | 1612 | 99.4d |  |
| 1634 |  | Nunit | 4.62d | 2008-10-23 | 2008-10-31 | 1633 | 98.4d |  |
| 1635 | 1.6.16 | **Calibration Commands** | 14.55d | 2008-11-19 | 2008-12-09 |  | 117.32d |  |
| 1636 |  | Implement | 9.09d | 2008-11-19 | 2008-12-02 | 1631 | 117.32d |  |
| 1637 |  | Nunit | 5.45d | 2008-12-02 | 2008-12-09 | 1636 | 117.32d |  |
| 1638 | 1.6.17 | **Misc Commands** | 23.08d | 2008-10-31 | 2008-12-03 |  | 98.4d |  |
| 1639 |  | Implement | 15.38d | 2008-10-31 | 2008-11-21 | 1634 | 98.4d |  |
| 1640 |  | Nunit | 7.69d | 2008-11-21 | 2008-12-03 | 1639 | 98.4d |  |
| 1641 | 1.6.18 | **Special Display Commands** | 25.08d? | 2008-12-03 | 2009-01-07 |  | 96.4d |  |
| 1642 |  | Implement | 15.38d? | 2008-12-03 | 2008-12-29 | 1640 | 96.4d |  |
| 1643 |  | Nunit | 7.69d? | 2008-12-29 | 2009-01-07 | 1642 | 96.4d |  |
| 1644 | 1.7 | **II** | 98.41d? | 2008-02-20 | 2008-07-08 |  | 100.4d |  |
| 1645 |  | Design Frequency GUI | 3.64d? | 2008-02-20 | 2008-02-26 | 39 | 100.4d |  |
| 1646 |  | Implement Frequency GUI | 4.62d? | 2008-02-26 | 2008-03-03 | 1645 | 100.4d |  |
| 1647 |  | Nunit Frequency GUI | 3.08d? | 2008-03-03 | 2008-03-07 | 1646 | 100.4d |  |
| 1648 |  | Design Channel GUI | 7.27d? | 2008-02-26 | 2008-03-06 | 1645 | 117.32d |  |
| 1649 |  | Implement Channel GUI | 9.23d? | 2008-03-07 | 2008-03-20 | 1647 | 100.4d |  |
| 1650 |  | Nunit Channel GUI | 4.62d? | 2008-03-20 | 2008-03-27 | 1649 | 99.4d |  |
| 1651 |  | Design Trigger GUI | 14.55d? | 2008-03-06 | 2008-03-27 | 1648 | 117.32d |  |
| 1652 |  | Implement Trigger GUI | 12.31d? | 2008-03-27 | 2008-04-16 | 1650 | 99.4d |  |
| 1653 |  | Nunit Trigger GUI | 6.15d? | 2008-04-16 | 2008-04-25 | 1652 | 99.4d |  |
| 1654 |  | Design Source GUI | 14.55d? | 2008-03-27 | 2008-04-16 | 1651 | 117.32d |  |
| 1655 |  | Implement Source GUI | 12.31d? | 2008-04-25 | 2008-05-14 | 1653 | 98.4d |  |
| 1656 |  | Nunit Source GUI | 6.15d? | 2008-05-14 | 2008-05-22 | 1655 | 98.4d |  |
| 1657 |  | Design Legal Settings Logic | 9.09d? | 2008-04-16 | 2008-04-29 | 1654 | 117.32d |  |
| 1658 |  | Implement Legal Sttings logic | 7.69d? | 2008-05-22 | 2008-06-03 | 1656 | 100.4d |  |
| 1659 |  | Nunit legal settings logic | 3.08d? | 2008-06-03 | 2008-06-06 | 1658 | 100.4d |  |
| 1660 |  | Design Cancel / Ok Logic | 7.27d? | 2008-04-29 | 2008-05-09 | 1657 | 117.32d |  |
| 1661 |  | Implement Cancel / Ok Logic | 6.15d? | 2008-06-06 | 2008-06-16 | 1659 | 100.4d |  |
| 1662 |  | Nunit Cancel / Ok Logic | 3.08d? | 2008-06-16 | 2008-06-19 | 1661 | 101.4d |  |
| 1663 |  | Design Run Mode Logic | 9.09d? | 2008-05-09 | 2008-05-22 | 1660 | 117.32d |  |
| 1664 |  | Implement Run Mode Logic | 7.69d? | 2008-06-19 | 2008-07-01 | 1662 | 101.4d |  |
| 1665 |  | Nunit Run Mode Logic | 4.62d? | 2008-07-01 | 2008-07-08 | 1664 | 101.4d |  |
| 1666 |  | Design SCPI Interface logic | 9.09d? | 2008-05-22 | 2008-06-04 | 1663 | 117.32d |  |
| 1667 |  | Implement SCPI Interface logic | 9.09d? | 2008-06-04 | 2008-06-17 | 1666 | 117.32d |  |
| 1668 |  | Nunit SCPI Interface logic | 5.45d? | 2008-06-17 | 2008-06-24 | 1667 | 117.32d |  |
| 1669 | 2 | **35670A DataLinker** | 127.32d? | 2008-01-07 | 2008-07-02 |  | 38.13d |  |
| 1670 | 2.1 | **Design** | 23.86d? | 2008-01-07 | 2008-02-07 |  | 39.13d |  |
| 1671 |  | FrameWork Design | 5.71d? | 2008-01-07 | 2008-01-14 |  | 39.13d | start no earlier than 2008-01-07 |
| 1672 |  | Review and Updation | 2.86d? | 2008-01-14 | 2008-01-18 | 1671 | 38.13d |  |
| 1673 |  | UI Design | 7.14d? | 2008-01-18 | 2008-01-29 | 1672 | 38.13d |  |
| 1674 |  | Review and Updation | 7.14d? | 2008-01-29 | 2008-02-07 | 1673 | 39.13d |  |
| 1675 | 2.2 | **Functionality** | 61.92d? | 2008-02-07 | 2008-05-05 |  | 37.13d |  |
| 1676 |  | Finding 35670 on LAN-GPIB Converter | 4.62d? | 2008-02-07 | 2008-02-15 | 1674 | 38.13d |  |
| 1677 |  | Finding 35670 on USB-GPIB Converter | 4.62d? | 2008-02-15 | 2008-02-22 | 1676 | 38.13d |  |
| 1678 |  | Finding 35670 on GPIB-GPIB | 4.62d? | 2008-02-22 | 2008-02-28 | 1677 | 39.13d |  |
| 1679 |  | Ibasic prog for Dir info transfer in RAM | 6.15d? | 2008-02-28 | 2008-03-07 | 1678 | 40.13d |  |
| 1680 |  | Ibasic prog for Dir info transfer in Floppy Drive | 4.62d? | 2008-03-07 | 2008-03-14 | 1679 | 41.13d |  |

| ID | WBS | Task | Duration | Start | Finish | Predecessors | Total float |
| --- | --- | --- | --- | --- | --- | --- | --- |
| 1681 |  | Implement Data structure to store Dir Info | 3.08d? | 2008-03-14 | 2008-03-19 | 1680 | 41.13d |
| 1682 |  | Parse the ascii file and store the info in datastructure | 1.54d? | 2008-03-19 | 2008-03-24 | 1681 | 40.13d |
| 1683 |  | Display data on Screen as per Format | 3.08d? | 2008-03-24 | 2008-03-27 | 1682 | 40.13d |
| 1684 |  | Sorting of displayed data | 3.08d? | 2008-03-27 | 2008-04-01 | 1683 | 40.13d |
| 1685 |  | Download selected file | 3.08d? | 2008-04-01 | 2008-04-04 | 1684 | 40.13d |
| 1686 |  | Download Directory selection dialog box | 1.54d? | 2008-04-04 | 2008-04-07 | 1685 | 40.13d |
| 1687 |  | DataViewer integration | 4.62d? | 2008-04-07 | 2008-04-15 | 1686 | 39.13d |
| 1688 |  | Uint Testing | 12.31d? | 2008-04-15 | 2008-05-05 | 1687 | 37.13d |
| 1689 |  | System Testing | 15.38d | 2008-05-05 | 2008-05-27 | 1688 | 37.13d |
| 1690 | 2.4 | **Help** | 16.92d? | 2008-05-27 | 2008-06-19 |  | 37.13d |
| 1691 |  | Online Manual help | 4.62d? | 2008-05-27 | 2008-06-02 | 1689 | 37.13d |
| 1692 |  | Help Version | 1.54d? | 2008-06-02 | 2008-06-04 | 1691 | 37.13d |
| 1693 |  | Link Dialog Help button | 3.08d? | 2008-06-04 | 2008-06-09 | 1692 | 37.13d |
| 1694 |  | Help Organization | 3.08d? | 2008-06-09 | 2008-06-12 | 1693 | 37.13d |
| 1695 |  | Getting Started | 4.62d? | 2008-06-12 | 2008-06-19 | 1694 | 37.13d |
| 1696 |  | Show Software (Version number etc) | 3.08d? | 2008-06-19 | 2008-06-24 | 1695 | 37.13d |
| 1697 |  | Installer/Uninstaller | 6.15d? | 2008-06-24 | 2008-07-02 | 1696 | 37.13d |

## Version 2 (saved 2008-04-11, file MirageDEVPlan_11Apr.mpp)

Note of the change: Initial migration from $/Mirage

Last finish 2009-05-22 → 2009-06-04 (+13d). Complete tasks 0 → 107.

Added:

| ID | Task | Duration | Start | Finish | Predecessors | Resources |
| --- | --- | --- | --- | --- | --- | --- |
| 90 | **Analyser Mode Management : FFT** | 305.86d? | 2008-03-25 | 2009-05-27 |  |  |
| 91 | Design | 2d? | 2008-03-25 | 2008-03-27 | 86 | RKB [50%] |
| 93 | Unit Testing | 1.54d? | 2008-04-17 | 2008-04-21 | 92 | 1ETW [65%] |
| 96 | Module Integration GUI - Inst Interface | 4d? | 2008-03-27 | 2008-04-02 | 91 | RKB [50%] |
| 97 | Module integration GUI - AML | 4d? | 2008-04-02 | 2008-04-08 | 96 | RKB [50%] |
| 99 | Design | 2d? | 2008-04-08 | 2008-04-10 | 97 | RKB [50%] |
| 101 | Unit Testing | 1.54d? | 2008-04-17 | 2008-04-22 | 100 | Pallavi [65%] |
| 104 | Design | 2d? | 2008-04-10 | 2008-04-15 | 99 | RKB [50%] |
| 108 | Design | 1d? | 2008-04-15 | 2008-04-16 | 104 | RKB [50%] |
| 117 | Design Framework for THD configuration | 3d? | 2008-04-22 | 2008-04-25 | 112 | RKB [50%] |
| 118 | Design Framework for Temporary Measurement flow | 5d? | 2008-04-25 | 2008-05-05 | 117 | RKB [50%] |
| 125 | Design Framework for Harmonic Power configuration | 1.54d? | 2008-04-29 | 2008-05-02 | 114 | Pallavi [65%] |
| 126 | Design Framework for Temporary Measurement flow | 2.31d? | 2008-05-02 | 2008-05-06 | 125 | Pallavi [65%] |
| 133 | Design Framework for Side band power configuration | 2d? | 2008-05-05 | 2008-05-07 | 118 | RKB [50%] |
| 134 | Design Framework for Temporary Measurement flow | 3d? | 2008-05-07 | 2008-05-12 | 133 | RKB [50%] |
| 141 | Design framework for band power configuration | 2d? | 2008-05-12 | 2008-05-14 | 134 | RKB [50%] |
| 142 | Design Framework for Temporary Measurement flow | 3d? | 2008-05-14 | 2008-05-19 | 141 | RKB [50%] |
| 197 | Design Framework for showing Error Log | 4d? | 2008-05-26 | 2008-05-30 | 150 | RKB [50%] |
| 202 | Code reviews/unit test case reviews | 1.54d | 2009-04-13 | 2009-04-15 | 201 | Pallavi [65%] |
| 207 | Design Framework for THD+n configuration | 2d? | 2008-05-30 | 2008-06-03 | 197 | RKB [50%] |
| 215 | Design Framework for SNR configuration | 2d? | 2008-06-03 | 2008-06-05 | 207 | RKB [50%] |
| 223 | Design Framework for SFDR configuration | 2d? | 2008-06-05 | 2008-06-09 | 215 | RKB [50%] |
| 231 | Design framework for SINAD configuration | 2d? | 2008-06-09 | 2008-06-11 | 223 | RKB [50%] |
| 239 | Design framework for ENOB configuration | 2d? | 2008-06-11 | 2008-06-13 | 231 | RKB [50%] |
| 292 | **Configure Measurements : Frequency damping** | 195.4d? | 2008-07-11 | 2009-04-10 |  |  |
| 293 | Design framework for Frequency dumping configuration | 2d? | 2008-07-11 | 2008-07-15 | 291 | RKB [50%] |
| 338 | Design | 2d? | 2008-07-28 | 2008-07-30 | 330 | RKB [50%] |
| 342 | Design | 2d? | 2008-07-30 | 2008-08-01 | 338 | RKB [50%] |
| 346 | Design | 2d? | 2008-08-01 | 2008-08-05 | 342 | RKB [50%] |
| 350 | Design | 2d? | 2008-08-05 | 2008-08-07 | 346 | RKB [50%] |
| 354 | Design | 2d? | 2008-08-07 | 2008-08-11 | 350 | RKB [50%] |
| 358 | Design | 2d? | 2008-08-11 | 2008-08-13 | 354 | RKB [50%] |
| 445 | Design | 4d? | 2008-09-08 | 2008-09-12 | 418 | RKB [50%] |
| 446 | Implementation for JPEG format | 3.08d? | 2008-09-30 | 2008-10-06 | 445, 359 | 1ETW [65%] |
| 447 | Implementation for BMP File format | 3.08d? | 2008-10-13 | 2008-10-16 | 446 | 1ETW [65%] |
| 449 | Design | 4d? | 2008-09-12 | 2008-09-18 | 445 | RKB [50%] |
| 473 | Design | 2d? | 2008-09-30 | 2008-10-03 | 465 | RKB [50%] |
| 477 | Design | 3d? | 2008-10-03 | 2008-10-08 | 473 | RKB [50%] |
| 480 | Unit Testing review/Code Review | 1.54d? | 2008-02-04 | 2008-02-05 |  | 1ETW [65%] |
| 482 | Design System information | 3d? | 2008-10-08 | 2008-10-14 | 477 | RKB [50%] |
| 485 | Unit Testing review/Code Review | 1.54d? | 2008-02-05 | 2008-02-07 |  | 1ETW [65%] |
| 487 | design for Hardware information | 2d? | 2008-10-14 | 2008-10-16 | 482 | RKB [50%] |
| 490 | Unit Testing review/Code Review | 1.54d? | 2008-02-07 | 2008-09-29 |  | 1ETW [65%] |
| 492 | design | 4d? | 2008-10-16 | 2008-10-22 | 487 | RKB [50%] |
| 493 | Implementation for Display License | 3.08d? | 2008-12-02 | 2008-12-05 | 470, 492 | Pallavi [65%] |
| 494 | Implementation for License Activation | 3.08d? | 2008-12-05 | 2008-12-11 | 493 | Pallavi [65%] |
| 495 | Implementation for License De-Activation | 3.08d? | 2008-12-11 | 2008-12-17 | 494 | Pallavi [65%] |
| 498 | Unit Testing review/Code Review | 1.54d? | 2008-02-05 | 2008-02-07 |  | Pallavi [65%] |
| 500 | design | 2d? | 2008-10-22 | 2008-10-24 | 492 | RKB [50%] |
| 503 | Unit Testing review/Code Review | 1.54d? | 2009-03-13 | 2009-03-17 | 502 | Pallavi [65%] |
| 505 | design | 2d? | 2008-10-24 | 2008-10-29 | 500 | RKB [50%] |
| 508 | Unit Testing review/Code Review | 1.54d? | 2009-03-12 | 2009-03-13 | 507 | Pallavi [65%] |
| 510 | design | 2d? | 2008-10-29 | 2008-10-31 | 505 | RKB [50%] |
| 516 | Unit Testing review/Code Review | 1.54d? | 2009-03-10 | 2009-03-12 | 515 | Pallavi [65%] |
| 535 | Design | 2d? | 2008-11-26 | 2008-11-28 | 533 | RKB [50%] |
| 539 | Design | 2d? | 2008-11-28 | 2008-12-02 | 535 | RKB [50%] |
| 546 | Design | 2d? | 2008-12-02 | 2008-12-04 | 539 | RKB [50%] |
| 560 | Design | 2d? | 2008-12-08 | 2008-12-11 | 553 | RKB [50%] |
| 565 | Code Review/ Unit test case review/Design screen/ Screen usability reviews with Jan Ryles | 1.54d | 2009-06-02 | 2009-06-04 |  | 1ETW [65%] |
| 585 | Learn how to put stuff in Build system | 0.91d? | 2008-04-16 A | 2008-04-17 A | 584 | Gowie [55%] |
| 586 | Implement SET mode | 5.45d? | 2008-04-04 A | 2008-04-11 A |  | Gowie [55%] |
| 587 | implement trace types | 5.45d? | 2008-04-11 A | 2008-04-21 A | 586 | Gowie [55%] |
| 590 | **State Management** | 17.12d? | 2008-04-24 A | 2008-05-19 |  |  |
| 591 | Design framework for state change event | 1.82d? | 2008-04-24 A | 2008-04-25 A | 589 | Gowie [55%] |
| 592 | implement mode change event | 8.57d? | 2008-04-25 A | 2008-05-08 A | 591 | Gowie [11.7%] |
| 593 | implement state change event | 2d? | 2008-05-08 A | 2008-05-12 A | 592 | Gowie [50%] |
| 594 | implement data available event | 2d? | 2008-05-12 | 2008-05-14 | 593 | Gowie [50%] |
| 597 | Available Status (Place Holder) | 3.64d? | 2008-05-19 | 2008-05-22 | 596 | Gowie [55%] |
| 601 | Implement Create Trace | 7.27d? | 2008-04-24 A | 2008-05-05 A | 589 | Gowie [55%] |
| 602 | Implement Delete Trace | 7.27d? | 2008-05-05 A | 2008-05-14 A | 601 | Gowie [55%] |
| 604 | **Data Flow** | 6d? | 2008-02-04 A | 2008-02-11 |  |  |
| 605 | Understand Signal Flow/Design Data Types | 6d? | 2008-02-04 A | 2008-02-11 |  | Mike [50%] |
| 606 | design data flow through trace management | 4d? | 2008-02-04 | 2008-02-07 |  | Mike [50%] |
| 607 | design state flow with data | 0.95d? | 2008-02-04 | 2008-02-04 |  | Gowie [55%]; Mike [50%] |
| 608 | implement data flow through trace management | 1d? | 2008-02-04 | 2008-02-04 |  | Gowie [55%]; Mike [50%] |
| 609 | implement state flow with data | 1d? | 2008-02-04 | 2008-02-04 |  | Gowie [55%]; Mike [50%] |
| 610 | implement enable trace | 1d? | 2008-02-04 | 2008-02-04 |  |  |
| 611 | **Phase 2 Traces** | 3d? | 2008-02-04 | 2008-02-06 |  |  |
| 612 | **Linear Spectrum Trace** | 3d? | 2008-02-04 | 2008-02-06 |  |  |
| 613 | Implement Meas Data Transform | 0.5d? | 2008-02-04 | 2008-02-04 |  | Gowie [50%]; Mike [50%] |
| 614 | Implement Availablity Action | 3d? | 2008-02-04 | 2008-02-06 |  | Gowie [50%]; Mike [50%] |
| 616 | Enhance All Events for this data | 2d? | 2008-02-04 | 2008-02-05 |  | Gowie [50%]; Mike [50%] |
| 617 | **Cross Power Spectrum Trace** | 1d? | 2008-02-04 | 2008-02-04 |  |  |
| 618 | Implement Meas Data Transform | 1d? | 2008-02-04 | 2008-02-04 |  |  |
| 619 | Implement Availablity Action | 1d? | 2008-02-04 | 2008-02-04 |  |  |
| 621 | Enhance All Events for this data | 1d? | 2008-02-04 | 2008-02-04 |  |  |
| 622 | **Time Sample Trace** | 1d? | 2008-02-04 | 2008-02-04 |  |  |
| 623 | Implement Meas Data Transform | 1d? | 2008-02-04 | 2008-02-04 |  |  |
| 624 | Implement Availablity Action | 1d? | 2008-02-04 | 2008-02-04 |  |  |
| 626 | Enhance All Events for this data | 1d? | 2008-02-04 | 2008-02-04 |  |  |
| 627 | **THD Measurement Value** | 1d? | 2008-02-04 | 2008-02-04 |  |  |
| 628 | Implement Measurement Value Transform | 1d? | 2008-02-04 | 2008-02-04 |  |  |
| 629 | Implement Availablity Action | 1d? | 2008-02-04 | 2008-02-04 |  |  |
| 631 | Enhance All Events for this data | 1d? | 2008-02-04 | 2008-02-04 |  |  |
| 632 | **Time Band Power Measurement Value** | 1d? | 2008-02-04 | 2008-02-04 |  |  |
| 633 | Implement Measurement Value Transform | 1d? | 2008-02-04 | 2008-02-04 |  |  |
| 634 | Implement Availablity Action | 1d? | 2008-02-04 | 2008-02-04 |  |  |
| 636 | Enhance All Events for this data | 1d? | 2008-02-04 | 2008-02-04 |  |  |
| 637 | **Linear Trace Coordinates** | 1d? | 2008-02-04 | 2008-02-04 |  |  |
| 638 | Implement Measurement Value Transform | 1d? | 2008-02-04 | 2008-02-04 |  |  |
| 639 | Implement Availablity Action | 1d? | 2008-02-04 | 2008-02-04 |  |  |
| 641 | Enhance All Events for this data | 1d? | 2008-02-04 | 2008-02-04 |  |  |
| 642 | **Phase Trace Coordinates** | 1d? | 2008-02-04 | 2008-02-04 |  |  |
| 643 | Implement Measurement Value Transform | 1d? | 2008-02-04 | 2008-02-04 |  |  |
| 644 | Implement Availablity Action | 1d? | 2008-02-04 | 2008-02-04 |  |  |
| 646 | Enhance All Events for this data | 1d? | 2008-02-04 | 2008-02-04 |  |  |
| 647 | **Testing** | 1d? | 2008-02-04 | 2008-02-04 |  |  |
| 648 | Test available status for all combinatioins of Meas Data, Meas Value, transducer units, trace coord | 1d? | 2008-02-04 | 2008-02-04 |  |  |
| 649 | Test mode change event for all combinations | 1d? | 2008-02-04 | 2008-02-04 |  |  |
| 650 | Test state change event for all combinations | 1d? | 2008-02-04 | 2008-02-04 |  |  |
| 651 | Test data available event for all combinations | 1d? | 2008-02-04 | 2008-02-04 |  |  |
| 652 | Understand perfomance tools | 1d? | 2008-02-04 | 2008-02-04 |  |  |
| 653 | Collect baseline performace | 1d? | 2008-02-04 | 2008-02-04 |  |  |
| 654 | **Code Review** | 1d? | 2008-02-04 | 2008-02-04 |  |  |
| 655 | Code review trace and meas values | 1d? | 2008-02-04 | 2008-02-04 |  |  |
| 656 | implement changes | 1d? | 2008-02-04 | 2008-02-04 |  |  |
| 657 | **Phase 3 traces** | 1d? | 2008-02-04 | 2008-02-04 |  |  |
| 658 | tbd | 1d? | 2008-02-04 | 2008-02-04 |  |  |
| 1074 | Research & Investigation | 7.69d? | 2008-09-16 | 2008-09-26 | 1072 | Ramkumar [65%] |
| 1224 | Research & Investigation on MVP filters | 15.38d? | 2008-02-04 A | 2008-02-26 A |  | ShashiP [65%] |
| 1225 | Averaging-MATLAB simulation for MVP | 15.38d? | 2008-02-26 A | 2008-03-18 A | 1224 | ShashiP [65%] |
| 1226 | Research & invesitgation on Octave with MATLAB simulation | 23.08d? | 2008-02-04 A | 2008-03-07 A |  | Ramkumar [65%] |
| 1533 | Design Averaging GUI | 3.64d? | 2008-04-11 | 2008-04-16 |  | Gowie [55%] |
| 1534 | Implement Averaging GUI | 7.69d? | 2009-01-29 | 2009-02-09 | 1533 | 2ETW [65%] |
| 1535 | Nunit Averaging GUI | 7.69d? | 2009-04-16 | 2009-04-28 | 1534 | 2ETW [65%] |
| 1564 | **NEW TASKS ADDED 2/12/08** | 330d? | 2008-02-04 A | 2009-05-08 |  |  |
| 1565 | Architecture Development | 25d | 2009-04-06 A | 2009-05-08 A |  | Mike [40%] |
| 1566 | GUI Technical Spec FFT Mode | 20d? | 2008-05-27 | 2008-06-24 |  | Gowie [50%] |
| 1567 | GUI Technical Spec Swept Sine Mode | 10d? | 2008-06-24 | 2008-07-08 |  | Gowie [50%] |
| 1568 | GUI Technical Spec Octave Mode | 10d? | 2008-07-08 | 2008-07-22 |  | Gowie [50%] |
| 1569 | SCPI Technical Spec FFT Mode | 10d? | 2008-07-22 | 2008-08-05 |  | Gowie [50%] |
| 1570 | SCPI Technical Spec Swept Sine Mode | 6d? | 2008-09-23 | 2008-10-01 |  | Gowie [50%] |
| 1571 | SCPI Technical Spec Octave Mode | 6d? | 2008-10-01 | 2008-10-09 |  | Gowie [50%] |
| 1572 | **FFT Mode IE State Proxy Component** | 155.64d? | 2008-08-05 | 2009-03-11 |  |  |
| 1573 | **IE Proxy Collection** | 5.45d? | 2009-02-26 | 2009-03-05 |  |  |
| 1574 | Design | 1.82d? | 2009-02-26 | 2009-03-02 |  | Gowie [55%] |
| 1577 | **Frequency Proxy** | 109.09d? | 2008-10-09 | 2009-03-11 |  |  |
| 1578 | Design | 5.45d? | 2008-10-09 | 2008-10-16 |  | Gowie [55%] |
| 1579 | Implement | 1.82d? | 2009-03-05 | 2009-03-09 |  | Gowie [55%] |
| 1580 | Nunit | 1.82d? | 2009-03-09 | 2009-03-11 |  | Gowie [55%] |
| 1581 | **Arm Proxy** | 10.91d? | 2008-10-16 | 2008-10-31 |  |  |
| 1582 | Design | 3.64d? | 2008-10-16 | 2008-10-22 |  | Gowie [55%] |
| 1583 | Implement | 3.64d? | 2008-10-22 | 2008-10-28 |  | Gowie [55%] |
| 1584 | Nunit | 3.64d? | 2008-10-28 | 2008-10-31 |  | Gowie [55%] |
| 1585 | **Trigger Proxy** | 10.91d? | 2008-10-31 | 2008-11-17 |  |  |
| 1586 | Design | 3.64d? | 2008-10-31 | 2008-11-06 |  | Gowie [55%] |
| 1587 | Implement | 3.64d? | 2008-11-06 | 2008-11-11 |  | Gowie [55%] |
| 1588 | Nunit | 3.64d? | 2008-11-12 | 2008-11-17 |  | Gowie [55%] |
| 1589 | **Averaging Proxy** | 10.91d? | 2008-11-17 | 2008-12-02 |  |  |
| 1590 | Design | 3.64d? | 2008-11-17 | 2008-11-21 |  | Gowie [55%] |
| 1591 | Implement | 3.64d? | 2008-11-21 | 2008-11-26 |  | Gowie [55%] |
| 1592 | Nunit | 3.64d? | 2008-11-26 | 2008-12-02 |  | Gowie [55%] |
| 1593 | **Source Proxy** | 10.91d? | 2008-12-02 | 2008-12-17 |  |  |
| 1594 | Design | 3.64d? | 2008-12-02 | 2008-12-08 |  | Gowie [55%] |
| 1595 | Implement | 3.64d? | 2008-12-08 | 2008-12-11 |  | Gowie [55%] |
| 1596 | Nunit | 3.64d? | 2008-12-11 | 2008-12-17 |  | Gowie [55%] |
| 1597 | **Data Pacer** | 14.55d? | 2008-12-17 | 2009-01-07 |  |  |
| 1598 | Design | 3.64d? | 2008-12-17 | 2008-12-23 |  | Gowie [55%] |
| 1599 | Implement Simulation | 3.64d? | 2008-12-23 | 2008-12-26 |  | Gowie [55%] |
| 1600 | Implement | 3.64d? | 2008-12-26 | 2009-01-01 |  | Gowie [55%] |
| 1601 | Nunit | 3.64d? | 2009-01-01 | 2009-01-07 |  | Gowie [55%] |
| 1602 | **Instrument Utilities Proxy (Cal, Self Test, Abort)** | 27.27d? | 2008-08-05 | 2008-09-12 |  |  |
| 1603 | Design | 9.09d? | 2008-08-05 | 2008-08-18 |  | Gowie [55%] |
| 1604 | Implement | 9.09d? | 2008-08-18 | 2008-08-29 |  | Gowie [55%] |
| 1605 | Nunit | 9.09d? | 2008-08-29 | 2008-09-12 |  | Gowie [55%] |
| 1606 | **Step Sine Mode IE State Proxy Component** | 65.45d? | 2009-01-07 | 2009-04-08 |  |  |
| 1607 | **Arm Proxy** | 49.09d? | 2009-01-07 | 2009-03-17 |  |  |
| 1608 | Design | 1.82d? | 2009-03-11 | 2009-03-13 |  | Gowie [55%] |
| 1609 | Implement | 1.82d? | 2009-03-13 | 2009-03-17 |  | Gowie [55%] |
| 1610 | Nunit | 3.64d? | 2009-01-07 | 2009-01-12 |  | Gowie [55%] |
| 1611 | **Trigger Proxy** | 49.09d? | 2009-01-12 | 2009-03-20 |  |  |
| 1612 | Design | 1.82d? | 2009-03-17 | 2009-03-18 |  | Gowie [55%] |
| 1613 | Implement | 1.82d? | 2009-03-18 | 2009-03-20 |  | Gowie [55%] |
| 1614 | Nunit | 3.64d? | 2009-01-12 | 2009-01-16 |  | Gowie [55%] |
| 1615 | **Averaging Proxy** | 49.09d? | 2009-01-16 | 2009-03-26 |  |  |
| 1616 | Design | 1.82d? | 2009-03-20 | 2009-03-24 |  | Gowie [55%] |
| 1617 | Implement | 1.82d? | 2009-03-24 | 2009-03-26 |  | Gowie [55%] |
| 1618 | Nunit | 3.64d? | 2009-01-16 | 2009-01-21 |  | Gowie [55%] |
| 1619 | **Source Proxy** | 49.09d? | 2009-01-21 | 2009-04-01 |  |  |
| 1620 | Design | 1.82d? | 2009-03-26 | 2009-03-30 |  | Gowie [55%] |
| 1621 | Implement | 1.82d? | 2009-03-30 | 2009-04-01 |  | Gowie [55%] |
| 1622 | Nunit | 3.64d? | 2009-01-21 | 2009-01-27 |  | Gowie [55%] |
| 1623 | **Data Pacer** | 50.91d? | 2009-01-27 | 2009-04-08 |  |  |
| 1624 | Design | 1.82d? | 2009-04-01 | 2009-04-02 |  | Gowie [55%] |
| 1625 | Implement Simulation | 1.82d? | 2009-04-02 | 2009-04-06 |  | Gowie [55%] |
| 1626 | Implement | 1.82d? | 2009-04-06 | 2009-04-08 |  | Gowie [55%] |
| 1627 | Nunit | 3.64d? | 2009-01-27 | 2009-02-02 |  | Gowie [55%] |
| 1628 | **Octave Mode IE State Proxy Component** | 67.27d? | 2009-02-02 | 2009-05-06 |  |  |
| 1629 | **Arm Proxy** | 50.91d? | 2009-02-02 | 2009-04-14 |  |  |
| 1630 | Design | 1.82d? | 2009-04-08 | 2009-04-10 |  | Gowie [55%] |
| 1631 | Implement | 1.82d? | 2009-04-10 | 2009-04-14 |  | Gowie [55%] |
| 1632 | Nunit | 3.64d? | 2009-02-02 | 2009-02-05 |  | Gowie [55%] |
| 1633 | **Trigger Proxy** | 50.91d? | 2009-02-05 | 2009-04-17 |  |  |
| 1634 | Design | 1.82d? | 2009-04-14 | 2009-04-15 |  | Gowie [55%] |
| 1635 | Implement | 1.82d? | 2009-04-15 | 2009-04-17 |  | Gowie [55%] |
| 1636 | Nunit | 3.64d? | 2009-02-05 | 2009-02-11 |  | Gowie [55%] |
| 1637 | **Averaging Proxy** | 50.91d? | 2009-02-11 | 2009-04-23 |  |  |
| 1638 | Design | 1.82d? | 2009-04-17 | 2009-04-21 |  | Gowie [55%] |
| 1639 | Implement | 1.82d? | 2009-04-21 | 2009-04-23 |  | Gowie [55%] |
| 1640 | Nunit | 3.64d? | 2009-02-11 | 2009-02-17 |  | Gowie [55%] |
| 1641 | **Source Proxy** | 50.91d? | 2009-02-17 | 2009-04-29 |  |  |
| 1642 | Design | 1.82d? | 2009-04-23 | 2009-04-27 |  | Gowie [55%] |
| 1643 | Implement | 1.82d? | 2009-04-27 | 2009-04-29 |  | Gowie [55%] |
| 1644 | Nunit | 3.64d? | 2009-02-17 | 2009-02-20 |  | Gowie [55%] |
| 1645 | **Data Pacer** | 52.73d? | 2009-02-20 | 2009-05-06 |  |  |
| 1646 | Design | 1.82d? | 2009-04-29 | 2009-04-30 |  | Gowie [55%] |
| 1647 | Implement Simulation | 1.82d? | 2009-04-30 | 2009-05-04 |  | Gowie [55%] |
| 1648 | Implement | 1.82d? | 2009-05-04 | 2009-05-06 |  | Gowie [55%] |
| 1649 | Nunit | 3.64d? | 2009-02-20 | 2009-02-26 |  | Gowie [55%] |
| 1650 | AI SLIC Step Sine Port (20% of Original FFT work) | 1d? | 2008-02-04 | 2008-02-04 |  |  |
| 1651 | AI SLIC Octave Port (20% of Original FFT work) | 1d? | 2008-02-04 | 2008-02-04 |  |  |
| 1652 | Swept Sine Mode I.I. (20% of Original FFT I.I.) | 1d? | 2008-02-04 | 2008-02-04 |  |  |
| 1653 | Octave Mode I.I. (20% of Original FFT I.I.) | 1d? | 2008-02-04 | 2008-02-04 |  |  |
| 1654 | **IE State Proxy** | 184.71d? | 2008-02-04 A | 2008-10-17 |  |  |
| 1655 | Design Instrument Proxy High Level Design | 4.29d? | 2008-02-04 A | 2008-02-08 A |  | Vishal [70%] |
| 1656 | Implement Instrument Proxy Framework into Build | 4.29d? | 2008-02-08 A | 2008-02-15 | 1655 | Vishal [70%] |
| 1657 | **Design Parameters** | 17.14d? | 2008-02-15 A | 2008-03-11 |  |  |
| 1658 | Arm | 2.86d? | 2008-02-15 A | 2008-02-20 A | 1656 | Vishal [70%] |
| 1659 | Average | 1.43d? | 2008-02-20 | 2008-02-21 | 1658 | Vishal [70%] |
| 1660 | Channel | 2.86d? | 2008-02-21 A | 2008-02-26 A | 1659 | Vishal [70%] |
| 1661 | Frequency | 1.43d? | 2008-02-26 A | 2008-02-28 A | 1660 | Vishal [70%] |
| 1662 | Source | 1.43d? | 2008-02-28 | 2008-02-29 | 1661 | Vishal [70%] |
| 1663 | Trigger | 1.43d? | 2008-02-29 A | 2008-03-03 A | 1662 | Vishal [70%] |
| 1664 | Error Handling | 1.43d? | 2008-03-03 | 2008-03-05 | 1663 | Vishal [70%] |
| 1665 | Simulation Design | 1.43d? | 2008-03-05 | 2008-03-06 | 1664 | Vishal [70%] |
| 1666 | Instrument Engine Interface Design | 2.86d? | 2008-03-06 | 2008-03-11 | 1665 | Vishal [70%] |
| 1667 | **Implement/Nunit Test Parameters** | 11d? | 2008-03-11 | 2008-03-26 |  |  |
| 1668 | Arm | 2.86d? | 2008-03-11 | 2008-03-14 | 1666 | Vishal [70%] |
| 1669 | Average | 1.43d? | 2008-03-14 | 2008-03-17 | 1668 | Vishal [70%] |
| 1670 | Channel | 1.43d? | 2008-03-17 | 2008-03-19 | 1669 | Vishal [70%] |
| 1671 | Frequency | 1.43d? | 2008-03-19 | 2008-03-20 | 1670 | Vishal [70%] |
| 1672 | Source | 1.43d? | 2008-03-20 | 2008-03-25 | 1671 | Vishal [70%] |
| 1673 | Trigger | 1.43d? | 2008-03-25 | 2008-03-26 | 1672 | Vishal [70%] |
| 1674 | **Special Testing** | 8.57d? | 2008-03-26 | 2008-04-08 |  |  |
| 1675 | Error Handling | 2.86d? | 2008-03-26 | 2008-03-31 | 1673 | Vishal [70%] |
| 1676 | Develop Thread Safe Tests | 2.86d? | 2008-03-31 | 2008-04-03 | 1675 | Vishal [70%] |
| 1677 | Develop Parameter Change Callback Tests | 2.86d? | 2008-04-03 | 2008-04-08 | 1676 | Vishal [70%] |
| 1678 | **Method Design** | 5.29d? | 2008-04-08 | 2008-04-15 |  |  |
| 1679 | Design Run / Stop / Pause / Continue | 2.86d? | 2008-04-08 | 2008-04-11 | 1677 | Vishal [70%] |
| 1680 | Design Reset | 1.43d? | 2008-04-11 | 2008-04-15 | 1679 | Vishal [70%] |
| 1681 | **Simulator** | 19.14d? | 2008-04-15 | 2008-05-12 |  |  |
| 1682 | Implement Simulation of Parameters | 2.86d? | 2008-04-15 | 2008-04-21 | 1680 | Vishal [70%] |
| 1683 | Implement Simulation of Methods | 14.29d? | 2008-04-21 | 2008-05-12 | 1682 | Vishal [70%] |
| 1684 | **Design Instrument Engine Calls** | 10d? | 2008-05-12 | 2008-05-26 |  |  |
| 1685 | Arm | 1.43d | 2008-05-12 | 2008-05-14 | 1683 | Vishal [70%] |
| 1686 | Average | 1.43d? | 2008-05-14 | 2008-05-15 | 1685 | Vishal [70%] |
| 1687 | Channel | 1.43d? | 2008-05-15 | 2008-05-16 | 1686 | Vishal [70%] |
| 1688 | Frequency | 1.43d? | 2008-05-16 | 2008-05-20 | 1687 | Vishal [70%] |
| 1689 | Source | 1.43d? | 2008-05-20 | 2008-05-21 | 1688 | Vishal [70%] |
| 1690 | Trigger | 1.43d? | 2008-05-21 | 2008-05-23 | 1689 | Vishal [70%] |
| 1691 | Run / Pause / Cont / Stop / Reset | 1.43d? | 2008-05-23 | 2008-05-26 | 1690 | Vishal [70%] |
| 1692 | **Implement test Instrument Engine Calls** | 76.29d? | 2008-05-26 | 2008-09-09 |  |  |
| 1693 | Arm | 10d? | 2008-05-26 | 2008-06-09 | 1691 | Vishal [70%] |
| 1694 | Average | 10d? | 2008-06-09 | 2008-06-23 | 1693 | Vishal [70%] |
| 1695 | Channel | 10d? | 2008-06-23 | 2008-07-07 | 1694 | Vishal [70%] |
| 1696 | Frequency | 10d? | 2008-07-07 | 2008-07-21 | 1695 | Vishal [70%] |
| 1697 | Source | 10d? | 2008-07-21 | 2008-08-04 | 1696 | Vishal [70%] |
| 1698 | Trigger | 10d? | 2008-08-04 | 2008-08-19 | 1697 | Vishal [70%] |
| 1699 | Run / Pause / Cont / Stop / Reset | 14.29d? | 2008-08-19 | 2008-09-09 | 1698 | Vishal [70%] |
| 1700 | **Enabled** | 14.29d? | 2008-09-09 | 2008-09-30 |  |  |
| 1701 | Design Enabled | 2.86d? | 2008-09-09 | 2008-09-12 | 1699 | Vishal [70%] |
| 1702 | Implement Enabled | 5.71d? | 2008-09-12 | 2008-09-22 | 1701 | Vishal [70%] |
| 1703 | Test Enabled | 5.71d? | 2008-09-22 | 2008-09-30 | 1702 | Vishal [70%] |
| 1704 | **Rejection** | 13.43d? | 2008-09-30 | 2008-10-17 |  |  |
| 1705 | Design Enabled | 2.86d? | 2008-09-30 | 2008-10-06 | 1703 | Vishal [70%] |
| 1706 | Implement Enabled | 2.86d? | 2008-10-06 | 2008-10-08 | 1705 | Vishal [70%] |
| 1707 | Test Enabled | 5.71d? | 2008-10-08 | 2008-10-17 | 1706 | Vishal [70%] |

Removed: 80 Screen Design; 81 Supporting JPEG format; 82 Supporting BMP File format; 84 Design screen; 98 Design screen for showing Error Log/ Review with Jan Ryles; 104 Configure Analyzer Type : FFT; 118 Unit Testing/Code Review; 121 Unit Testing/Code Review; 123 Design Screen; 127 Design Screen; 131 Design Screen; 135 Design Screen; 153 Unit testing and Code Review/ Unit test case review; 159 GUI - Inst Interface; 160 GUI - AML; 162 Design screen for THD configuration; 170 Design screen for THD+n configuration; 178 Design screen for ENOB configuration; 186 Design screen for SNR configuration; 194 Design screen for SFDR configuration; 202 Design screen for SINAD configuration; 210 Design screen for Harmonic Power configuration; 218 Design screen for Side band power configuration; 219 Implement Framework for Temporary Measurement flow; 227 Implement Framework for Temporary Measurement flow; 234 Design screen for band power configuration; 235 Implement Framework for Temporary Measurement flow; 241 Configure Measurements : Frequency dumping; 242 Design screen for Frequency dumping configuration; 243 Implement Framework for Temporary Measurement flow; 321 Design screen for limit line configuration; 328 Design screen for limit line configuration; 338 Screen design/Implemenattion; 342 Screen for System information; 346 Screen design for Hardware information; 353 Design screen for Display License; 354 Design screen for License Activation; 355 Design screen for License De-Activation; 356 Implementing Licensing Framework; 360 Design screen for displaying Software Version; 366 TBD; 381 Charting; 560 Implementation of Trace Management; 563 Measurement Flow management Framework; 564 Design Interface; 565 Review interface design with Team leads; 566 Implementation of Measurement Flow Management; 569 Measurement Flow: Linear spectrum; 570 Design Interface; 571 Review interface design with Team leads; 572 Implementation of Measurement Flow; 575 Measurement Flow: Auto power spectrum; 576 Design Interface; 577 Review interface design with Team leads; 578 Implementation of Measurement Flow; 581 Measurement Flow: Cross power spectrum; 582 Design Interface; 583 Review interface design with Team leads; 584 Implementation of Measurement Flow; 587 Measurement Flow: FRF; 588 Design Interface; 589 Review interface design with Team leads; 590 Implementation of Measurement Flow; 593 Measurement Flow: Coherance; 594 Design Interface; 595 Review interface design with Team leads; 596 Implementation of Measurement Flow; 598 Code Review; 599 Measurement Flow: Normal Variance; 600 Design Interface; 601 Review interface design with Team leads; 602 Implementation of Measurement Flow; 604 Code Review; 605 Measurement : Harmonic Power, THD; 606 Design Interface; 607 Review interface design with Team leads; 608 Implementation of Measurement Flow; 609 Intermediate result; 611 Code Review; 612 Measurement : Side band Power; 613 Design Interface; 614 Review interface design with Team leads; 615 Implementation of Measurement Flow; 616 Intermediate result; 618 Code Review; 619 Measurement : Band Power; 620 Design Interface; 621 Review interface design with Team leads; 622 Implementation of Measurement Flow; 623 Intermediate result; 625 Code Review; 626 Measurement : THD+n ENOB, SNR,SFDR,SINAD; 627 Design Interface; 628 Review interface design with Team leads; 629 Implementation of Measurement Flow; 630 Intermediate result; 632 Code Review; 633 Measurement : Gain & Phase margin; 634 Design Interface; 635 Review interface design with Team leads; 636 Implementation of Measurement Flow; 637 Intermediate result; 638 Unit testing; 639 Code Review; 640 Measurement : Frequency Damping; 641 Design Interface; 642 Review interface design with Team leads; 643 Implementation of Measurement Flow; 644 Unit testing; 645 Code Review; 646 Measurement : delay time, decay time, rise time, pulse width etc; 647 Design Interface; 648 Review interface design with Team leads; 649 Implementation of Measurement Flow; 650 Unit testing; 651 Code Review; 652 Analysis : Complex conjugate; 653 Design Interface; 654 Review interface design with Team leads; 655 Implementation of Measurement Flow; 656 Unit testing; 657 Code Review; 658 Analysis : Limit Lines; 659 Design Interface; 660 Review interface design with Team leads; 661 Implementation of Measurement Flow; 662 Unit testing; 663 Code Review; 664 Analysis : Basic Math; 665 Design Interface; 666 Review interface design with Team leads; 667 Implementation of Measurement Flow; 668 Analysis advance math; 669 Unit testing; 670 Not defined ( Advance math); 671 Code Review; 676 Unit testing; 678 Code Review; 679 Mode Management ( Local/remote); 680 Design interface for configuring AL mode; 683 Unit testing; 684 Code Review; 685 Averaging FFT Types; 686 Design interface/framework; 687 Partial average Result Calculation; 688 reviews with tech leads; 689 Implementation (RMS); 690 Verification (RMS); 691 Unit testing (RMS); 692 Implementation (RMS Exp); 693 Verification (RMS Exp); 694 Unit testing (RMS Exp); 695 Implementation (Time); 696 Verification (Time); 697 Unit testing (Time); 698 Implementation (Time Exp); 699 Verification (Time Exp); 700 Unit testing (Time Exp); 701 Implementation (Peak Hold); 702 Verification (Peak Hold); 703 Unit testing (Peak Hold); 704 Code Review; 705 Averaging : Swept Sine; 706 Design interface/framework; 707 Partial average Result Calculation; 708 reviews with tech leads; 709 Implementation; 710 Verification; 711 Unit testing; 712 Code Review; 713 Averaging : Octave; 714 Design interface/framework; 715 Partial average Result Calculation; 716 reviews with tech leads; 717 Implementation; 718 Verification; 719 Unit testing; 720 Code Review; 723 Review with tech leads; 724 implementation; 725 Unit testing; 726 Code Review; 727 Analyzer mode management: Swept Sine; 728 Design interface/Framework for mode change; 729 Review with tech leads; 730 implementation; 731 Unit testing; 732 Code Review; 733 Analyzer mode management: Octave; 734 Design interface/Framework for mode change; 735 Review with tech leads; 736 implementation; 737 Unit testing; 738 Code Review; 742 Marker measurements; 743 Design Marker support in AML; 744 Review with Tech leads; 745 Implementation : THD; 746 Unit Testing : THD; 747 Implementation : THD + n; 748 Unit Testing : THD+n; 749 Implementation : ENOB; 750 Unit Testing : ENOB; 751 Implementation : SNR; 752 Unit Testing : SNR; 753 Implementation : SFDR; 754 Unit Testing : SFDR; 755 Implementation : SINAD; 756 Unit Testing : SINAD; 757 Implementation : Frequency Damping; 758 Unit Testing : Frequency Damping; 759 Implementation : Decay Time; 760 Unit Testing : Decay Time; 761 Implementation :Rise Time; 762 Unit Testing : Rise Time; 763 Implementation : setting Time; 764 Unit Testing : setting Time; 765 Implementation : Delay Time; 766 Unit Testing : Delay Time; 767 Implementation : Pulse width; 768 Unit Testing : Pulse width; 769 Implementation : Voltage Max; 770 Unit Testing : Voltage Max; 771 Implementation : Voltage Min; 772 Unit Testing : Voltage Min; 788 Auto power; 805 Square; 1126 Square; 1127 Review meas catalog & update; 1128 Review managed & Native interface definitions; 1129 Write code; 1130 Unit test the code; 1131 Verifcation; 1132 Develop the verification code in Matlab; 1133 Define the test input data & pass to ML & MATLAB; 1134 Compare the outputs; 1135 Measure performance & document mesaurements; 1136 Interface definition, code, Nunit , Result & Doc review; 1468 Identify IE needs; 1469 Identify Heroes needs; 1471 Review with IE and Hereos team; 1472 Incorporate review decisions; 1483 Auto power; 1500 Square; 1552 Process to keep development tools in sync on development machines; 1556 Defect tracking system; 1641 Special Display Commands; 1657 Design Legal Settings Logic; 1658 Implement Legal Sttings logic; 1659 Nunit legal settings logic; 1663 Design Run Mode Logic; 1664 Implement Run Mode Logic; 1665 Nunit Run Mode Logic; 1666 Design SCPI Interface logic; 1667 Implement SCPI Interface logic; 1668 Nunit SCPI Interface logic; 1692 Help Version; 1694 Help Organization

Changed:

| ID | Task | Start | Finish | Duration | Complete | Total float | Predecessors | Other |
| --- | --- | --- | --- | --- | --- | --- | --- | --- |
| 1 | **Mirage SW DEV** | 2008-02-04 A | 2009-05-22 → 2009-06-04 (+13d) | 339.14d? → 348.16d? | 0% → 9% |  |  |  |
| 2 | **Phases** | 2008-02-04 → 2008-06-24 (+141d) | 2008-02-04 → 2009-06-03 (+485d) | 1d? → 246.48d? |  | 338.14d → 0.54d | none → 15, 18, 21, 25, 26, 27, 32, 42, 579, 668, 671, 673, 674, 678, 679, 687, 688 |  |
| 3 | Phase 1 (Design and Initial Creation) | 2008-02-04 → 2009-06-02 (+484d) | 2008-02-04 → 2009-06-03 (+485d) |  |  | 338.14d → 0.54d | none → 61, 69, 80, 85, 95, 103, 107, 116, 151, 160, 169, 176, 183, 190, 200, 206, 212, 218, 263, 264, 265, 269, 270, 274, 25, 530, 299, 311, 322, 345, 356, 368, 379, 390, 408, 409, 413, 428, 429, 431, 433, 434, 267, 268, 427, 426, 423, 424, 55 |  |
| 4 | Phase 2 (FFT & THD) | 2008-02-04 → 2009-05-27 (+478d) | 2008-02-04 → 2009-05-28 (+479d) |  |  | 338.14d → 5.15d | none → 90, 98, 111, 124, 132, 140, 148, 435, 224, 231, 238, 245 |  |
| 5 | Phase 3 (Remote/Local/Averaging) | 2008-02-04 → 2008-06-24 (+141d) | 2008-02-04 → 2008-06-25 (+142d) |  |  | 338.14d → 246.01d |  |  |
| 6 | Phase 4 (Partial FFT Mode Simualte IE) | 2008-02-04 → 2008-06-24 (+141d) | 2008-02-04 → 2008-06-25 (+142d) |  |  | 338.14d → 246.01d |  |  |
| 7 | Phase 5 (Full FFT w/o System & Analysis, Green screen with HW) | 2008-02-04 → 2008-06-24 (+141d) | 2008-02-04 → 2008-06-25 (+142d) |  |  | 338.14d → 246.01d |  |  |
| 8 | Phase 6 (Full Stepped Sin Mode with System Hardkey) | 2008-02-04 → 2008-06-24 (+141d) | 2008-02-04 → 2008-06-25 (+142d) |  |  | 338.14d → 246.01d |  |  |
| 9 | Phase 7 (Full Octave with Analysis Hardkey) | 2008-02-04 → 2008-06-24 (+141d) | 2008-02-04 → 2008-06-25 (+142d) |  |  | 338.14d → 246.01d |  |  |
| 10 | Phase 8 (Learning Products) | 2008-02-04 → 2008-06-24 (+141d) | 2008-02-04 → 2008-06-25 (+142d) |  |  | 338.14d → 246.01d |  |  |
| 11 | Phase 9 HQ | 2008-02-04 → 2008-06-24 (+141d) | 2008-02-04 → 2008-06-25 (+142d) |  |  | 338.14d → 246.01d |  |  |
| 12 | Phase 10 SQ | 2008-02-04 → 2008-06-24 (+141d) | 2008-02-04 → 2008-06-25 (+142d) |  |  | 338.14d → 246.01d |  |  |
| 13 | Phase 11 Ship | 2008-02-04 → 2008-06-24 (+141d) | 2008-02-04 → 2008-06-25 (+142d) |  |  | 338.14d → 246.01d |  |  |
| 14 | **Process Infrastructure** | 2008-02-04 A | 2009-03-18 → 2008-07-25 (-236d) | 292d? → 125d? | 0% → 58% | 35d → 222.16d |  |  |
| 15 | **SCM ( Source management)** | 2008-04-17 → 2008-02-04 A (-73d) | 2008-04-25 → 2008-02-08 A (-77d) | 5.29d? → 4.29d? | 0% → 100% | 48.14d → none |  |  |
| 16 | Defining the Folder heriarchy for source code | 2008-04-17 → 2008-02-04 A (-73d) | 2008-04-22 → 2008-02-05 A (-77d) |  | 0% → 100% | 48.14d → none |  | constraint start no earlier than 2008-02-04 → none |
| 17 | TFS Set up ( Server & Client set up) | 2008-04-22 → 2008-02-05 A (-77d) | 2008-04-25 → 2008-02-08 A (-77d) |  | 0% → 100% | 48.14d → none |  |  |
| 18 | **Development guidelines** | 2008-02-04 → 2008-02-08 A (+4d) | 2008-02-07 → 2008-02-14 A (+7d) | 4d? → 3.86d? | 0% → 100% | 35d → none |  |  |
| 19 | Coding standard ( C++, C#) | 2008-02-04 → 2008-02-08 A (+4d) | 2008-02-05 → 2008-02-12 A (+7d) | 2d? → 1.43d? | 0% → 100% | 35d → none | none → 17 | resources Mike [50%] → RKB [70%] |
| 20 | Code Review , Unit Test case review guidelines | 2008-02-06 → 2008-02-12 A (+6d) | 2008-02-07 → 2008-02-14 A (+7d) | 2d? → 1.43d? | 0% → 100% | 35d → none |  | resources Mike [50%] → RKB [70%] |
| 21 | **Skelton projects for each components** | 2008-04-25 → 2008-02-08 A (-77d) | 2009-03-18 → 2008-02-14 A (-398d) | 233d → 3.86d | 0% → 100% | 47.14d → none |  |  |
| 22 | GUI, AML, ML | 2008-04-25 → 2008-02-08 A (-77d) | 2009-03-11 → 2008-02-12 A (-393d) |  | 0% → 100% | 47.14d → none |  |  |
| 23 | Instrument interface, AI | 2009-03-16 → 2008-02-12 A (-398d) | 2009-03-18 → 2008-02-14 A (-398d) |  | 0% → 100% | 47.14d → none |  |  |
| 24 | **Platform Builder Image** | 2008-02-07 A | 2008-02-27 → 2008-07-25 (+149d) | 13.86d? → 121.14d? | 0% → 26% | 72.28d → 222.16d |  |  |
| 25 | Identifying the components which are to be added | 2008-02-07 A |  |  | 0% → 70% | 72.28d → 337.3d |  |  |
| 26 | Creating NK.bin | 2008-02-13 A |  |  | 0% → 50% | 72.28d → 336.59d |  |  |
| 28 | Automation: Pushing this Image in the box | 2008-02-18 → 2008-07-16 (+149d) | 2008-02-21 → 2008-07-18 (+148d) |  |  | 72.28d → 59.14d | 27 → 60 |  |
| 29 | Auto Installation of this Image in the box | 2008-02-21 → 2008-07-21 (+151d) | 2008-02-26 → 2008-07-24 (+149d) |  |  | 72.28d → 60.57d |  |  |
| 30 | Integrating it with Trace Control & Registry settings | 2008-02-26 → 2008-07-24 A (+149d) | 2008-02-27 → 2008-07-25 (+149d) |  | 0% → 40% | 72.28d → 60d |  |  |
| 31 | **Front Panel Tasks** | 2008-02-04 A | 2009-04-01 → 2009-06-04 (+64d) | 302.01d? → 348.16d? | 0% → 6% | 37.13d → 0d |  |  |
| 32 | **Define interface IGUIHardKey** | 2008-02-04 → 2008-02-14 A (+10d) | 2008-02-18 → 2008-06-11 (+114d) | 10.23d? → 84.43d? | 0% → 33% | 46.83d → 254.59d |  |  |
| 33 | Design, Review & Update | 2008-02-04 → 2008-02-14 A (+10d) | 2008-02-07 → 2008-02-18 A (+11d) | 3.08d? → 2.86d? | 0% → 100% | 46.83d → none | none → 23 | resources Pallavi [65%] → RKB [70%] |
| 34 | Implementation | 2008-02-07 → 2008-02-20 (+13d) | 2008-02-18 → 2008-06-11 (+114d) | 6.15d? → 5.71d? |  | 46.83d → 254.59d | 33 → 581 | resources Pallavi [65%] → Himanshu [70%] |
| 35 | **FP Events Flow Mechanism** | 2008-02-18 A | 2008-03-12 A | 17.69d? → 16.7d? | 0% → 100% | 47.83d → none |  |  |
| 36 | Define all FP events | 2008-02-18 A | 2008-02-21 A | 3.08d? → 2.86d? | 0% → 100% | 47.83d → none | 34 → 33 | resources Pallavi [65%] → RKB [70%] |
| 37 | Implement EventProcessor | 2008-02-21 A | 2008-02-26 A |  | 0% → 100% | 47.83d → none |  |  |
| 38 | Implement Event Dispatcher | 2008-02-26 A | 2008-02-29 → 2008-03-03 A (+3d) |  | 0% → 100% | 48.83d → none |  |  |
| 39 | Implement Basic Event Target | 2008-02-29 → 2008-03-03 A (+3d) | 2008-03-05 → 2008-03-06 A (+1d) |  | 0% → 100% | 48.83d → none |  |  |
| 40 | Implement change in Target Priority | 2008-03-05 → 2008-03-06 A (+1d) | 2008-03-10 → 2008-03-11 A (+1d) |  | 0% → 100% | 48.83d → none |  |  |
| 41 | Code Review | 2008-03-10 → 2008-03-11 A (+1d) | 2008-03-12 A | 2.31d → 1.54d | 0% → 100% | 48.83d → none |  |  |
| 42 | **Error & Debug Information** | 2008-02-04 → 2008-02-18 A (+14d) | 2008-02-20 → 2008-06-24 (+125d) | 12.43d? → 90.57d? | 0% → 94% | 52d → 246.01d |  |  |
| 43 | Design/Define common interface for Accessing Error Log system | 2008-02-04 → 2008-02-18 A (+14d) | 2008-02-06 → 2008-02-21 A (+15d) |  | 0% → 100% | 52d → none | none → 27 | resources RKB [70%] → Anurag [70%] |
| 44 | Implement Common Error Log system | 2008-02-06 → 2008-06-11 A (+126d) | 2008-02-15 → 2008-06-19 A (+125d) |  | 0% → 100% | 52d → none | 43 → 34 | resources RKB [70%] → Himanshu [70%] |
| 45 | Unit Testing & Code Review | 2008-02-15 → 2008-06-19 A (+125d) | 2008-02-20 → 2008-06-24 (+125d) |  | 0% → 75% | 52d → 246.01d |  | resources RKB [70%] → Himanshu [70%] |
| 46 | **Define interface for All Major Component** | 2008-02-04 → 2008-02-21 A (+17d) | 2008-03-05 → 2008-07-17 (+134d) | 22.43d? → 104.42d? | 0% → 78% | 65.43d → 229.88d |  |  |
| 47 | AML Interface | 2008-02-20 → 2008-02-21 A (+1d) | 2008-02-27 → 2008-02-28 A (+1d) |  | 0% → 100% | 53d → none | 45 → 36 |  |
| 48 | Instrument Interface | 2008-02-04 → 2008-03-10 A (+35d) | 2008-02-12 → 2008-03-18 A (+35d) |  | 0% → 100% | 100.4d → none |  |  |
| 49 | AutoMation interface | 2008-02-12 → 2008-03-18 A (+35d) | 2008-02-20 → 2008-03-27 A (+36d) |  | 0% → 100% | 100.4d → none |  |  |
| 50 | File Formatting Component | 2008-02-27 → 2008-03-05 (+7d) | 2008-03-05 → 2008-07-17 (+134d) |  |  | 53d → 229.88d |  |  |
| 51 | **Start/Shut down activity** | 2008-02-27 → 2008-02-21 A (-6d) | 2008-03-12 → 2008-07-03 (+113d) | 10d? → 94.86d? | 0% → 93% | 72.28d → 58.14d |  |  |
| 52 | Design Start/Shut down framework | 2008-02-27 → 2008-02-21 A (-6d) | 2008-03-03 → 2008-02-26 A (-6d) |  | 0% → 100% | 72.28d → none | 30 → 43 |  |
| 53 | Implementation & Unit testing | 2008-03-03 → 2008-06-24 A (+113d) | 2008-03-11 → 2008-07-01 A (+112d) |  | 0% → 100% | 72.28d → none | 52 → 45 |  |
| 54 | Code Review/ Unit test case review/Design screen/ Screen usability reviews with Jan Ryles | 2008-03-11 → 2008-07-01 A (+112d) | 2008-03-12 → 2008-07-03 (+113d) |  | 0% → 50% | 72.28d → 58.14d |  |  |
| 55 | **Splash Screen** | 2008-03-12 → 2008-02-26 (-15d) | 2008-03-31 → 2008-07-15 (+106d) | 12.43d? → 100.57d? |  | 71.28d → 150.14d |  |  |
| 56 | Design framework & splash screen, Review with Jan Ryles | 2008-03-12 → 2008-02-26 (-15d) | 2008-03-17 → 2008-02-29 (-17d) |  |  | 72.28d → 328.01d | 54 → 52 |  |
| 57 | Implement Framework | 2008-03-17 → 2008-07-03 (+108d) | 2008-03-20 → 2008-07-08 (+110d) |  |  | 72.28d → 58.14d | 56 → 54 | resources Anurag [70%] → Himanshu [70%] |
| 58 | Incorporate the Intilization Events to show progress | 2008-03-20 → 2008-07-08 (+110d) | 2008-03-24 → 2008-07-09 (+107d) |  |  | 71.28d → 58.14d |  | resources Anurag [70%] → Himanshu [70%] |
| 59 | Integrate splash screen with Start Shut down activity | 2008-03-24 → 2008-07-09 (+107d) | 2008-03-26 → 2008-07-11 (+107d) |  |  | 71.28d → 58.14d |  | resources Anurag [70%] → Himanshu [70%] |
| 60 | Unit test case,Design review/Code review | 2008-03-26 → 2008-07-11 (+107d) | 2008-03-31 → 2008-07-15 (+106d) |  |  | 71.28d → 58.14d |  | resources Anurag [70%] → Himanshu [70%] |
| 61 | **Display layout Management** | 2008-03-12 → 2008-02-28 A (-13d) | 2008-04-08 → 2009-06-02 (+420d) | 18.69d? → 327.76d? | 0% → 6% | 47.83d → 0.54d |  |  |
| 62 | Design Display Layout | 2008-03-12 → 2008-02-28 A (-13d) | 2008-03-17 → 2008-03-05 (-12d) | 2.31d? → 4d? | 0% → 30% | 48.83d → 0.3d | 41 → 47 | resources Pallavi [65%] → RKB [50%] |
| 63 | Change Active Display | 2008-03-17 → 2008-03-05 (-12d) | 2008-03-20 → 2008-03-10 (-10d) |  |  | 48.83d → 0.3d |  | resources Pallavi [65%] → 1ETW [65%] |
| 64 | Configure Layout/Number of Display | 2008-03-20 → 2008-03-10 (-10d) | 2008-03-27 → 2008-03-17 (-10d) |  |  | 47.83d → 0.3d |  | resources Pallavi [65%] → 1ETW [65%] |
| 65 | Display Traversing | 2008-03-27 → 2008-03-17 (-10d) | 2008-04-01 → 2008-03-20 (-12d) |  |  | 47.83d → 0.3d |  | resources Pallavi [65%] → 1ETW [65%] |
| 66 | Show/Hide Status & Softkey bar | 2008-04-01 → 2008-03-20 (-12d) | 2008-04-03 → 2008-03-25 (-9d) |  |  | 47.83d → 0.3d |  | resources Pallavi [65%] → 1ETW [65%] |
| 67 | Full screen Graph Mode | 2008-04-03 → 2008-03-25 (-9d) | 2008-04-07 → 2008-03-26 (-12d) |  |  | 47.83d → 0.3d |  | resources Pallavi [65%] → 1ETW [65%] |
| 68 | Code Review | 2008-04-07 → 2009-06-01 (+420d) | 2008-04-08 → 2009-06-02 (+420d) |  |  | 47.83d → 0.54d |  | resources Pallavi [65%] → 1ETW [65%] |
| 69 | **XML Based Menu Tree Framework** | 2008-03-05 → 2008-02-04 A (-30d) | 2008-04-02 → 2008-04-04 (+2d) | 20.29d? → 44.86d? | 0% → 15% | 52d → 302.3d |  |  |
| 70 | Design XML schema | 2008-03-05 A | 2008-03-07 A |  | 0% → 100% | 53d → none | 50 → 62 |  |
| 71 | Desgin SoftKey handling Framework | 2008-03-07 A | 2008-03-11 → 2008-03-12 (+1d) |  | 0% → 50% | 53d → 8.64d |  |  |

| ID | Task | Start | Finish | Duration | Total float | Predecessors | Other |
| --- | --- | --- | --- | --- | --- | --- | --- |
| 72 | Populate Softkey handler memory objects from XML File | 2008-03-11 → 2008-03-12 (+1d) | 2008-03-13 → 2008-03-17 (+4d) | 2.14d? → 2.31d? | 53d → 47.1d | 71 → 71, 41 | resources RKB [70%] → Pallavi [65%] |
| 73 | Implement Softkey ( 4/7 ) More key Traversing mechansim | 2008-03-13 → 2008-03-17 (+4d) | 2008-03-18 → 2008-03-19 (+1d) | 2.14d? → 2.31d? | 53d → 47.1d |  | resources RKB [70%] → Pallavi [65%] |
| 74 | Implement Back Key functionality | 2008-03-18 → 2008-03-19 (+1d) | 2008-03-20 → 2008-03-24 (+4d) | 2.14d? → 2.31d? | 53d → 46.1d |  | resources RKB [70%] → Pallavi [65%] |
| 75 | Implement Combo Box based Selection Mechansim | 2008-03-20 → 2008-03-24 (+4d) | 2008-03-25 → 2008-03-26 (+1d) | 2.14d? → 2.31d? | 52d → 46.1d |  | resources RKB [70%] → Pallavi [65%] |
| 76 | Implement bi-value based selection ( Show/Hide, AC/DC etc) | 2008-03-25 → 2008-03-26 (+1d) | 2008-03-27 → 2008-03-31 (+4d) | 2.14d? → 2.31d? | 52d → 46.1d |  | resources RKB [70%] → Pallavi [65%] |
| 77 | Unit test case for validating Menu State & Code review | 2008-03-27 → 2008-03-31 (+4d) | 2008-04-01 → 2008-04-03 (+2d) | 2.86d? → 3.08d? | 52d → 46.1d |  | resources RKB [70%] → Pallavi [65%] |
| 78 | Lighten the respected Hard key's | 2008-04-01 → 2008-04-03 (+2d) | 2008-04-02 → 2008-04-04 (+2d) | 1.43d? → 1.54d? | 52d → 46.1d |  | resources RKB [70%] → Pallavi [65%] |
| 79 | Code Review | 2008-11-10 → 2008-02-04 (-280d) | 2008-11-11 → 2008-02-05 (-280d) | 0.71d? → 1.54d | 51d → 345.62d | 248 → none | resources RKB [70%] → Pallavi [65%] |
| 80 | **Screen Header Panel** | 2008-08-14 → 2008-03-12 (-155d) | 2008-08-29 → 2009-06-01 (+276d) | 11.77d? → 317.94d? | 40.13d → 2.08d |  |  |
| 81 | Design screen header layouts/ Class/ Exposed function | 2008-08-14 → 2008-03-12 (-155d) | 2008-08-20 → 2008-03-18 (-155d) | 3.08d? → 4d? | 40.13d → 8.64d | 84 → 71 | resources 1ETW [65%] → RKB [50%] |
| 82 | Implementation | 2008-08-20 → 2008-03-26 (-147d) | 2008-08-26 → 2008-04-02 (-146d) |  | 40.13d → 2.08d | 81 → 81, 67 |  |
| 83 | Unit test case | 2008-08-11 → 2008-04-02 (-131d) | 2008-08-12 → 2008-04-03 (-131d) |  | 40.13d → 2.08d | 87 → 82 |  |
| 84 | Code reviews/unit test case reviews | 2008-08-12 → 2009-05-28 (+289d) | 2008-08-14 → 2009-06-01 (+291d) |  | 40.13d → 2.08d |  |  |
| 85 | **Status Panel** | 2008-07-31 → 2008-03-18 (-135d) | 2008-08-14 → 2009-05-28 (+287d) | 9.23d? → 312.4d? | 39.13d → 3.62d |  |  |
| 86 | Design Status Panel layout/ Exposed classes/ Functions | 2008-07-31 → 2008-03-18 (-135d) | 2008-08-05 → 2008-03-25 (-133d) | 3.08d? → 4d? | 39.13d → 9.41d | 451 → 81 | resources 1ETW [65%] → RKB [50%] |
| 87 | Implementation of status panel | 2008-08-05 → 2008-04-03 (-124d) | 2008-08-11 → 2008-04-08 (-125d) |  | 39.13d → 2.53d | 86 → 86, 83 |  |
| 88 | Unit test case | 2008-08-26 → 2008-04-08 (-140d) | 2008-08-28 → 2008-04-10 (-140d) |  | 40.13d → 2.53d | 82 → 87 |  |
| 89 | Code reviews/unit test case reviews | 2008-08-28 → 2009-05-27 (+272d) | 2008-08-29 → 2009-05-28 (+272d) |  | 40.13d → 3.62d |  |  |
| 92 | Implementation | 2008-09-04 → 2008-04-10 (-147d) | 2008-09-11 → 2008-04-17 (-147d) | 4.62d? → 3.85d? | 40.13d → 6.14d | Design screen for showing Error Log/ Review with Jan Ryles → 91, 88 |  |
| 94 | Code Review | 2008-11-26 → 2009-05-25 (+180d) | 2008-11-27 → 2009-05-27 (+181d) | 0.71d? → 1.54d? | 51d → 5.15d | 502 → 93 | resources RKB [70%] → 1ETW [65%] |
| 95 | **Module Integration** | 2008-05-20 → 2008-03-27 (-54d) | 2008-05-28 → 2008-04-08 (-50d) | 5.71d? → 8d? | 49d → 9.41d |  |  |
| 98 | **Configure Analyzer Frequency** | 2008-03-31 → 2008-04-08 (+8d) | 2008-04-07 → 2009-02-19 (+318d) | 5.71d? → 227.4d? | 71.28d → 11.41d |  |  |
| 100 | Implementation | 2008-04-02 → 2008-04-10 (+8d) | 2008-04-08 → 2008-04-17 (+9d) | 3.57d? → 4.62d? | 52d → 41.82d | 78 → 99, 78 | resources RKB [70%] → Pallavi [65%] |
| 102 | Code reviews/unit test case reviews | 2008-09-26 → 2008-06-02 (-116d) | 2008-09-29 → 2009-02-19 (+143d) |  | 40.13d → 73.61d | 201 → 101 | resources 1ETW [65%] → Pallavi [65%] |
| 103 | **Configure Triggering : Free Run** | 2008-09-29 → 2008-04-10 (-172d) | 2008-10-10 → 2009-05-25 (+227d) | 8.15d? → 292.32d? | 38.13d → 6.69d |  |  |
| 105 | Implementation | 2008-04-09 → 2008-04-21 (+12d) | 2008-04-16 → 2008-04-24 (+8d) | 3.57d? → 3.08d? | 51d → 5.69d | 205 → 104, 93 | resources RKB [70%] → 1ETW [65%] |
| 106 | Code/unit test Review | 2008-10-07 → 2009-05-21 (+226d) | 2008-10-10 → 2009-05-25 (+227d) |  | 38.13d → 6.69d | 339 → 105 |  |
| 107 | **Configure ARM : Automatic** | 2008-11-10 → 2008-04-15 (-209d) | 2008-11-14 → 2009-05-21 (+188d) | 4.62d? → 287.78d? | 39.13d → 8.23d |  |  |
| 109 | Implementation | 2008-04-17 → 2008-04-24 (+7d) | 2008-04-24 → 2008-04-30 (+6d) | 3.57d? → 3.08d? | 50d → 8.36d | 336 → 105, 108 | resources Anurag [70%] → 1ETW [65%] |
| 110 | Code/unit test Review | 2008-10-20 → 2009-05-20 (+212d) | 2008-10-21 → 2009-05-21 (+212d) |  | 39.13d → 8.23d | 343 → 109 |  |
| 111 | **Start/Pause/Run** | 2008-04-25 → 2008-04-16 (-9d) | 2008-05-09 → 2008-05-28 (+19d) | 9.57d? → 30.4d? | 49d → 13.48d |  |  |
| 112 | Design the framework | 2008-04-25 → 2008-04-16 (-9d) | 2008-04-29 → 2008-04-22 (-7d) | 2.14d? → 3d? | 50d → 12.48d | 475, 360 → 108 | resources RKB [70%] → RKB [50%] |
| 113 | Implementation of Run Behaviour | 2008-04-29 → 2008-04-22 (-7d) | 2008-05-05 → 2008-04-25 (-10d) | 2.86d? → 3.08d? | 49d → 40.82d | 112 → 112, 101 | resources RKB [70%] → Pallavi [65%] |
| 114 | Unit testing | 2008-07-10 → 2008-04-25 (-76d) | 2008-07-14 → 2008-04-29 (-76d) | 2.14d? → 2.31d? | 51d → 40.82d | 247 → 113 | resources RKB [70%] → Pallavi [65%] |
| 115 | Code Review/ Unit test case review | 2008-05-07 → 2008-05-27 (+20d) | 2008-05-09 → 2008-05-28 (+19d) | 1.43d → 1.54d | 49d → 264.62d | Unit testing and Code Review/ Unit test case review → 114 | resources RKB [70%] → Pallavi [65%] |
| 116 | **Configure Measurements: THD** | 2008-05-28 → 2008-04-22 (-36d) | 2008-06-23 → 2009-05-19 (+330d) | 17.86d? → 280.4d? | 49d → 10.62d |  |  |
| 119 | Implement screen ( With Live Chart) | 2008-06-04 → 2008-05-05 (-30d) | 2008-06-10 → 2008-05-08 (-33d) | 3.57d? → 3.85d? | 49d → 11.48d | 208 → 118, 109 | resources RKB [70%] → 1ETW [65%] |
| 120 | Hooks the value change on screen with Temporary Measurement flow | 2008-06-10 → 2008-05-08 (-33d) | 2008-06-12 → 2008-05-13 (-30d) | 2.14d? → 2.31d? | 50d → 11.48d |  | resources RKB [70%] → 1ETW [65%] |
| 121 | Display THD Measurement Value on Status bar | 2008-06-12 → 2008-05-13 (-30d) | 2008-06-16 → 2008-05-15 (-32d) | 2.14d? → 2.31d? | 50d → 11.48d |  | resources RKB [70%] → 1ETW [65%] |
| 122 | Unit test case | 2008-06-16 → 2008-05-15 (-32d) | 2008-06-19 → 2008-05-20 (-30d) | 2.86d? → 3.08d? | 50d → 11.48d |  | resources RKB [70%] → 1ETW [65%] |
| 123 | Code Review/ Unit test case review/Design screen/ Screen usability reviews with Jan Ryles | 2008-06-19 → 2009-05-18 (+333d) | 2008-06-23 → 2009-05-19 (+330d) | 1.43d → 1.54d | 50d → 10.62d |  | resources RKB [70%] → 1ETW [65%] |
| 124 | **Configure Measurements : Harmonic Power Value** | 2008-07-04 → 2008-04-29 (-66d) | 2008-07-22 → 2008-05-28 (-55d) | 11.54d? → 20.36d? | 46.83d → 40.82d |  |  |
| 127 | Implement screen ( With Live Chart) | 2008-04-16 → 2008-05-06 (+20d) | 2008-04-17 → 2008-05-08 (+21d) |  | 46.83d → 39.82d | 216 → 126, 109 |  |
| 128 | Hooks the value change on screen with Temporary Measurement flow | 2008-04-17 → 2008-05-08 (+21d) | 2008-04-22 → 2008-05-09 (+17d) |  | 45.83d → 39.82d |  |  |
| 129 | Display Harmonic power value Measurement Value on Status bar | 2008-07-15 → 2008-05-09 (-67d) | 2008-07-17 → 2008-05-13 (-65d) |  | 46.83d → 39.82d | 226 → 128 |  |
| 130 | Unit test case | 2008-04-24 → 2008-05-13 (+19d) | 2008-04-28 → 2008-05-14 (+16d) |  | 45.83d → 39.82d | 211 → 129 |  |
| 131 | Code Review/ Unit test case review/Design screen/ Screen usability reviews with Jan Ryles | 2008-04-28 → 2008-05-26 (+28d) | 2008-04-29 → 2008-05-28 (+29d) |  | 45.83d → 265.12d |  |  |
| 132 | **Configure Measurements : Side band power** | 2008-07-22 → 2008-05-05 (-78d) | 2008-08-06 → 2008-05-26 (-72d) | 11.54d? → 15.23d? | 46.83d → 14.69d |  |  |
| 135 | Implement screen ( With Live Chart) | 2008-05-06 → 2008-05-14 (+8d) | 2008-05-08 → 2008-05-16 (+8d) |  | 44.83d → 39.82d | 224 → 134, 130 |  |
| 136 | Hooks the value change on screen with Temporary Measurement flow | 2008-05-08 → 2008-05-16 (+8d) | 2008-05-09 → 2008-05-19 (+10d) |  | 44.83d → 39.82d |  |  |
| 137 | Display side band power Measurement Value on Status bar | 2008-07-31 → 2008-05-19 (-73d) | 2008-08-01 → 2008-05-21 (-72d) |  | 47.83d → 39.82d | 234 → 136 |  |
| 138 | Unit test case | 2008-05-13 → 2008-05-21 (+8d) | 2008-05-15 → 2008-05-22 (+7d) |  | 44.83d → 39.82d | 243 → 137 |  |
| 139 | Code Review/ Unit test case review/Design screen/ Screen usability reviews with Jan Ryles | 2008-05-15 → 2008-05-22 (+7d) | 2008-05-19 → 2008-05-26 (+7d) |  | 44.83d → 266.78d |  |  |
| 140 | **Configure Measurements : Band power value** | 2008-08-06 → 2008-05-12 (-86d) | 2008-08-25 → 2009-05-15 (+263d) | 12.54d? → 263.9d? | 48.83d → 13.12d |  |  |
| 143 | Implement screen ( With Live Chart) | 2008-05-22 → 2008-05-20 (-2d) | 2008-05-26 → 2008-05-22 (-4d) |  | 44.83d → 13.15d | 232 → 142, 122 | resources Pallavi [65%] → 1ETW [65%] |
| 144 | Hooks the value change on screen with Temporary Measurement flow | 2008-05-26 → 2008-05-22 (-4d) | 2008-05-27 → 2008-05-23 (-4d) |  | 44.83d → 13.15d |  | resources Pallavi [65%] → 1ETW [65%] |
| 145 | Display band power Measurement Value on Status bar | 2008-08-18 → 2008-05-23 (-87d) | 2008-08-20 → 2008-05-27 (-85d) |  | 47.83d → 13.15d | 242 → 144 | resources Pallavi [65%] → 1ETW [65%] |
| 146 | Unit test case | 2008-05-29 → 2008-05-27 (-2d) | 2008-06-02 → 2008-05-28 (-5d) |  | 44.83d → 13.15d | 219 → 145 | resources Pallavi [65%] → 1ETW [65%] |
| 147 | Code Review/ Unit test case review/Design screen/ Screen usability reviews with Jan Ryles | 2008-06-02 → 2009-05-13 (+345d) | 2008-06-03 → 2009-05-15 (+346d) |  | 44.83d → 13.12d |  | resources Pallavi [65%] → 1ETW [65%] |
| 148 | **File Service** | 2008-08-11 → 2008-05-19 (-84d) | 2008-08-18 → 2008-05-26 (-84d) | 4.57d? → 5d? | 53d → 16.64d |  |  |
| 149 | Define File/Directory structure hierarchy | 2008-08-11 → 2008-05-19 (-84d) | 2008-08-14 → 2008-05-23 (-83d) | 2.86d? → 4d? | 53d → 16.64d | 497 → 142 | resources RKB [70%] → RKB [50%] |
| 150 | Review with team | 2008-08-14 → 2008-05-23 (-83d) | 2008-08-18 → 2008-05-26 (-84d) | 0.71d? → 1d? | 53d → 16.64d |  | resources RKB [70%] → RKB [50%] |
| 151 | **Linear spectrum Chart** | 2008-06-30 → 2008-08-05 (+36d) | 2008-07-25 → 2009-03-13 (+231d) | 18.57d? → 158.14d? | 71.28d → 58.01d |  |  |
| 152 | Implement Chart View Object | 2008-06-30 → 2008-08-05 (+36d) | 2008-07-04 → 2008-08-08 (+35d) |  | 71.28d → 59.43d | 558 → 30 |  |
| 153 | Support multiple X-Axis Type ( Lin, Log) | 2008-07-04 → 2008-08-12 (+39d) | 2008-07-09 → 2008-08-18 (+40d) |  | 72.28d → 59.43d |  |  |
| 154 | Support multiple Data point units | 2008-07-09 → 2008-08-22 (+44d) | 2008-07-10 → 2008-08-26 (+47d) |  | 72.28d → 58.86d |  |  |
| 155 | Y-Axis Scaling ( Auto Sclaing) Display only | 2008-07-10 → 2008-08-29 (+50d) | 2008-07-14 → 2008-09-01 (+49d) |  | 72.28d → 56.84d |  |  |
| 156 | Multiple channels support | 2008-07-14 → 2008-09-04 (+52d) | 2008-07-17 → 2008-09-08 (+53d) |  | 72.28d → 56.41d |  |  |
| 157 | Integrate with data push mechnaism | 2008-07-17 → 2008-09-10 (+55d) | 2008-07-18 → 2008-09-11 (+55d) |  | 72.28d → 56.57d |  |  |
| 158 | unit testing | 2008-07-18 → 2008-09-15 (+59d) | 2008-07-23 → 2008-09-18 (+57d) |  | 73.28d → 57.57d |  |  |

| ID | Task | Start | Finish | Duration | Total float | Predecessors | Other |
| --- | --- | --- | --- | --- | --- | --- | --- |
| 159 | Code Review/ Unit test case review/Design screen/ Screen usability reviews with Jan Ryles | 2008-06-17 → 2009-03-10 (+266d) | 2008-06-19 → 2009-03-13 (+267d) | 1.54d → 2.14d | 45.83d → 58.01d | 174 → 158 | resources Pallavi [65%] → Anurag [70%] |
| 160 | **Common Graph Cordinate implementation** | 2008-10-23 → 2008-09-18 (-35d) | 2008-11-10 → 2009-03-10 (+120d) | 12.43d? → 123d? | 70.28d → 60.14d |  |  |
| 161 | Linear Magnitude | 2008-10-23 → 2008-09-18 (-35d) | 2008-10-24 → 2008-09-19 (-35d) |  | 71.28d → 60.14d | 306 → 158 |  |
| 162 | Log Magnitude | 2008-10-24 → 2008-09-29 (-25d) | 2008-10-29 → 2008-09-30 (-29d) |  | 70.28d → 60.41d |  |  |
| 163 | DB Magnitude | 2008-10-29 → 2008-10-01 (-28d) | 2008-10-30 → 2008-10-03 (-27d) |  | 70.28d → 60.29d |  |  |
| 164 | Real Imagainary | 2008-10-30 → 2008-10-07 (-23d) | 2008-11-03 → 2008-10-08 (-26d) |  | 70.28d → 62.43d |  |  |
| 165 | Phase, UnWrapped Phase | 2008-11-03 → 2008-10-10 (-24d) | 2008-11-04 → 2008-10-13 (-22d) |  | 70.28d → 61.71d |  |  |
| 166 | Group Delay | 2008-11-04 → 2008-10-14 (-21d) | 2008-11-06 → 2008-10-16 (-21d) |  | 70.28d → 61.71d |  |  |
| 167 | Polar | 2008-11-06 → 2008-10-17 (-20d) | 2008-11-07 → 2008-10-21 (-17d) |  | 70.28d → 61.16d |  |  |
| 168 | Code Review/ Unit test case review/Design screen/ Screen usability reviews with Jan Ryles | 2008-07-03 → 2009-03-09 (+249d) | 2008-07-04 → 2009-03-10 (+249d) | 1.54d → 1.43d? | 46.83d → 60.73d | 181 → 167 | resources Pallavi [65%] → Anurag [70%] |
| 169 | **Nyquist Chart** | 2008-12-26 → 2008-10-22 (-65d) | 2009-01-07 → 2009-03-09 (+61d) | 7.69d? → 98d? | 44.83d → 61.59d |  |  |
| 170 | Implement Chart View Object | 2008-07-25 → 2008-10-22 (+89d) | 2008-07-29 → 2008-10-23 (+86d) | 2.14d? → 1.43d? | 73.28d → 65d | 237 → 167 |  |
| 171 | Support multiple X-Axis Type ( Lin, Log) & Y-Axis scaling | 2008-07-29 → 2008-10-27 (+90d) | 2008-07-31 → 2008-10-29 (+90d) |  | 73.28d → 64.14d |  |  |
| 172 | Support multiple Data point units | 2008-08-14 → 2008-10-31 (+78d) | 2008-08-19 → 2008-11-03 (+76d) |  | 72.28d → 64.29d | 257 → 171 |  |
| 173 | Multiple channels support\Marker support | 2008-09-05 → 2008-11-05 (+61d) | 2008-09-08 → 2008-11-05 (+58d) | 1.43d? → 0.71d? | 72.28d → 63.14d | 179 → 172 |  |
| 174 | Unit test case | 2008-06-16 → 2008-11-07 (+144d) | 2008-06-17 → 2008-11-10 (+146d) | 1.54d? → 1.43d? | 45.83d → 63.59d | 227 → 173 | resources Pallavi [65%] → Anurag [70%] |
| 175 | Code Review/ Unit test case review/Design screen/ Screen usability reviews with Jan Ryles | 2008-07-18 → 2009-03-06 (+231d) | 2008-07-22 → 2009-03-09 (+230d) | 1.54d → 0.71d? | 46.83d → 61.59d | 188 → 174 | resources Pallavi [65%] → Anurag [70%] |
| 176 | **Nichols chart** | 2009-01-07 → 2008-11-12 (-56d) | 2009-01-16 → 2009-03-06 (+49d) | 7.69d? → 82.71d? | 44.83d → 62.3d |  |  |
| 177 | Implement Chart View Object | 2008-08-05 → 2008-11-12 (+99d) | 2008-08-13 → 2008-11-13 (+92d) | 5.71d? → 1.43d? | 73.28d → 64.41d | 245 → 174 |  |
| 178 | Support multiple X-Axis Type ( Lin, Log) & Y-Axis scaling | 2008-09-02 → 2008-11-14 (+73d) | 2008-09-04 → 2008-11-17 (+74d) | 0.71d? → 1.43d? | 72.28d → 64.29d | 184 → 177 |  |
| 179 | Support multiple Data point units | 2008-09-04 → 2008-11-19 (+76d) | 2008-09-05 → 2008-11-19 (+75d) |  | 72.28d → 62.86d |  |  |
| 180 | Multiple channels support\Marker support | 2008-09-15 → 2008-11-21 (+67d) | 2008-09-16 → 2008-11-24 (+69d) | 0.71d? → 1.43d? | 73.28d → 62.86d | 258 → 179 |  |
| 181 | Unit test case | 2008-07-01 → 2008-11-24 (+146d) | 2008-07-03 → 2008-11-26 (+146d) | 1.54d? → 1.43d? | 46.83d → 62.86d | 235 → 180 | resources Pallavi [65%] → Anurag [70%] |
| 182 | Code Review/ Unit test case review/Design screen/ Screen usability reviews with Jan Ryles | 2008-08-05 → 2009-03-06 (+213d) | 2008-08-06 → 2009-03-06 (+212d) | 1.54d → 0.71d? | 48.83d → 62.3d | 194 → 181 | resources Pallavi [65%] → Anurag [70%] |
| 183 | **WaterFall** | 2008-11-10 → 2008-12-04 (+24d) | 2008-12-04 → 2009-03-09 (+95d) | 17.14d? → 66.86d? | 70.28d → 62.16d |  |  |
| 184 | Implement Chart View Object | 2008-09-01 → 2008-12-04 (+94d) | 2008-09-02 → 2008-12-11 (+100d) | 1.43d? → 4.29d? | 73.28d → 64.43d | 254 → 181 |  |
| 185 | Z-Axis Range support | 2008-11-17 → 2008-12-16 (+29d) | 2008-11-20 → 2008-12-19 (+29d) |  | 70.28d → 64.43d | 426 → 184 |  |
| 186 | Skew angle | 2008-11-20 → 2008-12-24 (+34d) | 2008-11-25 → 2008-12-30 (+35d) |  | 70.28d → 63.43d |  |  |
| 187 | Line clipping | 2008-11-25 → 2009-01-01 (+37d) | 2008-11-28 → 2009-01-06 (+39d) |  | 70.28d → 63.43d |  |  |
| 188 | Unit test case | 2008-07-17 → 2009-01-12 (+179d) | 2008-07-18 → 2009-01-14 (+180d) | 1.54d? → 2.86d? | 46.83d → 62.14d | 129 → 187 | resources Pallavi [65%] → Anurag [70%] |
| 189 | Code Review/ Unit test case review/Design screen/ Screen usability reviews with Jan Ryles | 2008-08-21 → 2009-03-06 (+197d) | 2008-08-25 → 2009-03-09 (+196d) | 1.54d → 0.71d? | 48.83d → 62.16d | 212 → 188 | resources Pallavi [65%] → Anurag [70%] |
| 190 | **Spectrogram** | 2009-01-16 → 2009-01-21 (+5d) | 2009-02-05 → 2009-02-19 (+14d) | 13.85d? → 20.71d? | 44.83d → 73.59d |  |  |
| 191 | Implement Chart View Object | 2008-09-10 → 2009-01-21 (+133d) | 2008-09-11 → 2009-01-29 (+140d) | 0.71d? → 5.71d? | 72.28d → 76.43d | 264 → 188 |  |
| 192 | multiple color intensity | 2009-01-26 → 2009-02-02 (+7d) | 2009-01-28 → 2009-02-03 (+6d) | 1.54d? → 1.43d? | 44.83d → 75d | 518 → 191 | resources Pallavi [65%] → Anurag [70%] |
| 193 | Z-Axis Range , Top, Bottom | 2009-01-28 → 2009-02-04 (+7d) | 2009-01-30 → 2009-02-06 (+7d) | 2.31d? → 2.14d? | 44.83d → 75d |  | resources Pallavi [65%] → Anurag [70%] |
| 194 | Unit test case | 2008-08-01 → 2009-02-16 (+199d) | 2008-08-05 → 2009-02-18 (+197d) | 1.54d? → 2.14d? | 47.83d → 73.59d | 137 → 193 | resources Pallavi [65%] → Anurag [70%] |
| 195 | Code Review/ Unit test case review/Design screen/ Screen usability reviews with Jan Ryles | 2008-09-09 → 2009-02-18 (+162d) | 2008-09-10 → 2009-02-19 (+162d) | 1.54d → 1.43d? | 47.83d → 73.59d | 220 → 194 | resources Pallavi [65%] → Anurag [70%] |
| 196 | **Display Error Log** | 2008-08-29 → 2008-05-26 (-95d) | 2008-09-29 → 2009-04-15 (+198d) | 21d? → 232.16d? | 40.13d → 16.64d |  |  |
| 198 | Implementation | 2008-03-31 → 2008-05-30 (+60d) | 2008-04-04 → 2008-06-05 (+62d) | 4.29d? → 4.62d? | 71.28d → 34.51d | 60, 475 → 197, 138 | resources Anurag [70%] → Pallavi [65%] |
| 199 | Save Error Log in different format | 2008-09-11 → 2008-06-05 (-98d) | 2008-09-16 → 2008-06-10 (-98d) |  | 40.13d → 34.51d | 92 → 198 | resources 1ETW [65%] → Pallavi [65%] |
| 200 | Filter Error log | 2008-09-16 → 2008-06-10 (-98d) | 2008-09-19 → 2008-06-13 (-98d) |  | 40.13d → 34.51d |  | resources 1ETW [65%] → Pallavi [65%] |
| 201 | Enable/Show/Clear/Save Debug Error log | 2008-09-19 → 2008-06-13 (-98d) | 2008-09-26 → 2008-06-20 (-98d) |  | 40.13d → 34.51d |  | resources 1ETW [65%] → Pallavi [65%] |
| 203 | **Configure Analyzer Channels** | 2008-04-07 → 2008-05-28 (+51d) | 2008-04-15 → 2008-06-05 (+51d) | 6d? → 5.38d? | 70.28d → 14.56d |  |  |
| 204 | Implementation | 2008-04-07 → 2008-05-28 (+51d) | 2008-04-11 → 2008-06-03 (+53d) | 3.57d? → 3.85d? | 71.28d → 14.56d | 537 → 146 | resources Anurag [70%] → 1ETW [65%] |
| 205 | Unit Testing/Code Review | 2008-04-08 → 2008-06-03 (+56d) | 2008-04-09 → 2008-06-05 (+57d) | 1.43d? → 1.54d? | 52d → 14.56d | 100 → 204 | resources RKB [70%] → 1ETW [65%] |
| 206 | **Configure Measurements : THD+n** | 2008-04-08 → 2008-05-30 (+52d) | 2008-04-29 → 2009-05-13 (+379d) | 15.08d? → 248.45d? | 45.83d → 14.56d |  |  |
| 208 | Implement Framework for Temporary Measurement flow | 2008-05-30 → 2008-06-05 (+6d) | 2008-06-04 → 2008-06-10 (+6d) | 3.57d? → 3.08d? | 49d → 14.56d | Design screen for THD configuration → 207, 205 | resources RKB [70%] → 1ETW [65%] |
| 209 | Implement screen ( With Live Chart) | 2008-06-09 → 2008-06-10 (+1d) | 2008-06-10 → 2008-06-11 (+1d) |  | 44.83d → 14.56d | 240 → 208 | resources Pallavi [65%] → 1ETW [65%] |
| 210 | Hooks the value change on screen with Temporary Measurement flow | 2008-06-10 → 2008-06-11 (+1d) | 2008-06-12 → 2008-06-13 (+1d) |  | 44.83d → 14.56d |  | resources Pallavi [65%] → 1ETW [65%] |
| 211 | Display THD+n Measurement Value on Status bar | 2008-04-22 → 2008-06-13 (+52d) | 2008-04-24 → 2008-06-17 (+54d) |  | 45.83d → 14.56d | 128 → 210 | resources Pallavi [65%] → 1ETW [65%] |
| 212 | Unit test case | 2008-08-20 → 2008-06-17 (-64d) | 2008-08-21 → 2008-06-19 (-63d) |  | 47.83d → 14.56d | 145 → 211 | resources Pallavi [65%] → 1ETW [65%] |
| 213 | Code Review/ Unit test case review/Design screen/ Screen usability reviews with Jan Ryles | 2008-05-15 → 2009-05-12 (+362d) | 2008-05-16 → 2009-05-13 (+362d) | 1.43d → 1.54d | 69.28d → 14.56d | 228 → 212 | resources Anurag [70%] → 1ETW [65%] |
| 214 | **Configure Measurements : SNR** | 2008-05-19 → 2008-06-03 (+15d) | 2008-06-03 → 2009-04-15 (+316d) | 11.54d? → 226.4d? | 44.83d → 26.1d |  |  |
| 216 | Implement Framework for Temporary Measurement flow | 2008-04-10 → 2008-06-20 (+71d) | 2008-04-16 → 2008-06-24 (+69d) | 3.08d? → 2.31d? | 46.83d → 34.51d | Design screen for THD+n configuration → 215, 201 |  |
| 217 | Implement screen ( With Live Chart) |  |  |  | 45.83d → 34.51d | 294 → 216 |  |
| 218 | Hooks the value change on screen with Temporary Measurement flow |  | 2008-06-30 → 2008-06-27 (-3d) |  | 45.83d → 34.51d |  |  |
| 219 | Display SNR Measurement Value on Status bar | 2008-05-27 → 2008-06-27 (+31d) | 2008-05-29 → 2008-07-01 (+33d) |  | 44.83d → 35.51d | 144 → 218 |  |
| 220 | Unit test case | 2008-09-05 → 2008-07-01 (-66d) | 2008-09-09 → 2008-07-02 (-69d) |  | 47.83d → 35.51d | 469 → 219 |  |
| 221 | Code Review/ Unit test case review/Design screen/ Screen usability reviews with Jan Ryles | 2008-07-07 → 2009-04-14 (+281d) | 2008-07-08 → 2009-04-15 (+281d) | 1.43d → 1.54d | 51d → 35.62d | 236 → 220 | resources RKB [70%] → Pallavi [65%] |
| 222 | **Configure Measurements : SFDR** | 2008-06-03 → 2008-06-05 (+2d) | 2008-06-19 → 2009-05-05 (+320d) | 11.54d? → 238.4d? | 44.83d → 21.62d |  |  |
| 224 | Implement Framework for Temporary Measurement flow | 2008-05-02 → 2008-06-19 (+48d) | 2008-05-06 → 2008-06-23 (+48d) |  | 44.83d → 23.25d | Design screen for ENOB configuration → 223, 212 | resources Pallavi [65%] → 1ETW [65%] |
| 225 | Implement screen ( With Live Chart) | 2008-07-10 → 2008-06-23 (-17d) | 2008-07-14 → 2008-06-25 (-19d) |  | 46.83d → 23.25d | 466 → 224 | resources Pallavi [65%] → 1ETW [65%] |
| 226 | Hooks the value change on screen with Temporary Measurement flow | 2008-07-14 → 2008-06-25 (-19d) | 2008-07-15 → 2008-06-26 (-19d) |  | 46.83d → 23.25d |  | resources Pallavi [65%] → 1ETW [65%] |
| 227 | Display SFDR Measurement Value on Status bar | 2008-06-12 → 2008-06-26 (+14d) | 2008-06-16 → 2008-06-30 (+14d) |  | 44.83d → 23.25d | 210 → 226 | resources Pallavi [65%] → 1ETW [65%] |
| 228 | Unit test case | 2008-05-13 → 2008-06-30 (+48d) | 2008-05-15 → 2008-07-01 (+47d) | 1.43d? → 1.54d? | 69.28d → 23.25d | 297 → 227 | resources Anurag [70%] → 1ETW [65%] |
| 229 | Code Review/ Unit test case review/Design screen/ Screen usability reviews with Jan Ryles | 2008-11-13 → 2009-05-04 (+172d) | 2008-11-17 → 2009-05-05 (+169d) |  | 46.83d → 21.62d | 244 → 228 | resources Pallavi [65%] → 1ETW [65%] |
| 230 | **Configure Measurements : SINAD** | 2008-06-19 → 2008-06-09 (-10d) | 2008-07-04 → 2009-04-30 (+300d) | 11.54d? → 233.4d? | 45.83d → 24.62d |  |  |
| 232 | Implement Framework for Temporary Measurement flow | 2008-05-20 → 2008-07-01 (+42d) | 2008-05-22 → 2008-07-03 (+42d) |  | 44.83d → 23.86d | Design screen for SNR configuration → 231, 228 | resources Pallavi [65%] → 1ETW [65%] |
| 233 | Implement screen ( With Live Chart) | 2008-07-28 → 2008-07-03 (-25d) | 2008-07-29 → 2008-07-07 (-22d) |  | 46.83d → 23.86d | Implement Framework for Temporary Measurement flow → 232 | resources Pallavi [65%] → 1ETW [65%] |
| 234 | Hooks the value change on screen with Temporary Measurement flow | 2008-07-29 → 2008-07-07 (-22d) | 2008-07-31 → 2008-07-09 (-22d) |  | 47.83d → 23.86d |  | resources Pallavi [65%] → 1ETW [65%] |

| ID | Task | Start | Finish | Duration | Total float | Predecessors | Other |
| --- | --- | --- | --- | --- | --- | --- | --- |
| 235 | Display SINAD Measurement Value on Status bar | 2008-06-30 → 2008-07-09 (+9d) | 2008-07-01 → 2008-07-10 (+9d) |  | 45.83d → 23.86d | 218 → 234 | resources Pallavi [65%] → 1ETW [65%] |
| 236 | Unit test case | 2008-07-03 → 2008-07-10 (+7d) | 2008-07-07 → 2008-07-14 (+7d) | 1.43d? → 1.54d? | 51d → 23.86d | 542 → 235 | resources RKB [70%] → 1ETW [65%] |
| 237 | Code Review/ Unit test case review/Design screen/ Screen usability reviews with Jan Ryles | 2008-07-23 → 2009-04-29 (+280d) | 2008-07-25 → 2009-04-30 (+279d) | 2.14d → 1.54d | 73.28d → 24.62d | 158 → 236 | resources Anurag [70%] → 1ETW [65%] |
| 238 | **Configure Measurements : ENOB** | 2008-04-29 → 2008-06-11 (+43d) | 2008-05-19 → 2009-04-28 (+344d) | 13.31d? → 229.4d? | 44.83d → 25.62d |  |  |
| 240 | Implement Framework for Temporary Measurement flow | 2008-06-05 → 2008-07-14 (+39d) | 2008-06-09 → 2008-07-16 (+37d) |  | 44.83d → 25.62d | Design screen for SFDR configuration → 239, 236 | resources Pallavi [65%] → 1ETW [65%] |
| 241 | Implement screen ( With Live Chart) | 2008-08-12 → 2008-07-16 (-27d) | 2008-08-14 → 2008-07-17 (-28d) |  | 48.83d → 25.62d | Implement Framework for Temporary Measurement flow → 240 | resources Pallavi [65%] → 1ETW [65%] |
| 242 | Hooks the value change on screen with Temporary Measurement flow | 2008-08-14 → 2008-07-17 (-28d) | 2008-08-18 → 2008-07-21 (-28d) |  | 47.83d → 25.62d |  | resources Pallavi [65%] → 1ETW [65%] |
| 243 | Display ENOB Measurement Value on Status bar | 2008-05-09 → 2008-07-21 (+73d) | 2008-05-13 → 2008-07-23 (+71d) |  | 44.83d → 25.62d | 136 → 242 | resources Pallavi [65%] → 1ETW [65%] |
| 244 | Unit test case | 2008-11-12 → 2008-07-23 (-112d) | 2008-11-13 → 2008-07-25 (-111d) |  | 46.83d → 25.62d | 549 → 243 | resources Pallavi [65%] → 1ETW [65%] |
| 245 | Code Review/ Unit test case review/Design screen/ Screen usability reviews with Jan Ryles | 2008-08-04 → 2009-04-27 (+266d) | 2008-08-05 → 2009-04-28 (+266d) | 0.71d → 1.54d | 73.28d → 25.62d | 277 → 244 | resources Anurag [70%] → 1ETW [65%] |
| 246 | **Local/Remote Mode Implication** | 2008-07-08 → 2008-06-13 (-25d) | 2008-07-14 → 2008-06-23 (-21d) | 4.29d? → 6d? | 51d → 26.1d |  |  |
| 247 | Configuring all FP components in Local & Remote mode | 2008-07-08 → 2008-06-13 (-25d) | 2008-07-10 → 2008-06-18 (-22d) | 2.14d? → 3d? | 51d → 26.1d | 221 → 239 | resources RKB [70%] → RKB [50%] |
| 248 | Unit testing | 2008-11-04 → 2008-06-18 (-139d) | 2008-11-10 → 2008-06-23 (-140d) | 4.29d? → 3d? | 51d → 26.1d | Implementation of Trace Management → 247 | resources RKB [70%] → RKB [50%] |
| 249 | **Auto Power spectrum Chart** | 2008-07-25 → 2008-06-05 (-50d) | 2008-08-05 → 2008-06-16 (-50d) |  | 73.28d → 55.92d |  |  |
| 250 | Implement Chart View Object | 2008-09-17 → 2008-06-05 (-104d) | 2008-09-22 → 2008-06-09 (-105d) |  | 73.28d → 55.92d | 271 → 205 |  |
| 251 | Support multiple X-Axis Type ( Lin, Log) & Y-Axis scaling | 2008-09-11 → 2008-06-09 (-94d) | 2008-09-12 → 2008-06-10 (-94d) | 0.71d? → 1.43d? | 72.28d → 55.92d | 191 → 250 |  |
| 252 | Support multiple Data point units and Multiple channels support\Marker support | 2008-07-31 → 2008-06-10 (-51d) | 2008-08-01 → 2008-06-12 (-50d) |  | 73.28d → 55.92d | 171 → 251 |  |
| 253 | Unit test case | 2008-12-16 → 2008-06-12 (-187d) | 2008-12-19 → 2008-06-13 (-189d) | 3.08d? → 1.43d? | 38.13d → 55.92d | 483 → 252 | resources 1ETW [65%] → Anurag [70%] |
| 254 | Code Review/ Unit test case review/Design screen/ Screen usability reviews with Jan Ryles | 2008-08-29 → 2008-06-13 (-77d) | 2008-09-01 → 2008-06-16 (-77d) | 1.43d → 0.71d | 73.28d → 55.92d | 263 → 253 |  |
| 255 | **Cross Power spectrum Chart** | 2008-08-05 → 2008-06-16 (-50d) | 2008-09-01 → 2008-07-10 (-53d) | 18.86d? → 17.86d? | 73.28d → 55.92d |  |  |
| 256 | Implement Chart View Object | 2008-09-29 → 2008-06-16 (-105d) | 2008-10-03 → 2008-06-24 (-101d) | 2.86d? → 5.71d? | 72.28d → 55.92d | 278 → 254 |  |
| 257 | Support multiple X-Axis Type ( Lin, Log) | 2008-08-13 → 2008-06-24 (-50d) | 2008-08-14 → 2008-06-25 (-50d) |  | 73.28d → 56.92d | 177 → 256 |  |
| 258 | Support multiple Data point units | 2008-09-12 → 2008-06-25 (-79d) | 2008-09-15 → 2008-06-26 (-81d) |  | 72.28d → 56.92d | 251 → 257 |  |
| 259 | Y-Axis Scaling ( Auto Sclaing) Display only | 2008-08-19 → 2008-06-26 (-54d) | 2008-08-20 → 2008-06-30 (-51d) |  | 72.28d → 56.92d | 172 → 258 |  |
| 260 | Multiple channels support | 2008-08-20 → 2008-06-30 (-51d) | 2008-08-22 → 2008-07-01 (-52d) |  | 72.28d → 56.92d |  |  |
| 261 | Marker support | 2008-08-22 → 2008-07-01 (-52d) | 2008-08-25 → 2008-07-03 (-53d) |  | 72.28d → 56.92d |  |  |
| 262 | Integrate with data push mechnaism | 2008-08-25 → 2008-07-03 (-53d) | 2008-08-26 → 2008-07-04 (-53d) |  | 72.28d → 56.92d |  |  |
| 263 | unit test case | 2008-08-26 → 2008-07-04 (-53d) | 2008-08-29 → 2008-07-08 (-52d) |  | 72.28d → 56.92d |  |  |
| 264 | Code Review/ Unit test case review/Design screen/ Screen usability reviews with Jan Ryles | 2008-09-10 → 2008-07-08 (-64d) | 2008-09-10 → 2008-07-10 (-62d) | 0.71d? → 1.43d | 72.28d → 56.92d | 298 → 263 |  |
| 265 | **Frequency Response Chart** | 2008-09-01 → 2008-07-10 (-53d) | 2008-09-10 → 2008-07-18 (-54d) | 7.43d? → 6.43d? | 72.28d → 56.92d |  |  |
| 266 | Implement Chart View Object | 2008-10-14 → 2008-07-10 (-96d) | 2008-10-15 → 2008-07-11 (-96d) |  | 71.28d → 56.92d | 299 → 264 |  |
| 267 | Support multiple X-Axis Type ( Lin, Log) & Y-Axis scaling | 2008-09-22 → 2008-07-11 (-73d) | 2008-09-23 → 2008-07-14 (-71d) | 1.43d? → 0.71d? | 73.28d → 56.92d | 250 → 266 |  |
| 268 | Support multiple Data point units | 2008-09-23 → 2008-07-14 (-71d) | 2008-09-24 → 2008-07-15 (-71d) | 1.43d? → 0.71d? | 73.28d → 56.92d |  |  |
| 269 | Multiple channels support\Marker support | 2008-09-24 → 2008-07-15 (-71d) | 2008-09-25 → 2008-07-16 (-71d) | 0.71d? → 1.43d? | 73.28d → 56.92d |  |  |
| 270 | Unit test case | 2009-01-01 → 2008-07-16 (-169d) | 2009-01-06 → 2008-07-17 (-173d) | 2.31d? → 1.43d? | 37.13d → 57.92d | 563 → 269 | resources 1ETW [65%] → Anurag [70%] |
| 271 | Code Review/ Unit test case review/Design screen/ Screen usability reviews with Jan Ryles | 2008-09-17 → 2008-07-17 (-62d) | 2008-09-17 → 2008-07-18 (-61d) |  | 73.28d → 57.92d | 305 → 270 |  |
| 272 | **Coherence Chart** | 2008-09-10 → 2008-07-18 (-54d) | 2008-09-17 → 2009-03-11 (+175d) | 5d? → 168.06d? | 72.28d → 57.92d |  |  |
| 273 | Implement Chart View Object | 2008-12-26 → 2008-07-18 (-161d) | 2008-12-29 → 2008-07-21 (-161d) | 1.54d? → 0.71d? | 44.83d → 57.92d | 507 → 271 | resources Pallavi [65%] → Anurag [70%] |
| 274 | Support multiple X-Axis Type ( Lin, Log) & Y-Axis scaling | 2008-10-03 → 2008-07-21 (-74d) | 2008-10-07 → 2008-07-22 (-77d) | 1.43d? → 0.71d? | 72.28d → 58.92d | 256 → 273 |  |
| 275 | Support multiple Data point units | 2008-10-07 → 2008-07-28 (-71d) | 2008-10-08 → 2008-07-29 (-71d) |  | 72.28d → 58.64d |  |  |
| 276 | Multiple channels support\Marker support | 2008-10-08 → 2008-07-29 (-71d) | 2008-10-10 → 2008-07-30 (-72d) |  | 71.28d → 58.64d |  |  |
| 277 | Unit test case | 2008-08-01 → 2008-07-30 (-2d) | 2008-08-04 → 2008-07-30 (-5d) | 1.43d? → 0.71d? | 73.28d → 58.64d | 252 → 276 |  |
| 278 | Code Review/ Unit test case review/Design screen/ Screen usability reviews with Jan Ryles | 2008-09-29 → 2009-03-10 (+162d) | 2008-09-29 → 2009-03-11 (+163d) |  | 73.28d → 60.44d | 430 → 277 |  |
| 279 | **Save Trace** | 2009-01-05 → 2008-06-23 (-196d) | 2009-01-15 → 2009-04-13 (+88d) | 8.57d? → 210.63d? | 68.28d → 26.1d |  |  |
| 280 | Design framework for Saving trace | 2009-01-05 → 2008-06-23 (-196d) | 2009-01-07 → 2008-06-26 (-195d) | 2.14d? → 3d? | 68.28d → 26.1d | 551, 288 → 248 | resources Anurag [70%] → RKB [50%] |
| 281 | Design & implement screen to trigger saving mechanism | 2009-01-07 → 2008-07-02 (-189d) | 2009-01-12 → 2008-07-08 (-188d) | 3.57d? → 3.85d? | 68.28d → 36.7d | 280 → 280, 220 | resources Anurag [70%] → Pallavi [65%] |
| 282 | unit testing | 2008-08-27 → 2008-07-08 (-50d) | 2008-09-01 → 2008-07-11 (-52d) | 2.86d? → 2.31d? | 53d → 36.7d | 311 → 281 | resources RKB [70%] → Pallavi [65%] |
| 283 | design review/unit test review/usability review | 2008-09-01 → 2009-04-13 (+224d) | 2008-09-02 → 2009-04-13 (+223d) | 1.43d? → 0.77d? | 53d → 37.39d |  | resources RKB [70%] → Pallavi [65%] |
| 284 | **Recall trace** | 2009-01-15 → 2008-06-26 (-203d) | 2009-01-21 → 2009-04-13 (+82d) | 4.29d? → 207.63d? | 68.28d → 26.1d |  |  |
| 285 | Design framework for Loading trace | 2009-01-15 → 2008-06-26 (-203d) | 2009-01-16 → 2008-06-27 (-203d) | 0.71d? → 1d? | 68.28d → 26.1d | 319 → 280 | resources Anurag [70%] → RKB [50%] |
| 286 | Design & implement screen to trigger Loading mechanism | 2009-01-16 → 2008-07-11 (-189d) | 2009-01-19 → 2008-07-14 (-189d) | 1.43d? → 1.54d? | 68.28d → 36.7d | 285 → 285, 282 | resources Anurag [70%] → Pallavi [65%] |
| 287 | unit testing | 2008-09-09 → 2008-07-14 (-57d) | 2008-09-12 → 2008-07-16 (-58d) | 2.86d? → 1.54d? | 52d → 37.7d | 317 → 286 | resources RKB [70%] → Pallavi [65%] |
| 288 | design review/unit test review/usability review | 2008-09-12 → 2009-04-13 (+213d) | 2008-09-12 → 2009-04-13 (+213d) | 0.71d? → 0.77d? | 52d → 37.39d |  | resources RKB [70%] → Pallavi [65%] |
| 289 | **Averaging** | 2008-05-09 → 2008-06-27 (+49d) | 2008-05-20 → 2008-07-11 (+52d) | 7.14d? → 10d? | 49d → 26.1d |  |  |
| 290 | Configure different type of Averaging | 2008-05-09 → 2008-06-27 (+49d) | 2008-05-14 → 2008-07-03 (+50d) | 2.86d? → 4d? | 49d → 26.1d | 115 → 285 | resources RKB [70%] → RKB [50%] |
| 291 | Implement Hooks for Manual Averaging (Accept /Reject) | 2008-05-14 → 2008-07-03 (+50d) | 2008-05-20 → 2008-07-11 (+52d) | 4.29d? → 6d? | 49d → 26.1d |  | resources RKB [70%] → RKB [50%] |
| 294 | Implement Framework for Temporary Measurement flow | 2008-06-20 → 2008-07-16 (+26d) | 2008-06-24 → 2008-07-18 (+24d) |  | 45.83d → 39.32d | Design screen for SINAD configuration → 293, 287 |  |
| 295 | Implement screen ( With Live Chart) | 2008-08-29 → 2008-07-18 (-42d) | 2008-09-01 → 2008-07-22 (-41d) |  | 48.83d → 39.32d | Implement Framework for Temporary Measurement flow → 294 |  |
| 296 | Hooks the value change on screen with Temporary Measurement flow | 2008-09-01 → 2008-07-22 (-41d) | 2008-09-04 → 2008-07-23 (-43d) |  | 47.83d → 39.32d |  |  |
| 297 | Display frequency dumping Value on Status bar | 2008-05-12 → 2008-07-23 (+72d) | 2008-05-13 → 2008-07-25 (+73d) | 1.43d → 1.54d | 68.28d → 39.32d | 468 → 296 | resources Anurag [70%] → Pallavi [65%] |
| 298 | Unit test case | 2008-09-08 → 2008-07-25 (-45d) | 2008-09-10 → 2008-07-28 (-44d) | 1.43d? → 1.54d? | 72.28d → 39.32d | 173 → 297 | resources Anurag [70%] → Pallavi [65%] |
| 299 | Code Review/ Unit test case review/Design screen/ Screen usability reviews with Jan Ryles | 2008-10-13 → 2009-04-09 (+178d) | 2008-10-14 → 2009-04-10 (+178d) | 0.71d? → 1.54d | 71.28d → 37.62d | 470 → 298 | resources Anurag [70%] → Pallavi [65%] |
| 300 | **Scope View Chart** | 2008-09-29 → 2008-08-06 (-54d) | 2008-10-14 → 2009-03-09 (+146d) | 10.57d? → 153.71d? | 71.28d → 58.79d |  |  |
| 301 | Implement Chart View Object | 2009-01-07 → 2008-08-06 (-154d) | 2009-01-08 → 2008-08-08 (-153d) | 1.54d? → 2.86d? | 44.83d → 58.79d | 443 → 277 | resources Pallavi [65%] → Anurag [70%] |
| 302 | Support multiple X-Axis Type ( Lin, Log) & Y-Axis scaling | 2008-10-15 → 2008-08-08 (-68d) | 2008-10-17 → 2008-08-12 (-66d) |  | 71.28d → 59.79d | 266 → 301 |  |
| 303 | Support multiple Data point units | 2008-10-17 → 2008-08-12 (-66d) | 2008-10-20 → 2008-08-13 (-68d) |  | 71.28d → 59.79d |  |  |
| 304 | Multiple channels support\Marker support | 2008-10-20 → 2008-08-20 (-61d) | 2008-10-21 → 2008-08-20 (-62d) |  | 71.28d → 59.71d |  |  |
| 305 | Unit test case | 2008-09-16 → 2008-08-21 (-26d) | 2008-09-17 → 2008-08-22 (-26d) | 0.71d? → 1.43d? | 73.28d → 59.71d | 180 → 304 |  |
| 306 | Code Review/ Unit test case review/Design screen/ Screen usability reviews with Jan Ryles | 2008-10-22 → 2009-03-09 (+138d) | 2008-10-23 → 2009-03-09 (+137d) |  | 71.28d → 62.44d | 484 → 305 |  |
| 307 | **Save Configuration** | 2008-08-18 → 2008-07-15 (-34d) | 2008-09-02 → 2009-04-07 (+217d) | 11.43d? → 190.4d? | 53d → 27.1d |  |  |

| ID | Task | Start | Finish | Duration | Total float | Predecessors | Other |
| --- | --- | --- | --- | --- | --- | --- | --- |
| 308 | Save & Recall stratgies | 2008-08-18 → 2008-07-15 (-34d) | 2008-08-18 → 2008-07-16 (-33d) | 0.71d? → 1d? | 53d → 27.1d | 150 → 293 | resources RKB [70%] → RKB [50%] |
| 309 | Design framework for Saving configuration | 2008-08-19 → 2008-07-16 (-34d) | 2008-08-20 → 2008-07-18 (-33d) | 1.43d? → 2d? | 53d → 27.1d |  | resources RKB [70%] → RKB [50%] |
| 310 | Implement exposed interface in each searlizable objects | 2008-08-20 → 2008-07-28 (-23d) | 2008-08-25 → 2008-08-01 (-24d) | 3.57d? → 3.85d? | 53d → 39.86d | 309 → 309, 298 | resources RKB [70%] → Pallavi [65%] |
| 311 | Design & implement screen to trigger Saving mechanism | 2008-08-26 → 2008-08-01 (-25d) | 2008-08-27 → 2008-08-05 (-22d) | 1.43d? → 1.54d? | 53d → 39.86d |  | resources RKB [70%] → Pallavi [65%] |
| 312 | unit testing | 2009-02-09 → 2008-08-05 (-188d) | 2009-02-11 → 2008-08-08 (-187d) | 1.54d? → 3.08d? | 44.83d → 39.86d | 321 → 311 |  |
| 313 | design review/unit test review/usability review | 2009-02-11 → 2009-04-06 (+54d) | 2009-02-12 → 2009-04-07 (+54d) | 0.77d? → 1.54d? | 44.83d → 41.62d |  |  |
| 314 | **Load Configuration** | 2008-09-02 → 2008-07-18 (-46d) | 2008-09-12 → 2009-04-07 (+207d) | 8.14d? → 187.47d? | 52d → 27.1d |  |  |
| 315 | Design framework for loading configuration | 2008-09-02 → 2008-07-18 (-46d) | 2008-09-04 → 2008-07-21 (-45d) | 0.71d? → 1d? | 52d → 27.1d | 283 → 309 | resources RKB [70%] → RKB [50%] |
| 316 | Implement exposed interface in each searlizable objects | 2008-09-04 → 2008-08-08 (-27d) | 2008-09-05 → 2008-08-11 (-25d) | 1.43d? → 1.54d? | 52d → 41.7d | 315 → 315, 312 | resources RKB [70%] → Pallavi [65%] |
| 317 | Design & implement screen to trigger loading mechanism | 2008-09-05 → 2008-08-11 (-25d) | 2008-09-09 → 2008-08-13 (-27d) | 1.43d? → 1.54d? | 52d → 41.7d |  | resources RKB [70%] → Pallavi [65%] |
| 318 | unit testing | 2009-01-12 → 2008-08-13 (-152d) | 2009-01-14 → 2008-08-19 (-148d) | 2.14d? → 3.08d? | 68.28d → 41.7d | 281 → 317 | resources Anurag [70%] → Pallavi [65%] |
| 319 | design review/unit test review/usability review | 2009-01-14 → 2009-04-06 (+82d) | 2009-01-15 → 2009-04-07 (+82d) | 0.71d? → 0.77d? | 68.28d → 41.55d |  | resources Anurag [70%] → Pallavi [65%] |
| 320 | **View Configuration** | 2009-02-05 → 2008-07-21 (-199d) | 2009-02-12 → 2009-04-06 (+53d) | 4.62d? → 185.63d? | 44.83d → 27.1d |  |  |
| 321 | Design & implement screen to trigger loading mechanism | 2009-02-05 → 2008-07-21 (-199d) | 2009-02-09 → 2008-07-24 (-200d) | 2.31d? → 3d? | 44.83d → 27.1d | 544 → 315 | resources Pallavi [65%] → RKB [50%] |
| 322 | unit testing | 2009-01-19 → 2008-08-19 (-153d) | 2009-01-21 → 2008-08-20 (-154d) | 1.43d? → 1.54d? | 68.28d → 42.08d | 286 → 321, 318 | resources Anurag [70%] → Pallavi [65%] |
| 323 | design review/unit test review/usability review | 2009-01-21 → 2009-04-06 (+75d) | 2009-01-21 → 2009-04-06 (+75d) | 0.71d? → 0.77d? | 68.28d → 42.39d |  | resources Anurag [70%] → Pallavi [65%] |
| 324 | **CSV Data Writer** | 2009-02-04 → 2008-07-24 (-195d) | 2009-02-12 → 2009-04-27 (+74d) | 6.15d? → 197.13d? | 37.13d → 27.1d |  |  |
| 325 | Design CSV Data Writer | 2009-02-04 → 2008-07-24 (-195d) | 2009-02-05 → 2008-07-25 (-195d) | 0.77d? → 1d? | 37.13d → 27.1d | 577 → 321 | resources 1ETW [65%] → RKB [50%] |
| 326 | Implement Data Writer | 2009-02-05 → 2008-07-25 (-195d) | 2009-02-10 → 2008-07-30 (-195d) |  | 37.13d → 26.87d | 325 → 325, 244 |  |
| 327 | unit testing | 2009-01-30 → 2008-07-30 (-184d) | 2009-02-04 → 2008-07-31 (-188d) | 2.86d? → 1.54d? | 68.28d → 27.87d | 331 → 326 | resources Anurag [70%] → 1ETW [65%] |
| 328 | design review/unit test review | 2009-02-04 → 2009-04-24 (+79d) | 2009-02-04 → 2009-04-27 (+82d) | 0.71d? → 0.77d? | 68.28d → 27.89d |  | resources Anurag [70%] → 1ETW [65%] |
| 329 | **CSV Data Reader** | 2009-02-12 → 2008-07-25 (-202d) | 2009-02-23 → 2009-04-24 (+60d) | 6.15d? → 195.38d? | 37.13d → 28.64d |  |  |
| 330 | Design CSV Data Reader | 2009-02-12 → 2008-07-25 (-202d) | 2009-02-13 → 2008-07-28 (-200d) | 0.77d? → 1d? | 37.13d → 32.49d | 333 → 325 | resources 1ETW [65%] → RKB [50%] |
| 331 | Implement Data Reader | 2009-01-28 → 2008-07-31 (-181d) | 2009-01-30 → 2008-08-06 (-177d) | 2.14d? → 3.08d? | 68.28d → 28.64d | 526 → 330, 327 | resources Anurag [70%] → 1ETW [65%] |
| 332 | unit testing | 2009-02-10 → 2008-08-06 (-188d) | 2009-02-12 → 2008-08-07 (-189d) |  | 37.13d → 28.64d | 326 → 331 |  |
| 333 | design review/unit test review | 2009-02-12 → 2009-04-23 (+70d) | 2009-02-12 → 2009-04-24 (+71d) |  | 37.13d → 28.64d |  |  |
| 334 | **Configure Analyzer Source** | 2008-04-15 → 2008-08-07 (+114d) | 2008-04-30 → 2008-08-14 (+106d) | 11d? → 5.38d? | 69.28d → 30.32d |  |  |
| 335 | Implementation | 2008-04-15 → 2008-08-07 (+114d) | 2008-04-29 → 2008-08-13 (+106d) | 3.57d? → 3.85d? | 69.28d → 30.32d | Unit Testing/Code Review → 332 | resources Anurag [70%] → 1ETW [65%] |
| 336 | Unit Testing/Code Review | 2008-04-16 → 2008-08-13 (+119d) | 2008-04-17 → 2008-08-14 (+119d) | 1.43d? → 1.54d? | 51d → 30.32d | 105 → 335 | resources RKB [70%] → 1ETW [65%] |
| 337 | **Configure Triggering : External Source** | 2008-10-10 → 2008-07-28 (-74d) | 2008-10-21 → 2009-04-21 (+182d) | 7.69d? → 191.4d? | 38.13d → 31.62d |  |  |
| 339 | Implementation | 2008-10-01 → 2008-08-14 (-48d) | 2008-10-07 → 2008-08-22 (-46d) | 3.08d? → 4.62d? | 39.13d → 30.32d | Design Screen → 336, 338 |  |
| 340 | Code/unit test Review | 2008-10-29 → 2009-04-20 (+173d) | 2008-10-30 → 2009-04-21 (+173d) |  | 38.13d → 31.62d | 347 → 339 |  |
| 341 | **Configure Triggering : Internal Source** | 2008-10-21 → 2008-07-30 (-83d) | 2008-10-30 → 2009-04-22 (+174d) | 7.15d? → 190.07d? | 38.13d → 30.95d |  |  |
| 343 | Implementation | 2008-10-13 → 2008-08-22 (-52d) | 2008-10-20 → 2008-08-27 (-54d) | 4.62d? → 3.08d? | 38.13d → 30.32d | Design Screen → 339, 342 |  |
| 344 | Code/unit test Review | 2008-11-06 → 2009-04-20 (+165d) | 2008-11-10 → 2009-04-22 (+163d) |  | 39.13d → 30.95d | 351 → 343 |  |
| 345 | **Configure Triggering : Channel** | 2008-10-30 → 2008-08-01 (-90d) | 2008-11-10 → 2009-04-21 (+162d) | 6.15d? → 187.4d? | 38.13d → 30.62d |  |  |
| 347 | Implementation | 2008-10-23 → 2008-08-27 (-57d) | 2008-10-29 → 2008-09-01 (-58d) |  | 38.13d → 32.48d | Design Screen → 343, 346 |  |
| 348 | Code/unit test Review | 2008-11-13 → 2009-04-20 (+158d) | 2008-11-14 → 2009-04-21 (+158d) |  | 39.13d → 30.62d | 355 → 347 |  |
| 349 | **Configure ARM : Manual** | 2008-11-14 → 2008-08-05 (-101d) | 2008-11-21 → 2009-04-17 (+147d) | 4.62d? → 183.46d? | 39.13d → 33.55d |  |  |
| 351 | Implementation | 2008-11-03 → 2008-09-08 (-56d) | 2008-11-06 → 2008-09-11 (-56d) |  | 39.13d → 32.92d | Design Screen → 347, 350 |  |
| 352 | Code/unit test Review | 2008-11-19 → 2009-04-16 (+148d) | 2008-11-21 → 2009-04-17 (+147d) |  | 39.13d → 33.55d | 359 → 351 |  |
| 353 | **Configure ARM : Time Step** | 2008-11-21 → 2008-08-07 (-106d) | 2008-11-27 → 2009-04-16 (+140d) | 4.62d? → 179.92d? | 39.13d → 34.09d |  |  |
| 355 | Implementation | 2008-11-10 → 2008-09-11 (-60d) | 2008-11-13 → 2008-09-16 (-58d) |  | 39.13d → 34.09d | 344 → 351, 354 |  |
| 356 | Code/unit test Review | 2008-11-26 → 2009-04-14 (+139d) | 2008-11-27 → 2009-04-16 (+140d) |  | 39.13d → 34.09d | 434 → 355 |  |
| 357 | **Configure ARM : RPM Step** | 2008-11-27 → 2008-08-11 (-108d) | 2008-12-04 → 2009-04-14 (+131d) | 4.62d? → 176.4d? | 39.13d → 36.62d |  |  |
| 359 | Implementation | 2008-11-14 → 2008-09-23 (-52d) | 2008-11-19 → 2008-09-26 (-54d) |  | 39.13d → 36.42d | 348 → 355, 358 |  |
| 360 | Code/unit test Review | 2008-12-02 → 2009-04-13 (+132d) | 2008-12-04 → 2009-04-14 (+131d) |  | 39.13d → 36.62d | 474 → 359 |  |
| 361 | **Configure Measurements : Delay Time** | 2008-09-10 → 2008-08-13 (-28d) | 2008-09-25 → 2009-04-07 (+194d) | 10.77d? → 168.93d? | 47.83d → 41.08d |  |  |
| 362 | Design framework for Delay time configuration | 2008-09-10 → 2008-08-13 (-28d) | 2008-09-12 → 2008-08-18 (-25d) | 1.54d? → 2d? | 47.83d → 44.78d | 195, 189 → 358 | was named Design screen forDelay time configuration; resources Pallavi [65%] → RKB [50%] |
| 363 | Implement Framework for Temporary Measurement flow | 2008-09-12 → 2008-08-20 (-23d) | 2008-09-15 → 2008-08-22 (-24d) |  | 47.83d → 42.08d | 362 → 362, 322 |  |
| 364 | Implement screen ( With Live Chart) | 2008-09-15 → 2008-08-22 (-24d) | 2008-09-17 → 2008-08-25 (-23d) |  | 47.83d → 42.08d |  |  |
| 365 | Hooks the value change on screen with Temporary Measurement flow | 2008-09-17 → 2008-08-25 (-23d) | 2008-09-18 → 2008-08-27 (-22d) |  | 47.83d → 42.08d |  |  |
| 366 | Display Delay time Value on Status bar | 2008-09-18 → 2008-08-27 (-22d) | 2008-09-22 → 2008-08-28 (-25d) |  | 47.83d → 42.08d |  |  |
| 367 | Unit test case | 2008-09-22 → 2008-08-28 (-25d) | 2008-09-24 → 2008-09-01 (-23d) |  | 47.83d → 43.08d |  |  |
| 368 | Code Review/ Unit test case review/Design screen/ Screen usability reviews with Jan Ryles | 2008-09-24 → 2009-04-03 (+191d) | 2008-09-25 → 2009-04-07 (+194d) |  | 47.83d → 41.08d |  |  |
| 369 | **Configure Measurements : Maximum overshoot** | 2008-09-25 → 2008-08-18 (-38d) | 2008-10-14 → 2009-03-31 (+168d) | 12.77d? → 161.4d? | 46.83d → 46.62d |  |  |
| 370 | Design framework for maximum overshoot configuration | 2008-09-25 → 2008-08-18 (-38d) | 2008-09-29 → 2008-08-20 (-40d) | 1.54d? → 2d? | 47.83d → 50d | 368, 195 → 362 | was named Design screen for maximum overshoot configuration; resources Pallavi [65%] → RKB [50%] |
| 371 | Implement Framework for Temporary Measurement flow | 2008-09-29 → 2008-09-01 (-28d) | 2008-09-30 → 2008-09-04 (-26d) |  | 47.83d → 45.78d | 370 → 370, 367 |  |
| 372 | Implement screen | 2008-09-30 → 2008-09-04 (-26d) | 2008-10-03 → 2008-09-05 (-28d) |  | 46.83d → 45.78d |  |  |
| 373 | Hooks the value change on screen with Temporary Measurement flow | 2008-10-03 → 2008-09-05 (-28d) | 2008-10-06 → 2008-09-09 (-27d) |  | 46.83d → 45.78d |  |  |
| 374 | Display maximum overshoot Value on Status bar | 2008-10-06 → 2008-09-09 (-27d) | 2008-10-08 → 2008-09-10 (-28d) |  | 47.83d → 45.78d |  |  |
| 375 | Unit test case | 2008-10-08 → 2008-09-10 (-28d) | 2008-10-10 → 2008-09-12 (-28d) |  | 46.83d → 45.78d |  |  |
| 376 | Code Review/ Unit test case review/Design screen/ Screen usability reviews with Jan Ryles | 2008-10-10 → 2009-03-30 (+171d) | 2008-10-14 → 2009-03-31 (+168d) |  | 46.83d → 46.62d |  |  |
| 377 | **Configure Measurements : Rise time** | 2008-05-16 → 2008-08-20 (+96d) | 2008-05-30 → 2009-03-31 (+305d) | 10d? → 159.85d? | 69.28d → 46.16d |  |  |
| 378 | Design framework for Rise time configuration | 2008-05-16 → 2008-08-20 (+96d) | 2008-05-19 → 2008-08-22 (+95d) | 1.43d? → 2d? | 69.28d → 51d | 213 → 370 | was named Design screen for Rise time configuration; resources Anurag [70%] → RKB [50%] |
| 379 | Implement Framework for Temporary Measurement flow | 2008-05-19 → 2008-09-12 (+116d) | 2008-05-21 → 2008-09-15 (+117d) | 1.43d? → 1.54d? | 69.28d → 46.09d | 378 → 378, 375 | resources Anurag [70%] → Pallavi [65%] |
| 380 | Implement screen | 2008-05-21 → 2008-09-15 (+117d) | 2008-05-22 → 2008-09-17 (+118d) | 1.43d? → 1.54d? | 69.28d → 46.09d |  | resources Anurag [70%] → Pallavi [65%] |
| 381 | Hooks the value change on screen with Temporary Measurement flow | 2008-05-22 → 2008-09-17 (+118d) | 2008-05-26 → 2008-09-18 (+115d) | 1.43d? → 1.54d? | 69.28d → 46.09d |  | resources Anurag [70%] → Pallavi [65%] |
| 382 | Display rise time Value on Status bar | 2008-05-26 → 2008-09-18 (+115d) | 2008-05-27 → 2008-09-22 (+118d) | 1.43d → 1.54d | 69.28d → 46.09d |  | resources Anurag [70%] → Pallavi [65%] |
| 383 | Unit test case | 2008-05-27 → 2008-09-22 (+118d) | 2008-05-29 → 2008-09-23 (+117d) | 1.43d? → 1.54d? | 69.28d → 46.09d |  | resources Anurag [70%] → Pallavi [65%] |

| ID | Task | Start | Finish | Duration | Total float | Predecessors | Other |
| --- | --- | --- | --- | --- | --- | --- | --- |
| 384 | Code Review/ Unit test case review/Design screen/ Screen usability reviews with Jan Ryles | 2008-05-29 → 2009-03-30 (+305d) | 2008-05-30 → 2009-03-31 (+305d) | 1.43d → 1.54d | 70.28d → 46.16d |  | resources Anurag [70%] → Pallavi [65%] |
| 385 | **Configure Measurements : Setting time** | 2008-05-30 → 2008-08-22 (+84d) | 2008-06-13 → 2009-03-31 (+291d) | 10d → 157.4d | 70.28d → 46.62d |  |  |
| 386 | Design screen for Setting time configuration | 2008-05-30 → 2008-08-22 (+84d) | 2008-06-02 → 2008-08-26 (+85d) | 1.43d → 2d | 70.28d → 51d | 384, 368 → 378 | resources Anurag [70%] → RKB [50%] |
| 387 | Implement Framework for Temporary Measurement flow | 2008-06-02 → 2008-09-23 (+113d) | 2008-06-04 → 2008-09-25 (+113d) | 1.43d → 1.54d | 70.28d → 47.7d | 386 → 386, 383 | resources Anurag [70%] → Pallavi [65%] |
| 388 | Implement screen | 2008-06-04 → 2008-09-25 (+113d) | 2008-06-05 → 2008-09-26 (+113d) | 1.43d → 1.54d | 70.28d → 47.7d |  | resources Anurag [70%] → Pallavi [65%] |
| 389 | Hooks the value change on screen with Temporary Measurement flow | 2008-06-05 → 2008-09-26 (+113d) | 2008-06-09 → 2008-09-30 (+113d) | 1.43d → 1.54d | 70.28d → 47.7d |  | resources Anurag [70%] → Pallavi [65%] |
| 390 | Display setting time Value on Status bar | 2008-06-09 → 2008-09-30 (+113d) | 2008-06-10 → 2008-10-03 (+115d) | 1.43d → 1.54d | 70.28d → 46.7d |  | resources Anurag [70%] → Pallavi [65%] |
| 391 | Unit test case | 2008-06-10 → 2008-10-03 (+115d) | 2008-06-12 → 2008-10-06 (+116d) | 1.43d → 1.54d | 70.28d → 46.7d |  | resources Anurag [70%] → Pallavi [65%] |
| 392 | Code Review/ Unit test case review/Design screen/ Screen usability reviews with Jan Ryles | 2008-06-12 → 2009-03-30 (+291d) | 2008-06-13 → 2009-03-31 (+291d) | 1.43d → 1.54d | 70.28d → 46.62d |  | resources Anurag [70%] → Pallavi [65%] |
| 393 | **Configure Measurements : Decay Time** | 2008-03-03 → 2008-08-26 (+176d) | 2008-03-17 → 2009-03-24 (+372d) | 10.61d? → 150.78d? | 95.81d → 51d |  |  |
| 394 | Design screen for decay time configuration | 2008-03-03 → 2008-08-26 (+176d) | 2008-03-05 → 2008-08-28 (+176d) | 2.04d? → 2.86d? | 95.81d → 51d | none → 386 | resources Himanshu [70%] → RKB [50%] |
| 395 | Implement Framework for Temporary Measurement flow | 2008-03-05 → 2008-10-06 (+215d) | 2008-03-06 → 2008-10-08 (+216d) | 1.43d? → 1.54d? | 95.81d → 50.7d | 394 → 394, 391 | resources Himanshu [70%] → Pallavi [65%] |
| 396 | Implement screen | 2008-03-06 → 2008-10-08 (+216d) | 2008-03-07 → 2008-10-10 (+217d) | 1.43d? → 1.54d? | 95.81d → 49.7d |  | resources Himanshu [70%] → Pallavi [65%] |
| 397 | Hooks the value change on screen with Temporary Measurement flow | 2008-03-07 → 2008-10-10 (+217d) | 2008-03-11 → 2008-10-14 (+217d) | 1.43d? → 1.54d? | 95.81d → 49.7d |  | resources Himanshu [70%] → Pallavi [65%] |
| 398 | Display decay time Value on Status bar | 2008-03-11 → 2008-10-14 (+217d) | 2008-03-12 → 2008-10-15 (+217d) | 1.43d → 1.54d | 95.81d → 49.7d |  | resources Himanshu [70%] → Pallavi [65%] |
| 399 | Unit test case | 2008-03-12 → 2008-10-15 (+217d) | 2008-03-14 → 2008-10-17 (+217d) | 1.43d? → 1.54d? | 95.81d → 49.7d |  | resources Himanshu [70%] → Pallavi [65%] |
| 400 | Code Review/ Unit test case review/Design screen/ Screen usability reviews with Jan Ryles | 2008-03-14 → 2009-03-23 (+374d) | 2008-03-17 → 2009-03-24 (+372d) | 1.43d → 1.54d | 95.81d → 51.24d |  | resources Himanshu [70%] → Pallavi [65%] |
| 401 | **Configure Measurements : Pulse width** | 2008-03-17 → 2008-08-28 (+164d) | 2008-04-01 → 2009-03-25 (+358d) | 11d? → 148.38d? | 94.81d → 49.78d |  |  |
| 402 | Design screen for pulse width configuration | 2008-03-17 → 2008-08-28 (+164d) | 2008-03-19 → 2008-09-01 (+166d) | 1.43d? → 2d? | 95.81d → 51d | 400 → 394 | resources Himanshu [70%] → RKB [50%] |
| 403 | Implement Framework for Temporary Measurement flow | 2008-03-19 → 2008-10-17 (+212d) | 2008-03-20 → 2008-10-20 (+214d) | 1.43d? → 1.54d? | 95.81d → 50.78d | 402 → 402, 399 | resources Himanshu [70%] → Pallavi [65%] |
| 404 | Implement screen | 2008-03-20 → 2008-10-20 (+214d) | 2008-03-24 → 2008-10-22 (+212d) | 1.43d? → 1.54d? | 94.81d → 50.78d |  | resources Himanshu [70%] → Pallavi [65%] |
| 405 | Hooks the value change on screen with Temporary Measurement flow | 2008-03-24 → 2008-10-22 (+212d) | 2008-03-26 → 2008-10-23 (+211d) | 1.43d? → 1.54d? | 94.81d → 50.78d |  | resources Himanshu [70%] → Pallavi [65%] |
| 406 | Display pulse width Value on Status bar | 2008-03-26 → 2008-10-23 (+211d) | 2008-03-27 → 2008-10-27 (+214d) | 1.43d → 1.54d | 94.81d → 50.78d |  | resources Himanshu [70%] → Pallavi [65%] |
| 407 | Unit test case | 2008-03-27 → 2008-10-27 (+214d) | 2008-03-31 → 2008-10-29 (+212d) | 1.43d? → 1.54d? | 94.81d → 49.78d |  | resources Himanshu [70%] → Pallavi [65%] |
| 408 | Code Review/ Unit test case review/Design screen/ Screen usability reviews with Jan Ryles | 2008-03-31 → 2009-03-23 (+357d) | 2008-04-01 → 2009-03-25 (+358d) | 1.43d → 1.54d | 94.81d → 49.78d |  | resources Himanshu [70%] → Pallavi [65%] |
| 409 | **Configure Measurements : Voltage Max** | 2008-04-01 → 2008-09-01 (+153d) | 2008-04-16 → 2009-03-24 (+342d) | 11d? → 145.54d? | 94.81d → 50.62d |  |  |
| 410 | Design screen for voltage max configuration | 2008-04-01 → 2008-09-01 (+153d) | 2008-04-03 → 2008-09-04 (+154d) | 1.43d? → 2d? | 94.81d → 50d | 408 → 402 | resources Himanshu [70%] → RKB [50%] |
| 411 | Implement Framework for Temporary Measurement flow | 2008-04-03 → 2008-10-29 (+209d) | 2008-04-04 → 2008-10-31 (+210d) | 1.43d? → 1.54d? | 94.81d → 51.31d | 410 → 410, 407 | resources Himanshu [70%] → Pallavi [65%] |
| 412 | Implement screen | 2008-04-04 → 2008-10-31 (+210d) | 2008-04-07 → 2008-11-04 (+211d) | 1.43d? → 1.54d? | 95.81d → 51.31d |  | resources Himanshu [70%] → Pallavi [65%] |
| 413 | Hooks the value change on screen with Temporary Measurement flow | 2008-04-07 → 2008-11-04 (+211d) | 2008-04-09 → 2008-11-05 (+210d) | 1.43d? → 1.54d? | 95.81d → 51.31d |  | resources Himanshu [70%] → Pallavi [65%] |
| 414 | Display voltage max value on Status bar | 2008-04-09 → 2008-11-05 (+210d) | 2008-04-10 → 2008-11-07 (+211d) | 1.43d → 1.54d | 95.81d → 51.31d |  | resources Himanshu [70%] → Pallavi [65%] |
| 415 | Unit test case | 2008-04-10 → 2008-11-07 (+211d) | 2008-04-15 → 2008-11-10 (+209d) | 1.43d? → 1.54d? | 94.81d → 51.31d |  | resources Himanshu [70%] → Pallavi [65%] |
| 416 | Code Review/ Unit test case review/Design screen/ Screen usability reviews with Jan Ryles | 2008-04-15 → 2009-03-23 (+342d) | 2008-04-16 → 2009-03-24 (+342d) | 1.43d → 1.54d | 94.81d → 50.62d |  | resources Himanshu [70%] → Pallavi [65%] |
| 417 | **Configure Measurements : Voltage Min** | 2008-10-14 → 2008-09-04 (-40d) | 2008-10-30 → 2009-03-18 (+139d) | 11.77d? → 138.18d? | 46.83d → 50d |  |  |
| 418 | Design screen for voltage max configuration | 2008-10-14 → 2008-09-04 (-40d) | 2008-10-15 → 2008-09-08 (-37d) | 1.54d? → 2d? | 46.83d → 50d | 376 → 410 | resources Pallavi [65%] → RKB [50%] |
| 419 | Implement Framework for Temporary Measurement flow | 2008-10-15 → 2008-11-10 (+26d) | 2008-10-17 → 2008-11-12 (+26d) |  | 46.83d → 54.98d | 418 → 418, 415 |  |
| 420 | Implement screen | 2008-10-17 → 2008-11-12 (+26d) | 2008-10-20 → 2008-11-13 (+24d) |  | 46.83d → 54.98d |  |  |
| 421 | Hooks the value change on screen with Temporary Measurement flow | 2008-10-20 → 2008-11-13 (+24d) | 2008-10-22 → 2008-11-17 (+26d) |  | 46.83d → 54.98d |  |  |
| 422 | Display voltage min value on Status bar | 2008-10-22 → 2008-11-17 (+26d) | 2008-10-24 → 2008-11-18 (+25d) |  | 47.83d → 54.98d |  |  |
| 423 | Unit test case | 2008-10-24 → 2008-11-18 (+25d) | 2008-10-27 → 2008-11-20 (+24d) |  | 47.83d → 54.98d |  |  |
| 424 | Code Review/ Unit test case review/Design screen/ Screen usability reviews with Jan Ryles | 2008-10-27 → 2009-03-16 (+140d) | 2008-10-30 → 2009-03-18 (+139d) |  | 46.83d → 54.98d |  |  |
| 425 | **Orbit Chart** | 2008-09-17 → 2008-08-25 (-23d) | 2008-09-29 → 2009-03-10 (+162d) | 7.86d? → 141.43d? | 73.28d → 59.71d |  |  |
| 426 | Implement Chart View Object | 2008-11-10 → 2008-08-25 (-77d) | 2008-11-17 → 2008-08-27 (-82d) | 4.29d? → 2.14d? | 70.28d → 59.71d | 431 → 305 |  |
| 427 | Support multiple X-Axis Type ( Lin, Log) & Y-Axis scaling | 2008-12-29 → 2008-08-28 (-123d) | 2008-12-31 → 2008-09-01 (-121d) | 1.54d? → 1.43d? | 44.83d → 59.71d | 273 → 426 | resources Pallavi [65%] → Anurag [70%] |
| 428 | Support multiple Data point units | 2008-12-31 → 2008-09-04 (-118d) | 2009-01-01 → 2008-09-08 (-115d) | 1.54d? → 1.43d? | 44.83d → 59.14d |  | resources Pallavi [65%] → Anurag [70%] |
| 429 | Multiple channels support\Marker support | 2009-01-01 → 2008-09-08 (-115d) | 2009-01-02 → 2008-09-08 (-116d) | 0.77d? → 0.71d? | 44.83d → 59.14d |  | resources Pallavi [65%] → Anurag [70%] |
| 430 | Unit test case | 2008-09-25 → 2008-09-15 (-10d) | 2008-09-29 → 2008-09-16 (-13d) |  | 73.28d → 59.57d | 269 → 429 |  |
| 431 | Code Review/ Unit test case review/Design screen/ Screen usability reviews with Jan Ryles | 2008-11-07 → 2009-03-10 (+123d) | 2008-11-10 → 2009-03-10 (+120d) | 1.43d? → 0.71d? | 70.28d → 60.44d | 167 → 430 |  |
| 432 | **Common Marker Development** | 2008-12-04 → 2008-09-18 (-77d) | 2009-01-05 → 2009-03-10 (+64d) | 22d? → 123.02d? | 68.28d → 60.43d |  |  |
| 433 | Design Marker Framework | 2008-12-04 → 2008-09-18 (-77d) | 2008-12-08 → 2008-09-22 (-77d) |  | 70.28d → 60.43d | 523 → 430 |  |
| 434 | Implementation | 2008-11-21 → 2008-09-26 (-56d) | 2008-11-26 → 2008-10-03 (-54d) | 3.08d? → 4.29d? | 39.13d → 60.43d | 352 → 433 | resources 1ETW [65%] → Anurag [70%] |
| 435 | Support Different shape | 2008-12-15 → 2008-10-06 (-70d) | 2008-12-16 → 2008-10-06 (-71d) |  | 69.28d → 61.57d | 501 → 434 |  |
| 436 | Support XY Marker | 2008-12-16 → 2008-10-10 (-67d) | 2008-12-17 → 2008-10-13 (-65d) |  | 69.28d → 60.71d |  |  |
| 437 | Support Marker Format Phase | 2008-12-17 → 2008-10-14 (-64d) | 2008-12-19 → 2008-10-16 (-64d) |  | 69.28d → 60.71d |  |  |
| 438 | Support Marker Format Magnitude | 2008-12-19 → 2008-10-20 (-60d) | 2008-12-22 → 2008-10-21 (-62d) |  | 69.28d → 60.57d |  |  |
| 439 | Support Marker Format DB | 2008-12-22 → 2008-10-23 (-60d) | 2008-12-23 → 2008-10-24 (-60d) |  | 69.28d → 60.57d |  |  |
| 440 | Support Peak Trace Marker | 2008-12-23 → 2008-10-29 (-55d) | 2008-12-26 → 2008-10-30 (-57d) |  | 68.28d → 62.07d |  |  |
| 441 | Support Next Peak | 2008-12-26 → 2008-10-31 (-56d) | 2008-12-29 → 2008-11-04 (-55d) |  | 68.28d → 62.14d |  |  |
| 442 | Support Next Largest Peak | 2008-12-29 → 2008-11-05 (-54d) | 2008-12-31 → 2008-11-07 (-54d) |  | 68.28d → 62.14d |  |  |
| 443 | Code Review/ Unit test case review/Design screen/ Screen usability reviews with Jan Ryles | 2009-01-06 → 2009-03-05 (+58d) | 2009-01-07 → 2009-03-10 (+62d) | 0.77d? → 2.86d? | 44.83d → 62.14d | 522 → 442 | resources Pallavi [65%] → Anurag [70%] |
| 444 | **Screen Capture** | 2008-07-02 → 2008-09-08 (+68d) | 2008-07-15 → 2008-10-16 (+93d) | 9.23d? → 27.08d? | 38.13d → 41.92d |  |  |
| 448 | **Menu Map** | 2008-07-15 → 2008-09-12 (+59d) | 2008-07-31 → 2008-11-10 (+102d) | 12.31d? → 40.58d? | 39.13d → 42.97d |  |  |
| 450 | Implement Traversing mechanism ( hook with FP events) | 2008-07-18 → 2008-10-20 (+94d) | 2008-07-28 → 2008-10-29 (+93d) |  | 39.13d → 42.88d | Design screen → 447, 449 |  |
| 451 | Print Menu Map | 2008-07-28 → 2008-11-05 (+100d) | 2008-07-31 → 2008-11-10 (+102d) |  | 39.13d → 42.97d |  |  |
| 452 | **HDF5 Data Writer** | 2009-02-23 → 2008-09-18 (-158d) | 2009-03-18 → 2009-04-09 (+22d) | 16.92d? → 144.15d? | 37.13d → 40d |  |  |
| 453 | Design HDF5 Data Writer | 2009-02-23 → 2008-09-18 (-158d) | 2009-02-26 → 2008-09-25 (-154d) | 3.85d? → 5d? | 37.13d → 67d | 457 → 449 | resources 1ETW [65%] → RKB [50%] |
| 454 | Implement Data Writer | 2009-02-26 → 2008-11-10 (-108d) | 2009-03-04 → 2008-11-13 (-111d) |  | 37.13d → 42.97d | 453 → 453, 451 |  |
| 455 | unit testing | 2009-02-18 → 2008-11-13 (-97d) | 2009-02-20 → 2008-11-18 (-94d) | 1.54d? → 3.08d? | 37.13d → 42.97d | 460 → 454 |  |
| 456 | MathLab Compatbility test | 2009-03-09 → 2008-12-08 (-91d) | 2009-03-17 → 2008-12-17 (-90d) |  | 37.13d → 40d | 461 → 455 |  |
| 457 | design review/unit test review | 2009-02-20 → 2009-04-08 (+47d) | 2009-02-23 → 2009-04-09 (+45d) |  | 37.13d → 40d | 455 → 456 |  |

| ID | Task | Start | Finish | Duration | Total float | Predecessors | Other |
| --- | --- | --- | --- | --- | --- | --- | --- |
| 458 | **HDF5 Data Reader** | 2009-03-18 → 2008-09-25 (-174d) | 2009-04-01 → 2009-04-08 (+7d) | 10d? → 138.38d? | 37.13d → 40.77d |  |  |
| 459 | Design HDF5 Data Reader | 2009-03-18 → 2008-09-25 (-174d) | 2009-03-18 → 2008-09-26 (-173d) | 0.77d? → 1d? | 37.13d → 68d | 463 → 453 | resources 1ETW [65%] → RKB [50%] |
| 460 | Implement Data Reader | 2009-02-13 → 2008-12-17 (-58d) | 2009-02-18 → 2008-12-22 (-58d) |  | 37.13d → 41.77d | 330 → 459, 456 |  |
| 461 | unit testing | 2009-03-04 → 2008-12-22 (-72d) | 2009-03-09 → 2008-12-23 (-76d) | 3.08d? → 1.54d? | 37.13d → 41.77d | 454 → 460 |  |
| 462 | Corrupt file handling | 2009-03-25 → 2008-12-23 (-92d) | 2009-03-30 → 2008-12-29 (-91d) |  | 37.13d → 40.77d | 528 → 461 |  |
| 463 | design review/unit test review | 2009-03-17 → 2009-04-06 (+20d) | 2009-03-18 → 2009-04-08 (+21d) | 0.77d? → 1.54d? | 37.13d → 40.77d | 456 → 462 |  |
| 464 | **Configure Measurements : Gain & Phase margin** | 2008-08-25 → 2008-09-26 (+32d) | 2008-09-10 → 2009-03-18 (+189d) | 12.54d? → 122.54d? | 47.83d → 55.62d |  |  |
| 465 | Design screen for band power configuration | 2008-08-06 → 2008-09-26 (+51d) | 2008-08-08 → 2008-09-30 (+53d) | 1.54d? → 2d? | 48.83d → 68d | 182, 123 → 459 | resources Pallavi [65%] → RKB [50%] |
| 466 | Implement Framework for Temporary Measurement flow | 2008-07-08 → 2008-11-20 (+135d) | 2008-07-10 → 2008-11-24 (+137d) |  | 46.83d → 55.52d | Design screen for Harmonic Power configuration → 465, 423 |  |
| 467 | Implement screen ( With Live Chart) | 2008-05-07 → 2008-11-24 (+201d) | 2008-05-08 → 2008-11-26 (+202d) | 1.43d? → 1.54d? | 68.28d → 55.52d | Implement Framework for Temporary Measurement flow → 466 | resources Anurag [70%] → Pallavi [65%] |
| 468 | Hooks the value change on screen with Temporary Measurement flow | 2008-05-08 → 2008-11-26 (+202d) | 2008-05-12 → 2008-11-27 (+199d) | 1.43d? → 1.54d? | 68.28d → 55.52d |  | resources Anurag [70%] → Pallavi [65%] |
| 469 | Display band power Measurement Value on Status bar | 2008-09-04 → 2008-11-27 (+84d) | 2008-09-05 → 2008-12-01 (+87d) |  | 47.83d → 55.52d | 296 → 468 |  |
| 470 | Unit test case | 2008-10-10 → 2008-12-01 (+52d) | 2008-10-13 → 2008-12-02 (+50d) | 1.43d? → 1.54d? | 71.28d → 55.52d | 276 → 469 | resources Anurag [70%] → Pallavi [65%] |
| 471 | Code Review/ Unit test case review/Design screen/ Screen usability reviews with Jan Ryles | 2009-01-15 → 2009-03-17 (+61d) | 2009-01-16 → 2009-03-18 (+61d) | 0.77d? → 1.54d | 44.83d → 55.62d | 543 → 470 |  |
| 472 | **Configure Analyzer Type: Swept Sine** | 2008-04-09 → 2008-09-30 (+174d) | 2008-04-17 → 2009-04-06 (+354d) | 6d? → 133.85d? | 51d → 42.31d |  |  |
| 474 | Implementation | 2008-11-27 → 2008-12-29 (+32d) | 2008-12-02 → 2009-01-02 (+31d) | 3.08d? → 3.85d? | 39.13d → 42.31d | 356 → 462, 473 |  |
| 475 | Unit Testing/Code Review | 2008-04-24 → 2009-04-03 (+344d) | 2008-04-25 → 2009-04-06 (+346d) | 1.43d? → 1.54d? | 50d → 42.31d | 109 → 474 | resources Anurag [70%] → 1ETW [65%] |
| 476 | **LAN Configuration** | 2008-11-17 → 2008-02-04 (-287d) | 2008-12-01 → 2009-02-04 (+65d) | 10d? → 262.69d? | 46.83d → 85.47d |  |  |
| 478 | Implementation | 2008-11-19 → 2009-01-26 (+68d) | 2008-11-26 → 2009-01-30 (+65d) |  | 46.83d → 45.31d | Screen design/Implemenattion → 477, 474 | resources Pallavi [65%] → 1ETW [65%] |
| 479 | Unit test case for Changing configuration | 2008-11-26 → 2009-01-30 (+65d) | 2008-12-01 → 2009-02-04 (+65d) |  | 46.83d → 45.31d |  | resources Pallavi [65%] → 1ETW [65%] |
| 481 | **Display System Information** | 2008-12-04 → 2008-02-05 (-303d) | 2008-12-19 → 2009-02-26 (+69d) | 11d? → 276.54d? | 38.13d → 70.08d |  |  |
| 483 | Implementation | 2008-12-08 → 2009-02-13 (+67d) | 2008-12-16 → 2009-02-19 (+65d) |  | 38.13d → 45.54d | Screen for System information → 482, 479 |  |
| 484 | Unit test case | 2008-10-21 → 2009-02-23 (+125d) | 2008-10-22 → 2009-02-26 (+127d) | 1.43d? → 3.08d? | 71.28d → 45.23d | 304 → 483 | resources Anurag [70%] → 1ETW [65%] |
| 486 | **Display Hardware information** | 2008-12-01 → 2008-02-07 (-298d) | 2008-12-10 → 2009-03-09 (+89d) | 7.15d? → 282.69d? | 45.83d → 62.39d |  |  |
| 488 | Implementation | 2008-12-02 → 2009-03-03 (+91d) | 2008-12-08 → 2009-03-06 (+88d) |  | 46.83d → 45.23d | Screen design for Hardware information → 487, 484 | resources Pallavi [65%] → 1ETW [65%] |
| 489 | Unit Test cases | 2008-12-08 → 2009-03-06 (+88d) | 2008-12-10 → 2009-03-09 (+89d) |  | 45.83d → 45.23d |  | resources Pallavi [65%] → 1ETW [65%] |
| 491 | **Software Licensing** | 2008-07-14 → 2008-02-05 (-160d) | 2008-08-11 → 2009-01-01 (+143d) | 20d? → 237.3d? | 51d → 109.32d |  |  |
| 496 | Integrate Mirage Lic framework with CDF Licensing Capability | 2008-07-31 → 2008-12-17 (+139d) | 2008-08-06 → 2008-12-23 (+139d) | 4.29d? → 4.62d? | 53d → 58.05d | Implementing Licensing Framework → 495 | resources RKB [70%] → Pallavi [65%] |
| 497 | Unit test case for Lic verification (GUI, Measurement, SCPI etc) | 2008-08-06 → 2008-12-23 (+139d) | 2008-08-11 → 2009-01-01 (+143d) | 2.86d? → 6.15d? | 53d → 57.05d |  | resources RKB [70%] → Pallavi [65%] |
| 499 | **Self Test** | 2009-03-20 → 2008-10-22 (-149d) | 2009-03-23 → 2009-03-17 (-6d) | 1.54d? → 103.1d? | 43.29d → 57.06d |  |  |
| 501 | Implementation | 2008-12-08 → 2009-01-01 (+24d) | 2008-12-15 → 2009-01-06 (+22d) | 4.29d? → 3.08d? | 69.28d → 57.05d | 433 → 500, 497 | resources Anurag [70%] → Pallavi [65%] |
| 502 | Unit testing | 2008-11-21 → 2009-01-06 (+46d) | 2008-11-26 → 2009-01-08 (+43d) | 2.86d? → 1.54d? | 51d → 57.05d | Implementation of Measurement Flow Management → 501 | resources RKB [70%] → Pallavi [65%] |
| 504 | **Calibration** | 2008-12-18 → 2008-10-24 (-55d) | 2008-12-26 → 2009-03-13 (+77d) | 5.62d? → 99.69d? | 44.83d → 58.47d |  |  |
| 506 | Auto Calibration | 2008-12-18 → 2009-01-08 (+21d) | 2008-12-23 → 2009-01-13 (+21d) |  | 45.83d → 58.47d | 572 → 502, 505 |  |
| 507 | Calibrate once | 2008-12-23 → 2009-01-13 (+21d) | 2008-12-26 → 2009-01-15 (+20d) |  | 44.83d → 58.47d |  |  |
| 509 | **User Preference** | 2009-01-06 → 2008-10-29 (-69d) | 2009-01-22 → 2009-03-12 (+49d) | 12.31d? → 95.04d? | 37.13d → 60.12d |  |  |
| 511 | Warning Beap | 2009-01-06 → 2009-01-15 (+9d) | 2009-01-07 → 2009-01-16 (+9d) |  | 37.13d → 60.12d | 270 → 507, 510 | resources 1ETW [65%] → Pallavi [65%] |
| 512 | Front Panel lock out | 2009-01-07 → 2009-01-16 (+9d) | 2009-01-09 → 2009-01-20 (+11d) |  | 37.13d → 60.12d |  | resources 1ETW [65%] → Pallavi [65%] |
| 513 | Date/Time Format | 2009-01-09 → 2009-01-20 (+11d) | 2009-01-12 → 2009-01-21 (+9d) |  | 37.13d → 60.12d |  | resources 1ETW [65%] → Pallavi [65%] |
| 514 | Color Schema | 2009-01-12 → 2009-01-21 (+9d) | 2009-01-15 → 2009-01-26 (+11d) |  | 37.13d → 60.12d |  | resources 1ETW [65%] → Pallavi [65%] |
| 515 | Power ON & Preset State | 2009-01-15 → 2009-01-26 (+11d) | 2009-01-22 → 2009-02-02 (+11d) |  | 37.13d → 60.12d |  | resources 1ETW [65%] → Pallavi [65%] |
| 517 | **Normal Variance Chart** | 2008-10-14 → 2008-11-10 (+27d) | 2008-10-23 → 2009-03-04 (+132d) | 7.14d? → 82.21d? | 71.28d → 65.07d |  |  |
| 518 | Implement Chart View Object | 2009-01-16 → 2008-11-10 (-67d) | 2009-01-26 → 2008-11-11 (-76d) | 6.15d? → 1.43d? | 44.83d → 65.07d | 471 → 442 | resources Pallavi [65%] → Anurag [70%] |
| 519 | Support multiple X-Axis Type ( Lin, Log) & Y-Axis scaling | 2009-01-08 → 2008-11-12 (-57d) | 2009-01-12 → 2008-11-13 (-60d) | 1.54d? → 1.43d? | 44.83d → 65.71d | 301 → 518 | resources Pallavi [65%] → Anurag [70%] |
| 520 | Support multiple Data point units | 2009-01-12 → 2008-11-17 (-56d) | 2009-01-12 → 2008-11-18 (-55d) | 0.77d? → 1.43d? | 44.83d → 65.57d |  | resources Pallavi [65%] → Anurag [70%] |
| 521 | Multiple channels support\Marker support | 2009-01-12 → 2008-11-19 (-54d) | 2009-01-14 → 2008-11-20 (-55d) | 1.54d? → 0.71d? | 44.83d → 65.57d |  | resources Pallavi [65%] → Anurag [70%] |
| 522 | Unit test case | 2009-01-02 → 2008-11-24 (-39d) | 2009-01-06 → 2008-11-25 (-42d) | 1.54d? → 1.43d? | 44.83d → 65.57d | 429 → 521 | resources Pallavi [65%] → Anurag [70%] |
| 523 | Code Review/ Unit test case review/Design screen/ Screen usability reviews with Jan Ryles | 2008-12-03 → 2009-03-03 (+90d) | 2008-12-04 → 2009-03-04 (+90d) |  | 70.28d → 65.44d | 550 → 522 |  |
| 524 | **Backward comptability** | 2009-01-21 → 2008-11-26 (-56d) | 2009-02-04 → 2009-03-02 (+26d) | 10d? → 68.71d? | 68.28d → 66.57d |  |  |
| 525 | SDF Data Reader | 2009-01-21 → 2008-11-26 (-56d) | 2009-01-23 → 2008-11-27 (-57d) |  | 68.28d → 66.57d | 323, 551 → 522 |  |
| 526 | Design SDF Data Reader | 2009-01-23 → 2008-12-02 (-52d) | 2009-01-28 → 2008-12-05 (-54d) |  | 68.28d → 67.71d |  |  |
| 527 | Implement Data Reader | 2009-03-18 → 2008-12-05 (-103d) | 2009-03-23 → 2008-12-10 (-103d) | 3.08d? → 2.14d? | 37.13d → 66.71d | 459 → 526 | resources 1ETW [65%] → Anurag [70%] |
| 528 | unit testing | 2009-03-23 → 2008-12-16 (-97d) | 2009-03-25 → 2008-12-19 (-96d) | 1.54d? → 2.86d? | 37.13d → 66.64d |  | resources 1ETW [65%] → Anurag [70%] |
| 529 | design review/unit test review | 2009-03-30 → 2009-03-02 (-28d) | 2009-04-01 → 2009-03-02 (-30d) | 1.54d? → 0.71d? | 37.13d → 67.44d | 462 → 528 | resources 1ETW [65%] → Anurag [70%] |
| 530 | **Refactor at Swept sine mode** | 2008-09-12 → 2008-10-31 (+49d) | 2008-10-01 → 2008-11-26 (+56d) | 12.86d? → 18d? | 52d → 65d |  |  |
| 531 | GUI | 2008-09-12 → 2008-10-31 (+49d) | 2008-09-19 → 2008-11-10 (+52d) | 4.29d? → 6d? | 52d → 65d | 288, 323 → 510 | resources RKB [70%] → RKB [50%] |
| 532 | Automation Interface | 2008-09-19 → 2008-11-10 (+52d) | 2008-09-25 → 2008-11-18 (+54d) | 4.29d? → 6d? | 52d → 65d |  | resources RKB [70%] → RKB [50%] |
| 533 | Analysis and Measurement Layer | 2008-09-25 → 2008-11-18 (+54d) | 2008-10-01 → 2008-11-26 (+56d) | 4.29d? → 6d? | 52d → 65d |  | resources RKB [70%] → RKB [50%] |
| 534 | **Configure Analyzer Type: Octave** | 2008-04-17 → 2008-11-26 (+223d) | 2008-04-25 → 2009-03-02 (+311d) | 6d? → 67.76d? | 50d → 65d |  |  |
| 536 | Implementation | 2008-09-12 → 2009-02-23 (+164d) | 2008-09-22 → 2009-02-27 (+158d) | 5.71d? → 3.85d? | 96.81d → 67.39d | 584 → 535 | resources Himanshu [70%] → Pallavi [65%] |
| 537 | Unit Testing/Code Review | 2008-04-04 → 2009-02-27 (+329d) | 2008-04-07 → 2009-03-02 (+329d) | 1.43d? → 1.54d? | 71.28d → 67.39d | 198 → 536 | resources Anurag [70%] → Pallavi [65%] |
| 538 | **Configure Math Analysis** | 2008-10-30 → 2008-11-28 (+29d) | 2008-11-17 → 2009-03-03 (+106d) | 12.31d? → 66.43d? | 46.83d → 66.73d |  |  |
| 540 | Implement Framework for Temporary Measurement flow to display Complex conjugate result | 2008-06-24 → 2008-12-23 (+182d) | 2008-06-27 → 2008-12-29 (+185d) |  | 50d → 67.71d | Design screen for limit line configuration → 539, 528 | resources RKB [70%] → Anurag [70%] |
| 541 | Implement screen | 2008-06-27 → 2009-01-05 (+192d) | 2008-07-01 → 2009-01-07 (+190d) |  | 51d → 66.36d |  | resources RKB [70%] → Anurag [70%] |
| 542 | Hooks the value change on screen with Temporary Measurement flow | 2008-07-01 → 2009-01-12 (+195d) | 2008-07-03 → 2009-01-14 (+195d) |  | 51d → 66.43d |  | resources RKB [70%] → Anurag [70%] |
| 543 | Unit test case |  |  | 1.54d? → 1.43d? | 44.83d → 66.43d | 521 → 542 | resources Pallavi [65%] → Anurag [70%] |
| 544 | Code Review/ Unit test case review/Design screen/ Screen usability reviews with Jan Ryles | 2009-02-04 → 2009-03-02 (+26d) | 2009-02-05 → 2009-03-03 (+26d) | 1.54d? → 1.43d | 44.83d → 66.73d | 564 → 543 | resources Pallavi [65%] → Anurag [70%] |
| 545 | **Configure Limit line Analysis** | 2008-06-23 → 2008-12-02 (+162d) | 2008-07-08 → 2009-02-17 (+224d) | 11.43d? → 54.15d? | 50d → 77.01d |  |  |
| 547 | Implement Framework for Temporary Measurement flow to display Complex conjugate result | 2008-10-31 → 2009-02-02 (+94d) | 2008-11-05 → 2009-02-05 (+92d) |  | 46.83d → 66.31d | Design screen for limit line configuration → 546, 515 |  |
| 548 | Implement screen | 2008-11-05 → 2009-02-05 (+92d) | 2008-11-10 → 2009-02-09 (+91d) |  | 46.83d → 66.31d |  |  |

| ID | Task | Start | Finish | Duration | Complete | Total float | Predecessors | Other |
| --- | --- | --- | --- | --- | --- | --- | --- | --- |
| 549 | Hooks the value change on screen with Temporary Measurement flow | 2008-11-10 → 2009-02-09 (+91d) | 2008-11-12 → 2009-02-12 (+92d) |  |  | 46.83d → 66.31d |  |  |
| 550 | Unit test case | 2008-11-28 → 2009-02-12 (+76d) | 2008-12-03 → 2009-02-13 (+72d) | 2.86d? → 1.54d? |  | 70.28d → 66.31d | 187 → 549 | resources Anurag [70%] → Pallavi [65%] |
| 551 | Code Review/ Unit test case review/Design screen/ Screen usability reviews with Jan Ryles | 2008-12-31 → 2009-02-13 (+44d) | 2009-01-05 → 2009-02-17 (+43d) | 2.86d? → 1.54d |  | 68.28d → 77.01d | 442 → 550 | resources Anurag [70%] → Pallavi [65%] |
| 552 | **Configure Complex Conjugate** | 2008-06-13 → 2008-12-04 (+174d) | 2008-06-30 → 2009-03-02 (+245d) | 11.43d? → 61.43d? |  | 70.28d → 67.73d |  |  |
| 553 | Design | 2008-06-13 → 2008-12-04 (+174d) | 2008-06-16 → 2008-12-08 (+175d) | 1.43d? → 2d? |  | 70.28d → 94d | 392, 384 → 546 | was named Design screen for complex conjugate configuration; resources Anurag [70%] → RKB [50%] |
| 554 | Implement Framework for Temporary Measurement flow to display Complex conjugate result | 2008-06-16 → 2009-01-20 (+218d) | 2008-06-19 → 2009-01-22 (+217d) |  |  | 70.28d → 66d | 553 → 553, 543 |  |
| 555 | Implement screen | 2008-06-19 → 2009-01-22 (+217d) | 2008-06-23 → 2009-01-26 (+217d) |  |  | 70.28d → 66d |  |  |
| 556 | Hooks the value change on screen with Temporary Measurement flow | 2008-06-23 → 2009-02-04 (+226d) | 2008-06-26 → 2009-02-06 (+225d) |  |  | 70.28d → 65.86d |  |  |
| 557 | Unit test case | 2008-06-26 → 2009-02-10 (+229d) | 2008-06-27 → 2009-02-11 (+229d) |  |  | 71.28d → 67.57d |  |  |
| 558 | Code Review/ Unit test case review/Design screen/ Screen usability reviews with Jan Ryles | 2008-06-27 → 2009-02-27 (+245d) | 2008-06-30 → 2009-03-02 (+245d) |  |  | 71.28d → 67.73d |  |  |
| 559 | **Software Version Display / Install update** | 2008-12-19 → 2008-12-08 (-11d) | 2009-01-06 → 2009-06-04 (+149d) | 11.77d? → 127.16d? |  | 37.13d → 0d |  |  |
| 561 | Design screen for Installing software update | 2008-12-23 → 2009-03-16 (+83d) | 2008-12-26 → 2009-03-18 (+82d) |  |  | 37.13d → 45.35d | Design screen for displaying Software Version → 560, 489 |  |
| 562 | Implemenation ( Display Software version) | 2008-12-26 → 2009-03-23 (+87d) | 2008-12-30 → 2009-03-26 (+86d) |  |  | 37.13d → 45.35d |  |  |
| 563 | Implementation ( Install updates) | 2008-12-30 → 2009-03-26 (+86d) | 2009-01-01 → 2009-03-30 (+88d) |  |  | 37.13d → 45.35d |  |  |
| 564 | Unit test case | 2009-01-30 → 2009-03-30 (+59d) | 2009-02-04 → 2009-04-01 (+56d) |  |  | 44.83d → 45.35d | 193 → 563 | resources Pallavi [65%] → 1ETW [65%] |
| 566 | **Refactor at Octave Mode** | 2008-10-01 → 2008-12-11 (+71d) | 2008-10-22 → 2009-01-07 (+77d) | 14.86d? → 19d? |  | 52d → 105.16d |  |  |
| 567 | GUI | 2008-10-01 → 2008-12-11 (+71d) | 2008-10-08 → 2008-12-19 (+72d) | 4.29d? → 6d? |  | 52d → 106.16d | 533 → 560 | resources RKB [70%] → RKB [50%] |
| 568 | Automation Interface | 2008-10-08 → 2008-12-19 (+72d) | 2008-10-16 → 2008-12-30 (+75d) | 4.29d? → 6d? |  | 52d → 105.16d |  | resources RKB [70%] → RKB [50%] |
| 569 | Analysis and Measurement Layer | 2008-10-16 → 2008-12-30 (+75d) | 2008-10-22 → 2009-01-07 (+77d) | 4.29d? → 6d? |  | 52d → 105.16d |  | resources RKB [70%] → RKB [50%] |
| 570 | **Web service** | 2008-12-10 → 2009-02-13 (+65d) | 2008-12-18 → 2009-02-26 (+70d) | 6.15d? → 9.36d? |  | 45.83d → 69.3d |  |  |
| 571 | Basix LXI support pages | 2008-12-10 → 2009-02-13 (+65d) | 2008-12-15 → 2009-02-18 (+65d) | 3.08d? → 2.86d? |  | 45.83d → 69.37d | 489 → 557 | resources Pallavi [65%] → Anurag [70%] |
| 572 | With in Device Testing | 2008-12-15 → 2009-02-24 (+71d) | 2008-12-18 → 2009-02-26 (+70d) | 3.08d? → 2.86d? |  | 45.83d → 69.3d |  | resources Pallavi [65%] → Anurag [70%] |
| 573 | **Help** | 2009-01-22 → 2009-02-17 (+26d) | 2009-02-04 → 2009-03-10 (+34d) | 9.23d? → 14.49d? |  | 37.13d → 61.62d |  |  |
| 574 | Access online manual help & Display version | 2009-01-22 → 2009-02-17 (+26d) | 2009-01-26 → 2009-02-20 (+25d) |  |  | 37.13d → 61.62d |  | resources 1ETW [65%] → Pallavi [65%] |
| 575 | Installed localized help file | 2009-01-26 → 2009-02-20 (+25d) | 2009-01-28 → 2009-02-23 (+26d) |  |  | 37.13d → 61.62d | 574 → 574, 550 | resources 1ETW [65%] → Pallavi [65%] |
| 576 | Print Help in different format | 2009-01-28 → 2009-02-23 (+26d) | 2009-01-29 → 2009-02-25 (+27d) |  |  | 37.13d → 61.62d |  | resources 1ETW [65%] → Pallavi [65%] |
| 577 | Link each help button with its page | 2009-01-29 → 2009-03-04 (+34d) | 2009-02-04 → 2009-03-10 (+34d) |  |  | 37.13d → 61.67d |  | resources 1ETW [65%] → Pallavi [65%] |
| 578 | **Analysis Measurement Layer** | 2008-04-16 → 2008-02-04 A (-72d) | 2009-03-20 → 2008-05-22 (-302d) | 241.7d? → 78.8d? | 0% → 39% | 44.83d → 269.36d |  | was named Analysis Layer |
| 579 | **Error & Exception** | 2008-12-18 → 2008-02-18 A (-304d) | 2008-12-23 → 2008-02-20 A (-307d) |  | 0% → 100% | 92.81d → none |  |  |
| 580 | Define Error code for AL | 2008-12-18 → 2008-02-18 A (-304d) | 2008-12-19 → 2008-02-19 A (-304d) |  | 0% → 100% | 92.81d → none | Code Review → none | constraint none → start no earlier than 2008-02-18 |
| 581 | Provide Error code Vs Description string | 2008-12-19 → 2008-02-19 A (-304d) | 2008-12-23 → 2008-02-20 A (-307d) |  | 0% → 100% | 92.81d → none |  |  |
| 582 | **Analyzer mode management :: FFT Analyzer** | 2009-02-06 → 2008-04-04 A (-308d) | 2009-02-18 → 2008-05-22 (-272d) | 8.57d? → 34.39d? | 0% → 79% | 49d → 269.36d |  |  |
| 583 | Design interface/Framework for mode change | 2009-02-06 → 2008-04-09 A (-303d) | 2009-02-09 → 2008-04-11 A (-304d) | 1.43d? → 1.82d? | 0% → 100% | 49d → none | Code Review, Code Review → none | resources RKB [70%] → Gowie [55%] |
| 584 | Review with tech leads | 2008-09-11 → 2008-04-16 A (-148d) | 2008-09-12 → 2008-04-16 A (-149d) | 0.71d? → 0.91d? | 0% → 100% | 96.81d → none | 660 → 583 | resources Himanshu [70%] → Gowie [55%] |
| 588 | Unit testing | 2008-12-03 → 2008-04-21 A (-226d) | 2008-12-04 → 2008-04-23 A (-225d) | 1.43d? → 1.82d? | 0% → 100% | 51d → none | Implementation of Measurement Flow → 587 | resources RKB [70%] → Gowie [55%] |
| 589 | Code Review | 2008-12-04 → 2008-04-23 (-225d) | 2008-12-05 → 2008-04-24 (-225d) | 0.71d? → 0.91d |  | 51d → 290.11d |  | resources RKB [70%] → Gowie [55%] |
| 595 | Unit testing | 2008-12-12 → 2008-05-14 A (-212d) | 2008-12-16 → 2008-05-16 (-214d) | 1.43d? → 1.82d? | 0% → 66% | 50d → 269.36d | Implementation of Measurement Flow → 594 | resources RKB [70%] → Gowie [55%] |
| 596 | Code Review | 2008-12-16 → 2008-05-16 (-214d) | 2008-12-16 → 2008-05-19 (-211d) | 0.71d? → 0.91d |  | 50d → 269.36d |  | resources RKB [70%] → Gowie [55%] |
| 598 | **Trace management** | 2008-10-22 → 2008-02-04 A (-261d) | 2008-11-11 → 2008-05-15 (-180d) | 13.86d? → 73.5d? | 0% → 31% | 51d → 274.66d |  |  |
| 599 | Design Interface | 2008-10-22 → 2008-04-22 A (-183d) | 2008-10-23 → 2008-04-28 A (-178d) | 1.43d? → 3.64d? | 0% → 100% | 52d → none | 569 → 584 | resources RKB [70%] → Gowie [55%] |
| 600 | Review interface design with Team leads | 2008-10-23 → 2008-04-28 A (-178d) | 2008-10-24 → 2008-04-30 A (-177d) | 0.71d? → 1.82d? | 0% → 100% | 52d → none |  | resources RKB [70%] → Gowie [55%] |
| 603 | Code Review | 2008-12-24 → 2008-05-14 (-224d) | 2008-12-26 → 2008-05-15 (-225d) | 0.71d? → 0.91d? |  | 49d → 274.66d | 615 → 602 | resources RKB [70%] → Gowie [55%] |
| 615 | Unit testing | 2008-12-23 → 2008-02-04 (-323d) | 2008-12-24 → 2008-02-04 (-324d) | 1.43d? → 0.5d? |  | 50d → 347.66d | Implementation of Measurement Flow → none | resources RKB [70%] → Gowie [50%]; Mike [50%] |
| 620 | Unit testing | 2009-01-05 → 2008-02-04 (-336d) | 2009-01-07 → 2008-02-04 (-338d) | 2.14d? → 1d? |  | 49d → 347.16d | Implementation of Measurement Flow → none | resources RKB [70%] → none |
| 625 | Unit testing | 2009-01-14 → 2008-02-04 (-345d) | 2009-01-16 → 2008-02-04 (-347d) | 1.43d? → 1d? |  | 49d → 347.16d | Implementation of Measurement Flow → none | resources RKB [70%] → none |
| 630 | Unit testing | 2009-02-18 → 2008-02-04 (-380d) | 2009-02-20 → 2008-02-04 (-382d) | 1.54d? → 1d? |  | 44.83d → 347.16d | Implementation of Measurement Flow → none | resources Pallavi [65%] → none |
| 635 | Unit testing | 2008-05-02 → 2008-02-04 (-88d) | 2008-05-08 → 2008-02-04 (-94d) | 3.57d? → 1d? |  | 93.81d → 347.16d | Intermediate result → none | resources Himanshu [70%] → none |
| 640 | Unit testing | 2008-05-19 → 2008-02-04 (-105d) | 2008-05-22 → 2008-02-04 (-108d) | 2.86d? → 1d? |  | 93.81d → 347.16d | Intermediate result → none | resources Himanshu [70%] → none |
| 645 | Unit testing | 2008-06-02 → 2008-02-04 (-119d) | 2008-06-05 → 2008-02-04 (-122d) | 2.86d? → 1d? |  | 95.81d → 347.16d | Intermediate result → none | resources Himanshu [70%] → none |
| 659 | **Unit Conversion** | 2008-09-08 → 2008-02-04 (-217d) | 2008-10-07 → 2008-04-22 (-168d) | 21d? → 56.43d? |  | 95.81d → 291.73d |  |  |
| 660 | Design interface for unit conversion | 2008-09-08 → 2008-02-04 (-217d) | 2008-09-11 → 2008-02-12 (-212d) | 2.86d? → 5.71d? |  | 96.81d → 293.29d | Not defined ( Advance math) → none | resources Himanshu [70%] → RKB1 [35%] |
| 661 | Review with tech leads | 2009-01-29 → 2008-02-12 (-352d) | 2009-01-30 → 2008-02-14 (-351d) | 0.71d? → 1.43d? |  | 49d → 293.29d | Design interface for configuring AL mode → 660 | resources RKB [70%] → RKB1 [35%] |
| 662 | Implementation | 2009-01-30 → 2008-02-14 (-351d) | 2009-02-04 → 2008-02-21 (-349d) | 2.86d? → 5.71d? |  | 49d → 293.29d |  | resources RKB [70%] → Himanshu [70%] |
| 663 | Unit testing | 2008-06-17 → 2008-02-21 (-117d) | 2008-06-23 → 2008-02-28 (-116d) |  |  | 96.81d → 293.29d | Intermediate result → 662 |  |
| 664 | How unit will ripple down | 2008-09-25 → 2008-02-28 (-210d) | 2008-10-06 → 2008-03-11 (-209d) | 5.71d? → 8.57d? |  | 95.81d → 293.29d | Unit testing → 663 |  |
| 665 | Code Review | 2009-01-07 → 2008-04-21 (-261d) | 2009-01-08 → 2008-04-22 (-261d) | 0.71d? → 1.43d |  | 49d → 291.73d | 620 → 664 | resources RKB [70%] → Himanshu [70%] |
| 666 | **Measurement Layer** | 2008-02-04 A | 2009-05-08 → 2009-04-21 (-17d) | 329.15d? → 316.43d? | 0% → 12% | 9.99d → 31.73d |  |  |
| 667 | **Managed interface definition** | 2008-02-21 → 2008-02-04 A (-17d) | 2008-06-02 → 2008-03-31 (-63d) | 71.15d? → 40.57d? | 0% → 11% | 9.99d → 307.58d |  |  |
| 668 | **Defining (first pass)interfaces for all MVP meas** | 2008-02-21 → 2008-02-04 A (-17d) | 2008-02-26 → 2008-02-06 A (-20d) |  | 0% → 100% | 9.99d → none |  |  |
| 669 | Review with team & Incorporate Review decisions | 2008-02-21 → 2008-02-04 A (-17d) | 2008-02-26 → 2008-02-06 A (-20d) |  | 0% → 100% | 9.99d → none | Defect tracking system → none |  |
| 670 | **Transforms** | 2008-02-26 → 2008-02-06 A (-20d) | 2008-03-04 → 2008-02-14 (-19d) | 5d? → 6d? | 0% → 57% | 9.99d → 339.3d |  |  |
| 671 | FFT | 2008-02-26 → 2008-02-06 A (-20d) | 2008-02-27 → 2008-02-07 A (-20d) |  | 0% → 100% | 9.99d → none |  |  |
| 672 | STFT | 2008-02-27 → 2008-02-07 (-20d) | 2008-02-28 → 2008-02-08 (-20d) |  |  | 9.99d → 343.87d |  |  |
| 673 | Windowing | 2008-02-28 → 2008-02-08 A (-20d) | 2008-02-28 → 2008-02-12 A (-16d) |  | 0% → 100% | 9.99d → none |  |  |
| 674 | Window coeff for IE needs, Managed & Unmanaged | 2008-02-28 → 2008-02-12 A (-16d) | 2008-03-03 → 2008-02-13 A (-19d) |  | 0% → 100% | 9.99d → none |  |  |
| 675 | Resampling | 2008-03-03 → 2008-02-13 (-19d) | 2008-03-03 → 2008-02-14 (-18d) |  |  | 9.99d → 339.3d |  |  |
| 676 | ZoomFFT | 2008-03-04 → 2008-02-14 (-19d) | 2008-03-04 → 2008-02-14 (-19d) |  |  | 9.99d → 339.3d |  |  |
| 677 | **Spectrums** | 2008-03-18 → 2008-02-28 (-19d) | 2008-03-25 → 2008-03-04 (-21d) | 4.57d? → 2.86d? |  | 9.99d → 309.3d |  |  |
| 678 | Linear | 2008-03-18 → 2008-02-28 (-19d) | 2008-03-19 → 2008-02-29 (-19d) |  |  | 10.99d → 309.3d |  |  |
| 679 | Power | 2008-03-19 → 2008-02-29 (-19d) | 2008-03-20 → 2008-03-03 (-17d) |  |  | 10.99d → 308.58d |  |  |

| ID | Task | Start | Finish | Duration | Complete | Total float | Predecessors | Other |
| --- | --- | --- | --- | --- | --- | --- | --- | --- |
| 680 | Phase | 2008-03-20 → 2008-03-03 (-17d) | 2008-03-20 → 2008-03-04 (-16d) |  |  | 10.99d → 308.58d |  |  |
| 681 | Cross power | 2008-03-24 → 2008-03-04 (-20d) | 2008-03-25 → 2008-03-04 (-21d) |  |  | 9.99d → 309.3d | Auto power → 680 |  |
| 682 | **Filters** | 2008-03-25 → 2008-03-04 (-21d) | 2008-04-03 → 2008-03-13 (-21d) |  |  | 9.99d → 309.3d |  |  |
| 683 | Weighting filters | 2008-03-25 → 2008-03-04 (-21d) | 2008-03-28 → 2008-03-07 (-21d) |  |  | 9.99d → 309.3d |  |  |
| 684 | CCIR | 2008-03-28 → 2008-03-07 (-21d) | 2008-04-01 → 2008-03-11 (-21d) |  |  | 9.99d → 309.3d |  |  |
| 685 | Low Pass, high pass, band pass, notch | 2008-04-01 → 2008-03-11 (-21d) | 2008-04-03 → 2008-03-13 (-21d) |  |  | 10.99d → 309.3d |  |  |
| 686 | **Distortion** | 2008-04-03 → 2008-03-13 (-21d) | 2008-04-09 → 2008-03-20 (-20d) |  |  | 11.99d → 309.3d |  |  |
| 687 | THD | 2008-04-03 → 2008-03-13 (-21d) | 2008-04-04 → 2008-03-14 (-21d) |  |  | 11.99d → 309.3d |  |  |
| 688 | THD + Noise | 2008-04-04 → 2008-03-14 (-21d) | 2008-04-04 → 2008-03-17 (-18d) |  |  | 11.99d → 309.3d |  |  |
| 689 | SINAD | 2008-04-04 → 2008-03-17 (-18d) | 2008-04-07 → 2008-03-18 (-20d) |  |  | 11.99d → 309.3d |  |  |
| 690 | ENOB | 2008-04-07 → 2008-03-18 (-20d) | 2008-04-08 → 2008-03-18 (-21d) |  |  | 11.99d → 309.3d |  |  |
| 691 | SNR | 2008-04-08 → 2008-03-18 (-21d) | 2008-04-09 → 2008-03-19 (-21d) |  |  | 11.99d → 309.3d |  |  |
| 692 | SFDR | 2008-04-09 → 2008-03-19 (-21d) | 2008-04-09 → 2008-03-20 (-20d) |  |  | 11.99d → 309.3d |  |  |
| 693 | Averaging | 2008-04-09 → 2008-03-20 (-20d) | 2008-04-17 → 2008-03-27 (-21d) |  |  | 11.99d → 308.3d |  |  |
| 694 | Coherence | 2008-04-17 → 2008-03-27 (-21d) | 2008-04-21 → 2008-03-28 (-24d) |  |  | 10.99d → 308.3d |  |  |
| 695 | **Signal Generation** | 2008-04-21 → 2008-02-04 A (-77d) | 2008-04-25 → 2008-03-31 (-25d) | 4.29d? → 40.57d? | 0% → 19% | 10.99d → 283.19d |  |  |
| 696 | Sine | 2008-04-21 → 2008-03-28 A (-24d) | 2008-04-22 → 2008-03-31 A (-22d) |  | 0% → 100% | 10.99d → none |  |  |
| 697 | **Noise** | 2008-04-22 → 2008-02-04 (-78d) | 2008-04-25 → 2008-02-07 (-78d) | 2.86d? → 3.08d? |  | 10.99d → 320.68d |  |  |
| 698 | Random | 2008-04-22 → 2008-02-04 (-78d) | 2008-04-23 → 2008-02-04 (-79d) | 0.71d? → 0.77d? |  | 10.99d → 320.68d | Square → none | resources Kapil [70%] → Ramkumar [65%] |
| 699 | Pink | 2008-04-23 → 2008-02-04 (-79d) | 2008-04-24 → 2008-02-05 (-79d) | 0.71d? → 0.77d? |  | 10.99d → 320.68d |  | resources Kapil [70%] → Ramkumar [65%] |
| 700 | White | 2008-04-24 → 2008-02-05 (-79d) | 2008-04-25 → 2008-02-06 (-79d) | 0.71d? → 0.77d? |  | 10.99d → 320.68d |  | resources Kapil [70%] → Ramkumar [65%] |
| 701 | Gaussian | 2008-04-25 → 2008-02-06 (-79d) | 2008-04-25 → 2008-02-07 (-78d) | 0.71d? → 0.77d? |  | 10.99d → 320.68d |  | resources Kapil [70%] → Ramkumar [65%] |
| 702 | Octave | 2008-04-25 → 2008-02-07 (-78d) | 2008-04-29 → 2008-02-08 (-81d) | 1.43d? → 1.54d? |  | 10.99d → 320.68d |  | resources Kapil [70%] → Ramkumar [65%] |
| 703 | **Math** | 2008-04-29 → 2008-02-08 (-81d) | 2008-05-07 → 2008-02-19 (-78d) |  |  | 9.99d → 319.68d |  |  |
| 704 | Cepstrum | 2008-04-29 → 2008-02-08 (-81d) | 2008-04-29 → 2008-02-12 (-77d) |  |  | 10.99d → 319.68d |  |  |
| 705 | Basic Complex math | 2008-04-29 → 2008-02-12 (-77d) | 2008-04-30 → 2008-02-13 (-77d) |  |  | 10.99d → 319.68d |  |  |
| 706 | Hilbert | 2008-04-30 → 2008-02-13 (-77d) | 2008-05-05 → 2008-02-14 (-81d) |  |  | 9.99d → 319.68d |  |  |
| 707 | Conversions | 2008-05-05 → 2008-02-14 (-81d) | 2008-05-06 → 2008-02-15 (-81d) |  |  | 9.99d → 319.68d |  |  |
| 708 | Differentiation/Integration | 2008-05-06 → 2008-02-15 (-81d) | 2008-05-07 → 2008-02-18 (-79d) |  |  | 9.99d → 319.68d |  |  |
| 709 | Statistical (mean,mode…) | 2008-05-07 → 2008-02-18 (-79d) | 2008-05-07 → 2008-02-19 (-78d) |  |  | 9.99d → 319.68d |  |  |
| 710 | **Limit lines** | 2008-05-07 → 2008-02-19 (-78d) | 2008-05-09 → 2008-02-20 (-79d) |  |  | 9.99d → 319.68d |  |  |
| 711 | Upper limit | 2008-05-07 → 2008-02-19 (-78d) | 2008-05-08 → 2008-02-20 (-78d) |  |  | 9.99d → 319.68d |  |  |
| 712 | Lower limit | 2008-05-08 → 2008-02-20 (-78d) | 2008-05-09 → 2008-02-20 (-79d) |  |  | 9.99d → 319.68d |  |  |
| 713 | **Swept Sine** | 2008-05-09 → 2008-02-20 (-79d) | 2008-05-16 → 2008-02-27 (-79d) |  |  | 9.99d → 319.68d |  |  |
| 714 | Gain, Phase margins | 2008-05-09 → 2008-02-20 (-79d) | 2008-05-12 → 2008-02-21 (-81d) |  |  | 9.99d → 319.68d |  |  |
| 715 | Frequency, Damping | 2008-05-12 → 2008-02-21 (-81d) | 2008-05-12 → 2008-02-22 (-80d) |  |  | 9.99d → 319.68d |  |  |
| 716 | Frequency Response | 2008-05-12 → 2008-02-22 (-80d) | 2008-05-14 → 2008-02-25 (-79d) |  |  | 9.99d → 319.68d |  |  |
| 717 | Variance | 2008-05-14 → 2008-02-25 (-79d) | 2008-05-14 → 2008-02-26 (-78d) |  |  | 9.99d → 319.68d |  |  |
| 718 | Group Delay | 2008-05-14 → 2008-02-26 (-78d) | 2008-05-16 → 2008-02-27 (-79d) |  |  | 9.99d → 319.68d |  |  |
| 719 | **Marker Functions** | 2008-05-16 → 2008-02-27 (-79d) | 2008-05-22 → 2008-03-05 (-78d) |  |  | 9.99d → 319.68d |  |  |
| 720 | Peak Search | 2008-05-16 → 2008-02-27 (-79d) | 2008-05-19 → 2008-02-28 (-81d) |  |  | 9.99d → 319.68d |  |  |
| 721 | Next Largest Peak | 2008-05-19 → 2008-02-28 (-81d) | 2008-05-19 → 2008-02-29 (-80d) |  |  | 9.99d → 319.68d |  |  |
| 722 | Next Peak Right | 2008-05-19 → 2008-02-29 (-80d) | 2008-05-20 → 2008-02-29 (-81d) |  |  | 9.99d → 319.68d |  |  |
| 723 | Next Peak Left | 2008-05-20 → 2008-02-29 (-81d) | 2008-05-21 → 2008-03-03 (-79d) |  |  | 9.99d → 319.68d |  |  |
| 724 | Peak Tracking | 2008-05-21 → 2008-03-03 (-79d) | 2008-05-21 → 2008-03-04 (-78d) |  |  | 9.99d → 319.68d |  |  |
| 725 | Marker to Center | 2008-05-21 → 2008-03-04 (-78d) | 2008-05-22 → 2008-03-05 (-78d) |  |  | 9.99d → 319.68d |  |  |
| 726 | Orbit | 2008-05-22 → 2008-03-05 (-78d) | 2008-05-23 → 2008-03-05 (-79d) |  |  | 9.99d → 319.68d |  |  |
| 727 | **Time measurements** | 2008-05-23 → 2008-03-05 (-79d) | 2008-06-02 → 2008-03-13 (-81d) |  |  | 9.99d → 319.68d |  |  |
| 728 | Delay time function | 2008-05-23 → 2008-03-05 (-79d) | 2008-05-26 → 2008-03-06 (-81d) |  |  | 9.99d → 319.68d |  |  |
| 729 | Maximum overshoot | 2008-05-26 → 2008-03-06 (-81d) | 2008-05-26 → 2008-03-07 (-80d) |  |  | 9.99d → 319.68d |  |  |
| 730 | Rise time | 2008-05-26 → 2008-03-07 (-80d) | 2008-05-27 → 2008-03-07 (-81d) |  |  | 9.99d → 319.68d |  |  |
| 731 | Decay Time | 2008-05-27 → 2008-03-07 (-81d) | 2008-05-28 → 2008-03-10 (-79d) |  |  | 9.99d → 319.68d |  |  |
| 732 | Pulse Width | 2008-05-28 → 2008-03-10 (-79d) | 2008-05-28 → 2008-03-11 (-78d) |  |  | 9.99d → 319.68d |  |  |
| 733 | Voltage Max | 2008-05-28 → 2008-03-11 (-78d) | 2008-05-29 → 2008-03-12 (-78d) |  |  | 9.99d → 319.68d |  |  |
| 734 | Voltage Min | 2008-05-29 → 2008-03-12 (-78d) | 2008-05-30 → 2008-03-12 (-79d) |  |  | 9.99d → 319.68d |  |  |
| 735 | Settling time | 2008-05-30 → 2008-03-12 (-79d) | 2008-06-02 → 2008-03-13 (-81d) |  |  | 9.99d → 319.68d |  |  |
| 736 | **Data model design** | 2008-06-02 → 2008-05-14 A (-19d) | 2008-06-10 → 2008-05-22 A (-19d) |  | 0% → 100% | 9.99d → none |  |  |
| 737 | Review the current design/implementation | 2008-06-02 → 2008-05-14 A (-19d) | 2008-06-02 → 2008-05-14 A (-19d) |  | 0% → 100% | 9.99d → none |  |  |
| 738 | Complete the implementation | 2008-06-02 → 2008-05-14 A (-19d) | 2008-06-05 → 2008-05-19 A (-17d) |  | 0% → 100% | 9.99d → none |  |  |
| 739 | Review with the team & update | 2008-06-05 → 2008-05-19 A (-17d) | 2008-06-09 → 2008-05-21 A (-19d) |  | 0% → 100% | 9.99d → none |  |  |
| 740 | Build some test cases | 2008-06-09 → 2008-05-21 A (-19d) | 2008-06-10 → 2008-05-22 A (-19d) |  | 0% → 100% | 9.99d → none |  |  |
| 741 | **Infrastrucutre development** | 2008-06-10 → 2008-05-22 A (-19d) | 2008-06-26 → 2008-06-09 A (-17d) |  | 0% → 100% | 9.99d → none |  |  |
| 742 | VS Project setup and tuning | 2008-06-10 → 2008-05-22 A (-19d) | 2008-06-13 → 2008-05-27 A (-17d) |  | 0% → 100% | 9.99d → none |  |  |
| 743 | Performance test framework and setup | 2008-06-13 → 2008-05-27 A (-17d) | 2008-06-18 → 2008-05-30 A (-19d) |  | 0% → 100% | 9.99d → none |  |  |
| 744 | Verfication test process and guidelines | 2008-06-18 → 2008-05-30 A (-19d) | 2008-06-23 → 2008-06-04 A (-19d) |  | 0% → 100% | 9.99d → none |  |  |
| 745 | Documentation tool setup for library users | 2008-06-23 → 2008-06-04 A (-19d) | 2008-06-24 → 2008-06-05 A (-19d) |  | 0% → 100% | 9.99d → none |  |  |
| 746 | FxCop setup | 2008-06-24 → 2008-06-05 A (-19d) | 2008-06-26 → 2008-06-09 A (-17d) |  | 0% → 100% | 9.99d → none |  |  |
| 747 | **Research/Implementation** | 2008-02-04 A | 2009-05-08 → 2009-04-21 (-17d) | 329.15d? → 316.43d? | 0% → 2% | 9.99d → 31.73d |  |  |
| 748 | **FFT** | 2008-06-26 → 2008-06-09 A (-17d) | 2008-07-09 → 2008-06-20 A (-19d) |  | 0% → 100% | 9.99d → none |  |  |
| 749 | Review meas catalog & update | 2008-06-26 → 2008-06-09 A (-17d) | 2008-06-27 → 2008-06-10 A (-17d) |  | 0% → 100% | 9.99d → none |  |  |

| ID | Task | Start | Finish | Duration | Complete | Total float | Other |
| --- | --- | --- | --- | --- | --- | --- | --- |
| 750 | Review managed & Native interface definitions | 2008-06-27 → 2008-06-10 A (-17d) | 2008-06-30 → 2008-06-11 A (-19d) |  | 0% → 100% | 9.99d → none |  |
| 751 | Implementation | 2008-06-30 → 2008-06-11 A (-19d) | 2008-07-02 → 2008-06-13 A (-19d) |  | 0% → 100% | 9.99d → none |  |
| 752 | Unit test the code | 2008-07-02 → 2008-06-13 A (-19d) | 2008-07-02 → 2008-06-16 A (-16d) |  | 0% → 100% | 9.99d → none |  |
| 753 | **Verifcation** | 2008-07-02 → 2008-06-16 A (-16d) | 2008-07-07 → 2008-06-18 A (-19d) |  | 0% → 100% | 9.99d → none |  |
| 754 | Develop the verification code in Matlab | 2008-07-02 → 2008-06-16 A (-16d) | 2008-07-03 → 2008-06-16 A (-17d) |  | 0% → 100% | 9.99d → none |  |
| 755 | Define the test input data & pass to ML & MATLAB | 2008-07-03 → 2008-06-16 A (-17d) | 2008-07-04 → 2008-06-17 A (-17d) |  | 0% → 100% | 9.99d → none |  |
| 756 | Compare the outputs | 2008-07-04 → 2008-06-17 A (-17d) | 2008-07-07 → 2008-06-18 A (-19d) |  | 0% → 100% | 9.99d → none |  |
| 757 | Measure performance & document mesaurements | 2008-07-07 → 2008-06-18 A (-19d) | 2008-07-08 → 2008-06-19 A (-19d) |  | 0% → 100% | 9.99d → none |  |
| 758 | Interface definition, code, Nunit , Result & Doc review | 2008-07-08 → 2008-06-19 A (-19d) | 2008-07-09 → 2008-06-20 A (-19d) |  | 0% → 100% | 9.99d → none |  |
| 759 | **STFT** | 2008-07-09 → 2008-06-20 (-19d) | 2008-07-23 → 2008-07-07 (-16d) |  |  | 9.99d → 238.15d |  |
| 760 | Review meas catalog & update | 2008-07-09 → 2008-06-20 (-19d) | 2008-07-09 → 2008-06-23 (-16d) |  |  | 9.99d → 31.73d |  |
| 761 | Review managed & Native interface definitions | 2008-07-09 → 2008-06-23 (-16d) | 2008-07-10 → 2008-06-23 (-17d) |  |  | 9.99d → 238.15d |  |
| 762 | Implementation Write code | 2008-07-10 → 2008-06-23 (-17d) | 2008-07-17 → 2008-06-30 (-17d) |  |  | 9.99d → 238.15d |  |
| 763 | Unit test the code | 2008-07-17 → 2008-06-30 (-17d) | 2008-07-18 → 2008-07-01 (-17d) |  |  | 9.99d → 238.15d |  |
| 764 | **Verifcation** | 2008-07-18 → 2008-07-01 (-17d) | 2008-07-22 → 2008-07-03 (-19d) |  |  | 9.99d → 238.15d |  |
| 765 | Develop the verification code in Matlab | 2008-07-18 → 2008-07-01 (-17d) | 2008-07-21 → 2008-07-02 (-19d) |  |  | 9.99d → 238.15d |  |
| 766 | Define the test input data & pass to ML & MATLAB | 2008-07-21 → 2008-07-02 (-19d) | 2008-07-21 → 2008-07-02 (-19d) |  |  | 9.99d → 238.15d |  |
| 767 | Compare the outputs | 2008-07-21 → 2008-07-02 (-19d) | 2008-07-22 → 2008-07-03 (-19d) |  |  | 9.99d → 238.15d |  |
| 768 | Measure performance & document mesaurements | 2008-07-22 → 2008-07-03 (-19d) | 2008-07-23 → 2008-07-04 (-19d) |  |  | 9.99d → 238.15d |  |
| 769 | Interface definition, code, Nunit , Result & Doc review | 2008-07-23 → 2008-07-04 (-19d) | 2008-07-23 → 2008-07-07 (-16d) |  |  | 9.99d → 32.73d |  |
| 770 | **Windowing** | 2008-07-23 → 2008-07-07 A (-16d) | 2008-08-04 → 2008-07-16 (-19d) | 7.14d? → 7.69d? | 0% → 10% | 9.99d → 189.74d |  |
| 771 | Review meas catalog & update | 2008-07-23 → 2008-07-07 A (-16d) | 2008-07-24 → 2008-07-07 A (-17d) | 0.71d? → 0.77d? | 0% → 100% | 9.99d → none | resources Kapil [70%] → ShashiP [65%] |
| 772 | Review managed & Native interface definitions | 2008-07-24 → 2008-07-07 (-17d) | 2008-07-25 → 2008-07-08 (-17d) | 0.71d? → 0.77d? |  | 9.99d → 189.74d | resources Kapil [70%] → ShashiP [65%] |
| 773 | Write code | 2008-07-25 → 2008-07-08 (-17d) | 2008-07-28 → 2008-07-10 (-18d) | 1.43d? → 1.54d? |  | 9.99d → 189.74d | resources Kapil [70%] → ShashiP [65%] |
| 774 | Unit test the code | 2008-07-28 → 2008-07-10 (-18d) | 2008-07-29 → 2008-07-10 (-19d) | 0.71d? → 0.77d? |  | 9.99d → 189.74d | resources Kapil [70%] → ShashiP [65%] |
| 775 | **Verifcation** | 2008-07-29 → 2008-07-10 (-19d) | 2008-07-31 → 2008-07-15 (-16d) | 2.14d? → 2.31d? |  | 9.99d → 189.74d |  |
| 776 | Develop the verification code in Matlab | 2008-07-29 → 2008-07-10 (-19d) | 2008-07-30 → 2008-07-11 (-19d) | 0.71d? → 0.77d? |  | 9.99d → 189.74d | resources Kapil [70%] → ShashiP [65%] |
| 777 | Define the test input data & pass to ML & MATLAB | 2008-07-30 → 2008-07-11 (-19d) | 2008-07-30 → 2008-07-14 (-16d) | 0.71d? → 0.77d? |  | 9.99d → 189.74d | resources Kapil [70%] → ShashiP [65%] |
| 778 | Compare the outputs | 2008-07-30 → 2008-07-14 (-16d) | 2008-07-31 → 2008-07-15 (-16d) | 0.71d? → 0.77d? |  | 9.99d → 189.74d | resources Kapil [70%] → ShashiP [65%] |
| 779 | Measure performance & document mesaurements | 2008-07-31 → 2008-07-15 (-16d) | 2008-08-01 → 2008-07-15 (-17d) | 0.71d? → 0.77d? |  | 9.99d → 189.74d | resources Kapil [70%] → ShashiP [65%] |
| 780 | Interface definition, code, Nunit , Result & Doc review | 2008-08-01 → 2008-07-15 (-17d) | 2008-08-04 → 2008-07-16 (-19d) | 0.71d? → 0.77d? |  | 10.99d → 189.74d | resources Kapil [70%] → ShashiP [65%] |
| 781 | **Resampling** | 2008-08-04 → 2008-07-16 (-19d) | 2008-08-19 → 2008-07-30 (-20d) | 11d? → 10d? |  | 9.99d → 189.74d |  |
| 782 | Review meas catalog & update | 2008-08-04 → 2008-07-16 (-19d) | 2008-08-05 → 2008-07-18 (-18d) |  |  | 10.99d → 189.74d |  |
| 783 | Review managed & Native interface definitions | 2008-08-05 → 2008-07-18 (-18d) | 2008-08-06 → 2008-07-21 (-16d) |  |  | 10.99d → 189.74d |  |
| 784 | Write code | 2008-08-06 → 2008-07-21 (-16d) | 2008-08-11 → 2008-07-24 (-18d) |  |  | 10.99d → 189.74d |  |
| 785 | Unit test the code | 2008-08-11 → 2008-07-24 (-18d) | 2008-08-12 → 2008-07-25 (-18d) |  |  | 10.99d → 189.74d |  |
| 786 | **Verifcation** | 2008-08-12 → 2008-07-25 (-18d) | 2008-08-14 → 2008-07-29 (-16d) |  |  | 10.99d → 189.74d |  |
| 787 | Develop the verification code in Matlab | 2008-08-12 → 2008-07-25 (-18d) | 2008-08-13 → 2008-07-25 (-19d) |  |  | 10.99d → 189.74d |  |
| 788 | Define the test input data & pass to ML & MATLAB | 2008-08-13 → 2008-07-25 (-19d) | 2008-08-13 → 2008-07-28 (-16d) |  |  | 10.99d → 189.74d |  |
| 789 | Compare the outputs | 2008-08-13 → 2008-07-28 (-16d) | 2008-08-14 → 2008-07-29 (-16d) |  |  | 10.99d → 189.74d |  |
| 790 | Measure performance & document mesaurements | 2008-08-14 → 2008-07-29 (-16d) | 2008-08-18 → 2008-07-29 (-20d) |  |  | 9.99d → 189.74d |  |
| 791 | Interface definition, code, Nunit , Result & Doc review | 2008-08-18 → 2008-07-29 (-20d) | 2008-08-19 → 2008-07-30 (-20d) |  |  | 9.99d → 189.74d |  |
| 792 | **ZoomFFT** | 2008-08-19 → 2008-07-30 (-20d) | 2008-09-02 → 2008-08-13 (-20d) |  |  | 9.99d → 189.74d |  |
| 793 | Review meas catalog & update | 2008-08-19 → 2008-07-30 (-20d) | 2008-08-19 → 2008-07-31 (-19d) |  |  | 9.99d → 189.74d |  |
| 794 | Review managed & Native interface definitions | 2008-08-19 → 2008-07-31 (-19d) | 2008-08-20 → 2008-08-01 (-19d) |  |  | 9.99d → 189.74d |  |
| 795 | Write code | 2008-08-20 → 2008-08-01 (-19d) | 2008-08-25 → 2008-08-05 (-20d) |  |  | 10.99d → 189.74d |  |
| 796 | Unit test the code | 2008-08-25 → 2008-08-05 (-20d) | 2008-08-26 → 2008-08-07 (-19d) |  |  | 10.99d → 189.74d |  |
| 797 | **Verifcation** | 2008-08-26 → 2008-08-07 (-19d) | 2008-08-29 → 2008-08-12 (-17d) |  |  | 10.99d → 189.74d |  |
| 798 | Develop the verification code in Matlab | 2008-08-26 → 2008-08-07 (-19d) | 2008-08-28 → 2008-08-08 (-20d) |  |  | 10.99d → 189.74d |  |
| 799 | Define the test input data & pass to ML & MATLAB | 2008-08-28 → 2008-08-08 (-20d) | 2008-08-28 → 2008-08-11 (-17d) |  |  | 10.99d → 189.74d |  |
| 800 | Compare the outputs | 2008-08-28 → 2008-08-11 (-17d) | 2008-08-29 → 2008-08-12 (-17d) |  |  | 10.99d → 189.74d |  |
| 801 | Measure performance & document mesaurements | 2008-08-29 → 2008-08-12 (-17d) | 2008-09-01 → 2008-08-12 (-20d) |  |  | 10.99d → 189.74d |  |
| 802 | Interface definition, code, Nunit , Result & Doc review | 2008-09-01 → 2008-08-12 (-20d) | 2008-09-02 → 2008-08-13 (-20d) |  |  | 10.99d → 189.74d |  |
| 803 | **Spectrums** | 2008-09-02 → 2008-08-13 A (-20d) | 2008-10-15 → 2008-09-25 (-20d) | 31.57d? → 31.18d? | 0% → 3% | 10.99d → 179.28d |  |
| 804 | **Linear** | 2008-09-02 → 2008-08-13 (-20d) | 2008-09-11 → 2008-08-25 (-17d) |  |  | 9.99d → 188.74d |  |
| 805 | Review meas catalog & update | 2008-09-02 → 2008-08-13 (-20d) | 2008-09-02 → 2008-08-14 (-19d) |  |  | 10.99d → 189.74d |  |
| 806 | Review managed & Native interface definitions | 2008-09-02 → 2008-08-14 (-19d) | 2008-09-04 → 2008-08-18 (-17d) |  |  | 9.99d → 188.74d |  |
| 807 | Write code | 2008-09-04 → 2008-08-18 (-17d) | 2008-09-05 → 2008-08-18 (-18d) |  |  | 9.99d → 188.74d |  |
| 808 | Unit test the code | 2008-09-05 → 2008-08-18 (-18d) | 2008-09-05 → 2008-08-19 (-17d) |  |  | 9.99d → 188.74d |  |
| 809 | **Verifcation** | 2008-09-05 → 2008-08-19 (-17d) | 2008-09-10 → 2008-08-21 (-20d) |  |  | 9.99d → 188.74d |  |
| 810 | Develop the verification code in Matlab | 2008-09-05 → 2008-08-19 (-17d) | 2008-09-08 → 2008-08-20 (-19d) |  |  | 9.99d → 188.74d |  |
| 811 | Define the test input data & pass to ML & MATLAB | 2008-09-08 → 2008-08-20 (-19d) | 2008-09-09 → 2008-08-20 (-20d) |  |  | 9.99d → 188.74d |  |
| 812 | Compare the outputs | 2008-09-09 → 2008-08-20 (-20d) | 2008-09-10 → 2008-08-21 (-20d) |  |  | 9.99d → 188.74d |  |
| 813 | Measure performance & document mesaurements | 2008-09-10 → 2008-08-21 (-20d) | 2008-09-10 → 2008-08-22 (-19d) |  |  | 9.99d → 188.74d |  |
| 814 | Interface definition, code, Nunit , Result & Doc review | 2008-09-10 → 2008-08-22 (-19d) | 2008-09-11 → 2008-08-25 (-17d) |  |  | 9.99d → 188.74d |  |
| 815 | **Power** | 2008-09-11 → 2008-08-25 (-17d) | 2008-09-19 → 2008-09-02 (-17d) |  |  | 9.99d → 188.74d |  |
| 816 | Review meas catalog & update | 2008-09-11 → 2008-08-25 (-17d) | 2008-09-12 → 2008-08-25 (-18d) |  |  | 9.99d → 188.74d |  |
| 817 | Review managed & Native interface definitions | 2008-09-12 → 2008-08-25 (-18d) | 2008-09-12 → 2008-08-26 (-17d) |  |  | 9.99d → 188.74d |  |
| 818 | Write code | 2008-09-12 → 2008-08-26 (-17d) | 2008-09-15 → 2008-08-27 (-19d) |  |  | 9.99d → 188.74d |  |
| 819 | Unit test the code | 2008-09-15 → 2008-08-27 (-19d) | 2008-09-16 → 2008-08-27 (-20d) |  |  | 9.99d → 188.74d |  |

| ID | Task | Start | Finish | Duration | Complete | Total float | Other |
| --- | --- | --- | --- | --- | --- | --- | --- |
| 820 | **Verifcation** | 2008-09-16 → 2008-08-27 (-20d) | 2008-09-18 → 2008-09-01 (-17d) |  |  | 9.99d → 188.74d |  |
| 821 | Develop the verification code in Matlab | 2008-09-16 → 2008-08-27 (-20d) | 2008-09-17 → 2008-08-28 (-20d) |  |  | 9.99d → 188.74d |  |
| 822 | Define the test input data & pass to ML & MATLAB | 2008-09-17 → 2008-08-28 (-20d) | 2008-09-17 → 2008-08-29 (-19d) |  |  | 9.99d → 188.74d |  |
| 823 | Compare the outputs | 2008-09-17 → 2008-08-29 (-19d) | 2008-09-18 → 2008-09-01 (-17d) |  |  | 9.99d → 188.74d |  |
| 824 | Measure performance & document mesaurements | 2008-09-18 → 2008-09-01 (-17d) | 2008-09-19 → 2008-09-01 (-18d) |  |  | 10.99d → 188.74d |  |
| 825 | Interface definition, code, Nunit , Result & Doc review | 2008-09-19 → 2008-09-01 (-18d) | 2008-09-19 → 2008-09-02 (-17d) |  |  | 10.99d → 188.74d |  |
| 826 | **Phase** | 2008-09-19 → 2008-09-02 (-17d) | 2008-10-01 → 2008-09-15 (-16d) | 7.86d? → 8.86d? |  | 10.99d → 187.74d |  |
| 827 | Review meas catalog & update | 2008-09-19 → 2008-09-02 (-17d) | 2008-09-22 → 2008-09-04 (-18d) |  |  | 10.99d → 187.74d |  |
| 828 | Review managed & Native interface definitions | 2008-09-22 → 2008-09-04 (-18d) | 2008-09-23 → 2008-09-04 (-19d) |  |  | 10.99d → 187.74d |  |
| 829 | Write code | 2008-09-23 → 2008-09-04 (-19d) | 2008-09-24 → 2008-09-08 (-16d) |  |  | 10.99d → 187.74d |  |
| 830 | Unit test the code | 2008-09-24 → 2008-09-08 (-16d) | 2008-09-25 → 2008-09-09 (-16d) |  |  | 11.99d → 187.74d |  |
| 831 | **Verifcation** | 2008-09-25 → 2008-09-09 (-16d) | 2008-09-30 → 2008-09-11 (-19d) |  |  | 11.99d → 187.74d |  |
| 832 | Develop the verification code in Matlab | 2008-09-25 → 2008-09-09 (-16d) | 2008-09-26 → 2008-09-10 (-16d) |  |  | 11.99d → 187.74d |  |
| 833 | Define the test input data & pass to ML & MATLAB | 2008-09-26 → 2008-09-10 (-16d) | 2008-09-29 → 2008-09-11 (-18d) |  |  | 11.99d → 187.74d |  |
| 834 | Compare the outputs | 2008-09-29 → 2008-09-11 (-18d) | 2008-09-30 → 2008-09-11 (-19d) |  |  | 11.99d → 187.74d |  |
| 835 | Measure performance & document mesaurements | 2008-09-30 → 2008-09-11 (-19d) | 2008-10-01 → 2008-09-12 (-19d) |  |  | 11.99d → 187.74d |  |
| 836 | Interface definition, code, Nunit , Result & Doc review | 2008-10-01 → 2008-09-12 (-19d) | 2008-10-01 → 2008-09-15 (-16d) |  |  | 11.99d → 187.74d |  |
| 837 | **Cross power** | 2008-10-01 → 2008-09-15 A (-16d) | 2008-10-15 → 2008-09-25 (-20d) | 9.86d? → 8.46d? | 0% → 9% | 10.99d → 34.12d |  |
| 838 | Review meas catalog & update | 2008-10-01 → 2008-09-15 A (-16d) | 2008-10-03 → 2008-09-16 A (-17d) | 0.71d? → 0.77d? | 0% → 100% | 10.99d → none | resources Kapil [70%] → Ramkumar [65%] |
| 839 | Review managed & Native interface definitions | 2008-10-03 → 2008-09-16 (-17d) | 2008-10-06 → 2008-09-16 (-20d) | 0.71d? → 0.77d? |  | 10.99d → 34.12d | resources Kapil [70%] → Ramkumar [65%] |
| 840 | Write code | 2008-10-06 → 2008-09-16 (-20d) | 2008-10-07 → 2008-09-18 (-19d) | 1.43d? → 1.54d? |  | 10.99d → 34.12d | resources Kapil [70%] → Ramkumar [65%] |
| 841 | Unit test the code | 2008-10-07 → 2008-09-18 (-19d) | 2008-10-08 → 2008-09-19 (-19d) | 0.71d? → 0.77d? |  | 10.99d → 34.12d | resources Kapil [70%] → Ramkumar [65%] |
| 842 | **Verifcation** | 2008-10-08 → 2008-09-19 (-19d) | 2008-10-14 → 2008-09-24 (-20d) | 3.86d? → 3.08d? |  | 10.99d → 34.12d |  |
| 843 | Develop the verification code in Matlab | 2008-10-08 → 2008-09-19 (-19d) | 2008-10-10 → 2008-09-22 (-18d) | 1.43d? → 1.54d? |  | 9.99d → 34.12d | resources Kapil [70%] → Ramkumar [65%] |
| 844 | Define the test input data & pass to ML & MATLAB | 2008-10-10 → 2008-09-22 (-18d) | 2008-10-13 → 2008-09-23 (-20d) | 0.71d? → 0.77d? |  | 9.99d → 34.12d | resources Kapil [70%] → Ramkumar [65%] |
| 845 | Compare the outputs | 2008-10-13 → 2008-09-23 (-20d) | 2008-10-14 → 2008-09-24 (-20d) | 0.71d? → 0.77d? |  | 9.99d → 34.12d | resources Kapil [70%] → Ramkumar [65%] |
| 846 | Measure performance & document mesaurements | 2008-10-14 → 2008-09-24 (-20d) | 2008-10-14 → 2008-09-25 (-19d) | 0.71d? → 0.77d? |  | 10.99d → 34.12d | resources Kapil [70%] → Ramkumar [65%] |
| 847 | Interface definition, code, Nunit , Result & Doc review | 2008-10-14 → 2008-09-25 (-19d) | 2008-10-15 → 2008-09-25 (-20d) | 0.71d? → 0.77d? |  | 10.99d → 34.12d | resources Kapil [70%] → Ramkumar [65%] |
| 848 | **Limit lines** | 2008-10-15 → 2008-09-25 (-20d) | 2008-11-11 → 2008-10-23 (-19d) | 18.86d? → 19.86d? |  | 9.99d → 32.12d |  |
| 849 | Review meas catalog & update | 2008-10-15 → 2008-09-25 (-20d) | 2008-10-16 → 2008-09-26 (-20d) |  |  | 10.99d → 34.12d |  |
| 850 | Review managed & Native interface definitions | 2008-10-16 → 2008-09-26 (-20d) | 2008-10-17 → 2008-09-29 (-18d) |  |  | 10.99d → 34.12d |  |
| 851 | Write code | 2008-10-17 → 2008-09-29 (-18d) | 2008-10-24 → 2008-10-07 (-17d) |  |  | 10.99d → 33.12d |  |
| 852 | Unit test the code | 2008-10-24 → 2008-10-07 (-17d) | 2008-10-29 → 2008-10-10 (-19d) |  |  | 9.99d → 32.12d |  |
| 853 | **Verifcation** | 2008-10-29 → 2008-10-10 (-19d) | 2008-11-03 → 2008-10-16 (-18d) |  |  | 9.99d → 32.12d |  |
| 854 | Develop the verification code in Matlab | 2008-10-29 → 2008-10-10 (-19d) | 2008-10-30 → 2008-10-13 (-17d) |  |  | 9.99d → 32.12d |  |
| 855 | Define the test input data & pass to ML & MATLAB | 2008-10-30 → 2008-10-13 (-17d) | 2008-11-03 → 2008-10-15 (-19d) |  |  | 9.99d → 32.12d |  |
| 856 | Compare the outputs | 2008-11-03 → 2008-10-15 (-19d) | 2008-11-03 → 2008-10-16 (-18d) |  |  | 9.99d → 32.12d |  |
| 857 | Measure performance & document mesaurements | 2008-11-03 → 2008-10-16 (-18d) | 2008-11-04 → 2008-10-16 (-19d) |  |  | 9.99d → 32.12d |  |
| 858 | Interface definition, code, Nunit , Result & Doc review | 2008-11-04 → 2008-10-16 (-19d) | 2008-11-05 → 2008-10-17 (-19d) |  |  | 9.99d → 32.12d |  |
| 859 | Upper limit | 2008-11-05 → 2008-10-17 (-19d) | 2008-11-07 → 2008-10-21 (-17d) |  |  | 9.99d → 32.12d |  |
| 860 | Lower limit | 2008-11-07 → 2008-10-21 (-17d) | 2008-11-11 → 2008-10-23 (-19d) |  |  | 9.99d → 32.12d |  |
| 861 | **Swept Sine** | 2008-11-11 → 2008-10-23 (-19d) | 2008-12-01 → 2008-11-14 (-17d) | 14.29d? → 15.29d? |  | 9.99d → 32.12d |  |
| 862 | Review meas catalog & update | 2008-11-11 → 2008-10-23 (-19d) | 2008-11-12 → 2008-10-24 (-19d) |  |  | 9.99d → 32.12d |  |
| 863 | Review managed & Native interface definitions | 2008-11-12 → 2008-10-24 (-19d) | 2008-11-13 → 2008-10-27 (-17d) |  |  | 9.99d → 33.12d |  |
| 864 | Write code | 2008-11-13 → 2008-10-27 (-17d) | 2008-11-20 → 2008-11-04 (-16d) |  |  | 9.99d → 32.12d |  |
| 865 | Unit test the code | 2008-11-20 → 2008-11-04 (-16d) | 2008-11-24 → 2008-11-07 (-17d) |  |  | 9.99d → 32.12d |  |
| 866 | **Verifcation** | 2008-11-24 → 2008-11-07 (-17d) | 2008-11-28 → 2008-11-12 (-16d) |  |  | 9.99d → 32.12d |  |
| 867 | Develop the verification code in Matlab | 2008-11-24 → 2008-11-07 (-17d) | 2008-11-26 → 2008-11-10 (-16d) |  |  | 9.99d → 32.12d |  |
| 868 | Define the test input data & pass to ML & MATLAB | 2008-11-26 → 2008-11-10 (-16d) | 2008-11-27 → 2008-11-11 (-16d) |  |  | 10.99d → 32.12d |  |
| 869 | Compare the outputs | 2008-11-27 → 2008-11-11 (-16d) | 2008-11-28 → 2008-11-12 (-16d) |  |  | 10.99d → 33.12d |  |
| 870 | Measure performance & document mesaurements | 2008-11-28 → 2008-11-12 (-16d) | 2008-12-01 → 2008-11-13 (-18d) |  |  | 10.99d → 33.12d |  |
| 871 | Interface definition, code, Nunit , Result & Doc review | 2008-12-01 → 2008-11-13 (-18d) | 2008-12-01 → 2008-11-14 (-17d) |  |  | 10.99d → 33.12d |  |
| 872 | **Gain, Phase margins** | 2008-12-01 → 2008-11-14 (-17d) | 2008-12-23 → 2008-12-04 (-19d) | 15.29d? → 14.29d? |  | 10.99d → 33.12d |  |
| 873 | Review meas catalog & update | 2008-12-01 → 2008-11-14 (-17d) | 2008-12-02 → 2008-11-14 (-18d) |  |  | 10.99d → 33.12d |  |
| 874 | Review managed & Native interface definitions | 2008-12-02 → 2008-11-14 (-18d) | 2008-12-03 → 2008-11-18 (-15d) |  |  | 10.99d → 33.12d |  |
| 875 | Write code | 2008-12-03 → 2008-11-18 (-15d) | 2008-12-11 → 2008-11-25 (-16d) |  |  | 10.99d → 33.12d |  |
| 876 | Unit test the code | 2008-12-11 → 2008-11-25 (-16d) | 2008-12-16 → 2008-11-27 (-19d) |  |  | 10.99d → 33.12d |  |
| 877 | **Verifcation** | 2008-12-16 → 2008-11-27 (-19d) | 2008-12-19 → 2008-12-02 (-17d) |  |  | 10.99d → 33.12d |  |
| 878 | Develop the verification code in Matlab | 2008-12-16 → 2008-11-27 (-19d) | 2008-12-17 → 2008-11-28 (-19d) |  |  | 10.99d → 33.12d |  |
| 879 | Define the test input data & pass to ML & MATLAB | 2008-12-17 → 2008-11-28 (-19d) | 2008-12-18 → 2008-12-02 (-16d) |  |  | 10.99d → 33.12d |  |
| 880 | Compare the outputs | 2008-12-18 → 2008-12-02 (-16d) | 2008-12-19 → 2008-12-02 (-17d) |  |  | 10.99d → 33.12d |  |
| 881 | Measure performance & document mesaurements | 2008-12-19 → 2008-12-02 (-17d) | 2008-12-22 → 2008-12-03 (-19d) |  |  | 10.99d → 33.12d |  |
| 882 | Interface definition, code, Nunit , Result & Doc review | 2008-12-22 → 2008-12-03 (-19d) | 2008-12-23 → 2008-12-04 (-19d) |  |  | 10.99d → 33.12d |  |
| 883 | **Frequency, Damping** | 2008-12-23 → 2008-12-04 (-19d) | 2009-01-13 → 2008-12-26 (-18d) | 15.29d? → 16.29d? |  | 9.99d → 31.12d |  |
| 884 | Review meas catalog & update | 2008-12-23 → 2008-12-04 (-19d) | 2008-12-23 → 2008-12-05 (-18d) |  |  | 10.99d → 33.12d |  |
| 885 | Review managed & Native interface definitions | 2008-12-23 → 2008-12-05 (-18d) | 2008-12-26 → 2008-12-08 (-18d) |  |  | 9.99d → 33.12d |  |
| 886 | Write code | 2008-12-26 → 2008-12-08 (-18d) | 2009-01-02 → 2008-12-16 (-17d) |  |  | 9.99d → 32.12d |  |
| 887 | Unit test the code | 2009-01-02 → 2008-12-16 (-17d) | 2009-01-06 → 2008-12-18 (-19d) |  |  | 9.99d → 32.12d |  |
| 888 | **Verifcation** | 2009-01-06 → 2008-12-18 (-19d) | 2009-01-09 → 2008-12-24 (-16d) |  |  | 9.99d → 32.12d |  |
| 889 | Develop the verification code in Matlab | 2009-01-06 → 2008-12-18 (-19d) | 2009-01-07 → 2008-12-22 (-16d) |  |  | 9.99d → 32.12d |  |

| ID | Task | Start | Finish | Duration | Complete | Total float | Predecessors | Other |
| --- | --- | --- | --- | --- | --- | --- | --- | --- |
| 890 | Define the test input data & pass to ML & MATLAB | 2009-01-07 → 2008-12-22 (-16d) | 2009-01-09 → 2008-12-23 (-17d) |  |  | 9.99d → 32.12d |  |  |
| 891 | Compare the outputs | 2009-01-09 → 2008-12-23 (-17d) | 2009-01-09 → 2008-12-24 (-16d) |  |  | 9.99d → 32.12d |  |  |
| 892 | Measure performance & document mesaurements | 2009-01-09 → 2008-12-24 (-16d) | 2009-01-12 → 2008-12-24 (-19d) |  |  | 9.99d → 32.12d |  |  |
| 893 | Interface definition, code, Nunit , Result & Doc review | 2009-01-12 → 2008-12-24 (-19d) | 2009-01-13 → 2008-12-26 (-18d) |  |  | 9.99d → 31.12d |  |  |
| 894 | **Frequency Response** | 2009-01-13 → 2008-12-26 (-18d) | 2009-02-10 → 2009-01-23 (-18d) |  |  | 9.99d → 31.12d |  |  |
| 895 | Review meas catalog & update | 2009-01-13 → 2008-12-26 (-18d) | 2009-01-14 → 2008-12-29 (-16d) |  |  | 9.99d → 31.12d |  |  |
| 896 | Review managed & Native interface definitions | 2009-01-14 → 2008-12-29 (-16d) | 2009-01-16 → 2008-12-31 (-16d) |  |  | 9.99d → 31.12d |  |  |
| 897 | Write code | 2009-01-16 → 2008-12-31 (-16d) | 2009-01-23 → 2009-01-08 (-15d) |  |  | 9.99d → 31.12d |  |  |
| 898 | Unit test the code | 2009-01-23 → 2009-01-08 (-15d) | 2009-01-29 → 2009-01-13 (-16d) |  |  | 9.99d → 31.12d |  |  |
| 899 | **Verifcation** | 2009-01-29 → 2009-01-13 (-16d) | 2009-02-06 → 2009-01-21 (-16d) |  |  | 9.99d → 31.12d |  |  |
| 900 | Develop the verification code in Matlab | 2009-01-29 → 2009-01-13 (-16d) | 2009-02-02 → 2009-01-15 (-18d) |  |  | 9.99d → 31.12d |  |  |
| 901 | Define the test input data & pass to ML & MATLAB | 2009-02-02 → 2009-01-15 (-18d) | 2009-02-04 → 2009-01-20 (-15d) |  |  | 9.99d → 31.12d |  |  |
| 902 | Compare the outputs | 2009-02-04 → 2009-01-20 (-15d) | 2009-02-06 → 2009-01-21 (-16d) |  |  | 9.99d → 31.12d |  |  |
| 903 | Measure performance & document mesaurements | 2009-02-06 → 2009-01-21 (-16d) | 2009-02-06 → 2009-01-22 (-15d) |  |  | 9.99d → 31.12d |  |  |
| 904 | Interface definition, code, Nunit , Result & Doc review | 2009-02-06 → 2009-01-22 (-15d) | 2009-02-10 → 2009-01-23 (-18d) |  |  | 9.99d → 31.12d |  |  |
| 905 | **Variance** | 2009-02-10 → 2009-01-23 (-18d) | 2009-02-25 → 2009-02-10 (-15d) |  |  | 9.99d → 31.12d |  |  |
| 906 | Review meas catalog & update | 2009-02-10 → 2009-01-23 (-18d) | 2009-02-11 → 2009-01-26 (-16d) |  |  | 9.99d → 31.12d |  |  |
| 907 | Review managed & Native interface definitions | 2009-02-11 → 2009-01-26 (-16d) | 2009-02-12 → 2009-01-27 (-16d) |  |  | 9.99d → 31.12d |  |  |
| 908 | Write code | 2009-02-12 → 2009-01-27 (-16d) | 2009-02-16 → 2009-01-29 (-18d) |  |  | 9.99d → 31.12d |  |  |
| 909 | Unit test the code | 2009-02-16 → 2009-01-29 (-18d) | 2009-02-18 → 2009-02-02 (-16d) |  |  | 9.99d → 31.12d |  |  |
| 910 | **Verifcation** | 2009-02-18 → 2009-02-02 (-16d) | 2009-02-23 → 2009-02-05 (-18d) |  |  | 9.99d → 31.12d |  |  |
| 911 | Develop the verification code in Matlab | 2009-02-18 → 2009-02-02 (-16d) | 2009-02-19 → 2009-02-03 (-16d) |  |  | 9.99d → 31.12d |  |  |
| 912 | Define the test input data & pass to ML & MATLAB | 2009-02-19 → 2009-02-03 (-16d) | 2009-02-20 → 2009-02-05 (-15d) |  |  | 9.99d → 31.12d |  |  |
| 913 | Compare the outputs | 2009-02-20 → 2009-02-05 (-15d) | 2009-02-23 → 2009-02-05 (-18d) |  |  | 9.99d → 31.12d |  |  |
| 914 | Measure performance & document mesaurements | 2009-02-23 → 2009-02-05 (-18d) | 2009-02-24 → 2009-02-06 (-18d) |  |  | 9.99d → 31.12d |  |  |
| 915 | Interface definition, code, Nunit , Result & Doc review | 2009-02-24 → 2009-02-06 (-18d) | 2009-02-25 → 2009-02-10 (-15d) |  |  | 9.99d → 31.12d |  |  |
| 916 | **Group Delay** | 2009-02-25 → 2009-02-10 (-15d) | 2009-05-08 → 2009-04-21 (-17d) | 51.43d? → 50.41d? |  | 9.99d → 31.12d |  |  |
| 917 | Review meas catalog & update | 2009-02-25 → 2009-02-10 (-15d) | 2009-02-26 → 2009-02-10 (-16d) |  |  | 9.99d → 31.12d |  |  |
| 918 | Review managed & Native interface definitions | 2009-02-26 → 2009-02-10 (-16d) | 2009-02-27 → 2009-02-12 (-15d) |  |  | 9.99d → 31.12d |  |  |
| 919 | Write code | 2009-02-27 → 2009-02-12 (-15d) | 2009-03-06 → 2009-02-18 (-16d) |  |  | 9.99d → 31.12d |  |  |
| 920 | Unit test the code | 2009-03-06 → 2009-02-18 (-16d) | 2009-03-10 → 2009-02-20 (-18d) |  |  | 9.99d → 31.12d |  |  |
| 921 | **Verifcation** | 2009-03-10 → 2009-02-20 (-18d) | 2009-03-13 → 2009-02-26 (-15d) |  |  | 9.99d → 31.12d |  |  |
| 922 | Develop the verification code in Matlab | 2009-03-10 → 2009-02-20 (-18d) | 2009-03-11 → 2009-02-24 (-15d) |  |  | 9.99d → 31.12d |  |  |
| 923 | Define the test input data & pass to ML & MATLAB | 2009-03-11 → 2009-02-24 (-15d) | 2009-03-13 → 2009-02-25 (-16d) |  |  | 9.99d → 31.12d |  |  |
| 924 | Compare the outputs | 2009-03-13 → 2009-02-25 (-16d) | 2009-03-13 → 2009-02-26 (-15d) |  |  | 9.99d → 31.12d |  |  |
| 925 | Measure performance & document mesaurements | 2009-03-13 → 2009-02-26 (-15d) | 2009-03-16 → 2009-02-26 (-18d) |  |  | 9.99d → 31.12d |  |  |
| 926 | Interface definition, code, Nunit , Result & Doc review | 2009-05-06 → 2009-04-20 (-16d) | 2009-05-08 → 2009-04-21 (-17d) |  |  | 9.99d → 31.73d |  |  |
| 927 | **Distortion** |  | 2009-04-03 → 2009-03-20 (-14d) | 287.08d? → 277d? |  | 34.14d → 53.23d |  |  |
| 928 | **THD** | 2008-12-31 → 2008-08-04 (-149d) | 2009-02-04 → 2008-08-19 (-169d) | 26d? → 11.44d? |  | 31d → 53.42d |  |  |
| 929 | Review meas catalog & update | 2008-12-31 → 2008-08-04 (-149d) | 2008-12-31 → 2008-08-04 (-149d) | 0.5d? → 0.36d? |  | 31d → 53.42d |  | resources Mike [50%] → Kapil [70%] |
| 930 | Review managed & Native interface definitions | 2008-12-31 → 2008-08-04 (-149d) | 2008-12-31 → 2008-08-04 (-149d) | 0.5d? → 0.36d? |  | 31d → 53.42d |  | resources Mike [50%] → Kapil [70%] |
| 931 | Write code | 2009-01-06 → 2008-08-04 (-155d) | 2009-01-08 → 2008-08-06 (-155d) | 3d? → 2.14d? |  | 31d → 53.42d |  | resources Mike [50%] → Kapil [70%] |
| 932 | Unit test the code | 2009-01-12 → 2008-08-06 (-159d) | 2009-01-13 → 2008-08-08 (-158d) | 2d? → 1.43d? |  | 32d → 53.42d |  | resources Mike [50%] → Kapil [70%] |
| 933 | **Verifcation** | 2009-01-20 → 2008-08-08 (-165d) | 2009-01-30 → 2008-08-18 (-165d) | 9d? → 5.62d? |  | 32d → 53.42d |  |  |
| 934 | Develop the verification code in Matlab | 2009-01-20 → 2008-08-08 (-165d) | 2009-01-23 → 2008-08-13 (-163d) | 4d? → 3.08d? |  | 32d → 53.42d |  | resources Mike [50%] → Ramkumar [65%] |
| 935 | Define the test input data & pass to ML & MATLAB | 2009-01-28 → 2008-08-13 (-168d) | 2009-01-28 → 2008-08-14 (-167d) | 1d? → 0.77d? |  | 32d → 53.42d |  | resources Mike [50%] → Ramkumar [65%] |
| 936 | Compare the outputs | 2009-01-30 → 2008-08-14 (-169d) | 2009-01-30 → 2008-08-18 (-165d) | 1d? → 0.77d? |  | 32d → 53.42d |  | resources Mike [50%] → Ramkumar [65%] |
| 937 | Measure performance & document mesaurements | 2009-02-03 → 2008-08-18 (-169d) | 2009-02-03 → 2008-08-18 (-169d) | 1d? → 0.77d? |  | 32d → 53.42d |  | resources Mike [50%] → Ramkumar [65%] |
| 938 | Interface definition, code, Nunit , Result & Doc review | 2009-02-04 → 2008-08-18 (-170d) | 2009-02-04 → 2008-08-19 (-169d) | 1d? → 0.77d? |  | 32d → 53.42d |  | resources Mike [50%] → Ramkumar [65%] |
| 939 | **THD + Noise** | 2009-02-09 → 2009-02-02 (-7d) | 2009-04-03 → 2009-03-20 (-14d) | 40d? → 34.92d? |  | 33d → 52.77d |  |  |
| 940 | Review meas catalog & update | 2009-02-09 → 2009-02-02 (-7d) | 2009-02-09 → 2009-02-02 (-7d) | 1d? → 0.77d? |  | 33d → 52.77d |  | resources Mike [50%] → ShashiP [65%] |
| 941 | Review managed & Native interface definitions | 2009-02-10 → 2009-02-02 (-8d) | 2009-02-10 → 2009-02-03 (-7d) | 1d? → 0.77d? |  | 33d → 52.77d |  | resources Mike [50%] → ShashiP [65%] |
| 942 | Write code | 2009-02-23 → 2009-02-16 (-7d) | 2009-03-03 → 2009-02-23 (-8d) | 7d? → 5.38d? |  | 34.14d → 52.31d |  | resources Mike [50%] → ShashiP [65%] |
| 943 | Unit test the code | 2009-03-06 → 2009-02-25 (-9d) | 2009-03-09 → 2009-02-26 (-11d) | 2d? → 1.54d? |  | 34.14d → 52.31d |  | resources Mike [50%] → ShashiP [65%] |
| 944 | **Verifcation** | 2009-03-12 → 2009-03-02 (-10d) | 2009-03-25 → 2009-03-12 (-13d) | 10d? → 8.62d? |  | 34.14d → 53.23d |  |  |
| 945 | Develop the verification code in Matlab | 2009-03-12 → 2009-03-02 (-10d) | 2009-03-17 → 2009-03-05 (-12d) | 4d? → 3.08d? |  | 34.14d → 53.23d |  | resources Mike [50%] → ShashiP [65%] |
| 946 | Define the test input data & pass to ML & MATLAB | 2009-03-18 → 2009-03-05 (-13d) | 2009-03-18 → 2009-03-05 (-13d) | 1d? → 0.77d? |  | 34.14d → 53.23d |  | resources Mike [50%] → ShashiP [65%] |
| 947 | Compare the outputs | 2009-03-25 → 2009-03-11 (-14d) | 2009-03-25 → 2009-03-12 (-13d) | 1d? → 0.77d? |  | 34.14d → 53.23d |  | resources Mike [50%] → ShashiP [65%] |
| 948 | Measure performance & document mesaurements | 2009-03-26 → 2009-03-12 (-14d) | 2009-03-26 → 2009-03-13 (-13d) | 1d? → 0.77d? |  | 34.14d → 53.23d |  | resources Mike [50%] → ShashiP [65%] |
| 949 | Interface definition, code, Nunit , Result & Doc review | 2009-04-02 → 2009-03-19 (-14d) | 2009-04-03 → 2009-03-20 (-14d) | 2d? → 1.54d? |  | 34.14d → 53.23d |  | resources Mike [50%] → ShashiP [65%] |
| 951 | Review meas catalog & update |  |  |  |  | 188.53d → 197.54d | 1004, 949 → 1004 |  |
| 995 | Review meas catalog & update |  |  |  |  | 38d → 44.08d | 993 → none |  |
| 1005 | **Signal Generation** | 2008-02-04 A | 2008-05-02 → 2008-04-08 (-24d) | 65d? → 46.61d? | 0% → 8% | 37.91d → 301.54d |  |  |
| 1006 | **Sine** | 2008-02-04 A |  |  | 0% → 45% | 38.91d → 339.47d |  |  |
| 1007 | Review meas catalog & update | 2008-02-04 A | 2008-02-04 A |  | 0% → 100% | 39.91d → none |  |  |
| 1008 | Review managed & Native interface definitions | 2008-02-04 A | 2008-02-05 A |  | 0% → 100% | 39.91d → none |  |  |
| 1009 | Write code | 2008-02-05 A | 2008-02-06 A |  | 0% → 100% | 39.91d → none |  |  |
| 1010 | Unit test the code | 2008-02-06 A | 2008-02-07 A |  | 0% → 100% | 39.91d → none |  |  |
| 1016 | Interface definition, code, Nunit , Result & Doc review | 2008-02-13 A |  |  | 0% → 50% | 38.91d → 339.47d |  |  |
| 1017 | **Noise** | 2008-02-26 → 2008-02-04 A (-22d) | 2008-05-02 → 2008-04-08 (-24d) | 48.61d? → 46.61d? | 0% → 2% | 37.91d → 57.62d |  |  |

| ID | Task | Start | Finish | Duration | Complete | Total float | Predecessors |
| --- | --- | --- | --- | --- | --- | --- | --- |
| 1018 | **Random** | 2008-02-26 → 2008-02-04 A (-22d) | 2008-03-10 → 2008-02-18 (-21d) | 9.23d? → 10.23d? | 0% → 8% | 40.91d → 58.62d |  |
| 1019 | Review meas catalog & update | 2008-02-26 → 2008-02-04 A (-22d) | 2008-02-27 → 2008-02-04 A (-23d) |  | 0% → 100% | 40.91d → none | Interface definition, code, Nunit , Result & Doc review → none |
| 1020 | Review managed & Native interface definitions | 2008-02-27 → 2008-02-04 (-23d) | 2008-02-27 → 2008-02-05 (-22d) |  |  | 40.91d → 58.62d |  |
| 1021 | Write code | 2008-02-27 → 2008-02-05 (-22d) | 2008-02-28 → 2008-02-06 (-22d) |  |  | 40.91d → 58.62d |  |
| 1022 | Unit test the code | 2008-02-28 → 2008-02-06 (-22d) | 2008-02-29 → 2008-02-07 (-22d) |  |  | 40.91d → 58.62d |  |
| 1023 | **Verifcation** | 2008-02-29 → 2008-02-07 (-22d) | 2008-03-07 → 2008-02-14 (-22d) | 4.62d? → 5.62d? |  | 40.91d → 58.62d |  |
| 1024 | Develop the verification code in Matlab | 2008-02-29 → 2008-02-07 (-22d) | 2008-03-05 → 2008-02-13 (-21d) |  |  | 40.91d → 58.62d |  |
| 1025 | Define the test input data & pass to ML & MATLAB | 2008-03-05 → 2008-02-13 (-21d) | 2008-03-06 → 2008-02-13 (-22d) |  |  | 41.91d → 58.62d |  |
| 1026 | Compare the outputs | 2008-03-06 → 2008-02-13 (-22d) | 2008-03-07 → 2008-02-14 (-22d) |  |  | 41.91d → 58.62d |  |
| 1027 | Measure performance & document mesaurements | 2008-03-07 → 2008-02-14 (-22d) | 2008-03-07 → 2008-02-15 (-21d) |  |  | 41.91d → 58.62d |  |
| 1028 | Interface definition, code, Nunit , Result & Doc review | 2008-03-07 → 2008-02-15 (-21d) | 2008-03-10 → 2008-02-18 (-21d) |  |  | 41.91d → 58.62d |  |
| 1029 | **Pink** | 2008-03-10 → 2008-02-18 (-21d) | 2008-03-28 → 2008-03-06 (-22d) | 14.08d? → 13.08d? |  | 40.91d → 58.62d |  |
| 1030 | Review meas catalog & update | 2008-03-10 → 2008-02-18 (-21d) | 2008-03-11 → 2008-02-18 (-22d) |  |  | 41.91d → 58.62d |  |
| 1031 | Review managed & Native interface definitions | 2008-03-11 → 2008-02-18 (-22d) | 2008-03-12 → 2008-02-19 (-22d) |  |  | 41.91d → 58.62d |  |
| 1032 | Write code | 2008-03-12 → 2008-02-19 (-22d) | 2008-03-17 → 2008-02-22 (-24d) |  |  | 41.91d → 58.62d |  |
| 1033 | Unit test the code | 2008-03-17 → 2008-02-22 (-24d) | 2008-03-18 → 2008-02-26 (-21d) |  |  | 41.91d → 58.62d |  |
| 1034 | **Verifcation** | 2008-03-18 → 2008-02-26 (-21d) | 2008-03-26 → 2008-03-03 (-23d) | 5.62d? → 4.62d? |  | 40.91d → 58.62d |  |
| 1035 | Develop the verification code in Matlab | 2008-03-18 → 2008-02-26 (-21d) | 2008-03-24 → 2008-02-29 (-24d) |  |  | 40.91d → 58.62d |  |
| 1036 | Define the test input data & pass to ML & MATLAB | 2008-03-24 → 2008-02-29 (-24d) | 2008-03-25 → 2008-03-03 (-22d) |  |  | 40.91d → 58.62d |  |
| 1037 | Compare the outputs | 2008-03-25 → 2008-03-03 (-22d) | 2008-03-26 → 2008-03-03 (-23d) |  |  | 40.91d → 58.62d |  |
| 1038 | Measure performance & document mesaurements | 2008-03-26 → 2008-03-03 (-23d) | 2008-03-27 → 2008-03-04 (-23d) |  |  | 40.91d → 58.62d |  |
| 1039 | Interface definition, code, Nunit , Result & Doc review | 2008-03-27 → 2008-03-04 (-23d) | 2008-03-28 → 2008-03-06 (-22d) |  |  | 40.91d → 58.62d |  |
| 1040 | **White** | 2008-03-28 → 2008-03-06 (-22d) | 2008-04-15 → 2008-03-24 (-22d) |  |  | 39.91d → 57.62d |  |
| 1041 | Review meas catalog & update | 2008-03-28 → 2008-03-06 (-22d) | 2008-03-31 → 2008-03-07 (-24d) |  |  | 40.91d → 58.62d |  |
| 1042 | Review managed & Native interface definitions | 2008-03-31 → 2008-03-07 (-24d) | 2008-04-01 → 2008-03-07 (-25d) |  |  | 40.91d → 58.62d |  |
| 1043 | Write code | 2008-04-01 → 2008-03-07 (-25d) | 2008-04-02 → 2008-03-11 (-22d) |  |  | 40.91d → 58.62d |  |
| 1044 | Unit test the code | 2008-04-02 → 2008-03-11 (-22d) | 2008-04-04 → 2008-03-12 (-23d) |  |  | 40.91d → 58.62d |  |
| 1045 | **Verifcation** | 2008-04-04 → 2008-03-12 (-23d) | 2008-04-10 → 2008-03-19 (-22d) |  |  | 40.91d → 58.62d |  |
| 1046 | Develop the verification code in Matlab | 2008-04-04 → 2008-03-12 (-23d) | 2008-04-09 → 2008-03-17 (-23d) |  |  | 40.91d → 58.62d |  |
| 1047 | Define the test input data & pass to ML & MATLAB | 2008-04-09 → 2008-03-17 (-23d) | 2008-04-10 → 2008-03-18 (-23d) |  |  | 40.91d → 58.62d |  |
| 1048 | Compare the outputs | 2008-04-10 → 2008-03-18 (-23d) | 2008-04-10 → 2008-03-19 (-22d) |  |  | 40.91d → 58.62d |  |
| 1049 | Measure performance & document mesaurements | 2008-04-10 → 2008-03-19 (-22d) | 2008-04-11 → 2008-03-20 (-22d) |  |  | 40.91d → 58.62d |  |
| 1050 | Interface definition, code, Nunit , Result & Doc review | 2008-04-11 → 2008-03-20 (-22d) | 2008-04-15 → 2008-03-24 (-22d) |  |  | 39.91d → 57.62d |  |
| 1051 | **Gaussian** | 2008-04-15 → 2008-03-24 (-22d) | 2008-05-02 → 2008-04-08 (-24d) | 13.54d? → 11.54d? |  | 37.91d → 57.62d |  |
| 1052 | Review meas catalog & update | 2008-04-15 → 2008-03-24 (-22d) | 2008-04-16 → 2008-03-24 (-23d) |  |  | 39.91d → 57.62d |  |
| 1053 | Review managed & Native interface definitions | 2008-04-16 → 2008-03-24 (-23d) | 2008-04-16 → 2008-03-25 (-22d) |  |  | 39.91d → 57.62d |  |
| 1054 | Write code | 2008-04-16 → 2008-03-25 (-22d) | 2008-04-23 → 2008-03-28 (-26d) |  |  | 38.91d → 57.62d |  |
| 1055 | Unit test the code | 2008-04-23 → 2008-03-28 (-26d) | 2008-04-23 → 2008-03-31 (-23d) |  |  | 38.91d → 57.62d |  |
| 1056 | **Verifcation** | 2008-04-23 → 2008-03-31 (-23d) | 2008-04-30 → 2008-04-07 (-23d) |  |  | 38.91d → 57.62d |  |
| 1057 | Develop the verification code in Matlab | 2008-04-23 → 2008-03-31 (-23d) | 2008-04-28 → 2008-04-03 (-25d) |  |  | 38.91d → 57.62d |  |
| 1058 | Define the test input data & pass to ML & MATLAB | 2008-04-28 → 2008-04-03 (-25d) | 2008-04-29 → 2008-04-04 (-25d) |  |  | 38.91d → 57.62d |  |
| 1059 | Compare the outputs | 2008-04-29 → 2008-04-04 (-25d) | 2008-04-30 → 2008-04-07 (-23d) |  |  | 38.91d → 57.62d |  |
| 1060 | Measure performance & document mesaurements | 2008-04-30 → 2008-04-07 (-23d) | 2008-05-02 → 2008-04-07 (-25d) |  |  | 37.91d → 57.62d |  |
| 1061 | Interface definition, code, Nunit , Result & Doc review | 2008-05-02 → 2008-04-07 (-25d) | 2008-05-02 → 2008-04-08 (-24d) |  |  | 37.91d → 57.62d |  |
| 1062 | **Marker Functions** | 2008-09-19 → 2008-08-28 (-22d) | 2008-10-08 → 2008-09-16 (-22d) |  |  | 39.91d → 57.62d |  |
| 1063 | Review meas catalog & update | 2008-09-19 → 2008-08-28 (-22d) | 2008-09-22 → 2008-08-29 (-24d) |  |  | 40.91d → 58.62d | 1223, 1061 → 1223 |
| 1064 | Review managed & Native interface definitions | 2008-09-22 → 2008-08-29 (-24d) | 2008-09-23 → 2008-08-29 (-25d) |  |  | 40.91d → 58.62d |  |
| 1065 | Write code | 2008-09-23 → 2008-08-29 (-25d) | 2008-09-26 → 2008-09-04 (-22d) |  |  | 40.91d → 57.62d |  |
| 1066 | Unit test the code | 2008-09-26 → 2008-09-04 (-22d) | 2008-10-01 → 2008-09-09 (-22d) |  |  | 40.91d → 57.62d |  |
| 1067 | **Verifcation** | 2008-10-01 → 2008-09-09 (-22d) | 2008-10-07 → 2008-09-15 (-22d) | 4.08d? → 3.08d? |  | 39.91d → 57.62d |  |
| 1068 | Develop the verification code in Matlab | 2008-10-01 → 2008-09-09 (-22d) | 2008-10-03 → 2008-09-11 (-22d) |  |  | 39.91d → 57.62d |  |
| 1069 | Define the test input data & pass to ML & MATLAB | 2008-10-03 → 2008-09-11 (-22d) | 2008-10-06 → 2008-09-12 (-24d) |  |  | 39.91d → 57.62d |  |
| 1070 | Compare the outputs | 2008-10-06 → 2008-09-12 (-24d) | 2008-10-07 → 2008-09-15 (-22d) |  |  | 39.91d → 57.62d |  |
| 1071 | Measure performance & document mesaurements | 2008-10-07 → 2008-09-15 (-22d) | 2008-10-08 → 2008-09-15 (-23d) |  |  | 39.91d → 57.62d |  |
| 1072 | Interface definition, code, Nunit , Result & Doc review | 2008-10-08 → 2008-09-15 (-23d) | 2008-10-08 → 2008-09-16 (-22d) |  |  | 39.91d → 57.62d |  |
| 1073 | **Octave** | 2008-10-08 → 2008-09-16 (-22d) | 2009-01-05 → 2008-12-23 (-13d) | 62.46d? → 70.15d? |  | 37.91d → 55.62d |  |
| 1075 | Review meas catalog & update | 2008-10-08 → 2008-09-26 (-12d) | 2008-10-13 → 2008-09-29 (-14d) |  |  | 38.91d → 58.62d | 1072 → 1074 |
| 1076 | Review managed & Native interface definitions | 2008-10-13 → 2008-09-29 (-14d) | 2008-10-15 → 2008-10-01 (-14d) |  |  | 38.91d → 58.62d |  |
| 1077 | Overall interface structure for Octave | 2008-10-15 → 2008-10-01 (-14d) | 2008-10-20 → 2008-10-08 (-12d) |  |  | 38.91d → 58.62d |  |
| 1078 | Octave band filter Design | 2008-10-20 → 2008-10-08 (-12d) | 2008-11-04 → 2008-10-22 (-13d) |  |  | 39.91d → 57.62d |  |
| 1079 | Filtering Operation | 2008-11-04 → 2008-10-22 (-13d) | 2008-11-20 → 2008-11-10 (-10d) |  |  | 39.91d → 56.62d |  |
| 1080 | Averaging Operation and Octave band power estimation | 2008-11-20 → 2008-11-10 (-10d) | 2008-12-02 → 2008-11-20 (-12d) |  |  | 39.91d → 56.62d |  |
| 1081 | Weighting Filter Operation | 2008-12-02 → 2008-11-20 (-12d) | 2008-12-05 → 2008-11-25 (-10d) |  |  | 39.91d → 56.62d |  |
| 1082 | Write code | 2008-12-05 → 2008-11-25 (-10d) | 2008-12-17 → 2008-12-05 (-12d) |  |  | 38.91d → 56.62d |  |
| 1083 | Unit test the code | 2008-12-17 → 2008-12-05 (-12d) | 2008-12-23 → 2008-12-12 (-11d) |  |  | 38.91d → 55.62d |  |
| 1084 | **Verifcation** | 2008-12-23 → 2008-12-12 (-11d) | 2008-12-31 → 2008-12-18 (-13d) | 5.62d? → 4.62d? |  | 37.91d → 55.62d |  |
| 1085 | Develop the verification code in Matlab | 2008-12-23 → 2008-12-12 (-11d) | 2008-12-26 → 2008-12-15 (-11d) |  |  | 37.91d → 55.62d |  |
| 1086 | Define the test input data & pass to ML & MATLAB | 2008-12-26 → 2008-12-15 (-11d) | 2008-12-29 → 2008-12-17 (-12d) |  |  | 37.91d → 55.62d |  |
| 1087 | Compare the outputs | 2008-12-29 → 2008-12-17 (-12d) | 2008-12-31 → 2008-12-18 (-13d) |  |  | 37.91d → 55.62d |  |
| 1088 | Measure performance & document mesaurements | 2008-12-31 → 2008-12-18 (-13d) | 2009-01-01 → 2008-12-22 (-10d) |  |  | 37.91d → 55.62d |  |

| ID | Task | Start | Finish | Duration | Total float | Predecessors |
| --- | --- | --- | --- | --- | --- | --- |
| 1089 | Interface definition, code, Nunit , Result & Doc review | 2009-01-01 → 2008-12-22 (-10d) | 2009-01-05 → 2008-12-23 (-13d) |  | 37.91d → 55.62d |  |
| 1090 | **Orbit** | 2009-01-05 → 2008-12-23 (-13d) | 2009-01-26 → 2009-01-14 (-12d) | 14.62d? → 15.62d? | 37.91d → 54.62d |  |
| 1091 | Review meas catalog & update | 2009-01-05 → 2008-12-23 (-13d) | 2009-01-06 → 2008-12-24 (-13d) |  | 37.91d → 55.62d |  |
| 1092 | Review managed & Native interface definitions | 2009-01-06 → 2008-12-24 (-13d) | 2009-01-06 → 2008-12-26 (-11d) |  | 37.91d → 54.62d |  |
| 1093 | Write code | 2009-01-06 → 2008-12-26 (-11d) | 2009-01-14 → 2009-01-02 (-12d) |  | 37.91d → 54.62d |  |
| 1094 | Unit test the code | 2009-01-14 → 2009-01-02 (-12d) | 2009-01-16 → 2009-01-06 (-10d) |  | 37.91d → 54.62d |  |
| 1095 | **Verifcation** | 2009-01-16 → 2009-01-06 (-10d) | 2009-01-20 → 2009-01-09 (-11d) |  | 37.91d → 54.62d |  |
| 1096 | Develop the verification code in Matlab | 2009-01-16 → 2009-01-06 (-10d) | 2009-01-19 → 2009-01-07 (-12d) |  | 37.91d → 54.62d |  |
| 1097 | Define the test input data & pass to ML & MATLAB | 2009-01-19 → 2009-01-07 (-12d) | 2009-01-20 → 2009-01-08 (-12d) |  | 37.91d → 54.62d |  |
| 1098 | Compare the outputs | 2009-01-20 → 2009-01-08 (-12d) | 2009-01-20 → 2009-01-09 (-11d) |  | 37.91d → 54.62d |  |
| 1099 | Measure performance & document mesaurements | 2009-01-20 → 2009-01-09 (-11d) | 2009-01-22 → 2009-01-12 (-10d) |  | 37.91d → 54.62d |  |
| 1100 | Interface definition, code, Nunit , Result & Doc review | 2009-01-22 → 2009-01-12 (-10d) | 2009-01-26 → 2009-01-14 (-12d) |  | 37.91d → 54.62d |  |
| 1157 | **Math** | 2008-05-02 → 2008-04-08 (-24d) | 2008-09-19 → 2008-08-28 (-22d) | 99.69d? → 101.69d? | 37.91d → 57.62d |  |
| 1158 | **Cepstrum** | 2008-05-02 → 2008-04-08 (-24d) | 2008-05-22 → 2008-04-29 (-23d) | 13.08d? → 15.08d? | 37.91d → 55.62d |  |
| 1159 | Review meas catalog & update | 2008-05-02 → 2008-04-08 (-24d) | 2008-05-05 → 2008-04-09 (-26d) |  | 37.91d → 57.62d | 1061, 1156 → 1061 |
| 1160 | Review managed & Native interface definitions | 2008-05-05 → 2008-04-09 (-26d) | 2008-05-06 → 2008-04-10 (-26d) |  | 37.91d → 57.62d |  |
| 1161 | Write code | 2008-05-06 → 2008-04-10 (-26d) | 2008-05-13 → 2008-04-17 (-26d) |  | 37.91d → 56.62d |  |
| 1162 | Unit test the code | 2008-05-13 → 2008-04-17 (-26d) | 2008-05-14 → 2008-04-22 (-22d) |  | 37.91d → 55.62d |  |
| 1163 | **Verifcation** | 2008-05-14 → 2008-04-22 (-22d) | 2008-05-19 → 2008-04-25 (-24d) |  | 37.91d → 55.62d |  |
| 1164 | Develop the verification code in Matlab | 2008-05-14 → 2008-04-22 (-22d) | 2008-05-16 → 2008-04-23 (-23d) |  | 37.91d → 55.62d |  |
| 1165 | Define the test input data & pass to ML & MATLAB | 2008-05-16 → 2008-04-23 (-23d) | 2008-05-16 → 2008-04-24 (-22d) |  | 37.91d → 55.62d |  |
| 1166 | Compare the outputs | 2008-05-16 → 2008-04-24 (-22d) | 2008-05-19 → 2008-04-25 (-24d) |  | 37.91d → 55.62d |  |
| 1167 | Measure performance & document mesaurements | 2008-05-19 → 2008-04-25 (-24d) | 2008-05-20 → 2008-04-28 (-22d) |  | 37.91d → 55.62d |  |
| 1168 | Interface definition, code, Nunit , Result & Doc review | 2008-05-20 → 2008-04-28 (-22d) | 2008-05-22 → 2008-04-29 (-23d) |  | 37.91d → 55.62d |  |
| 1169 | **Basic Complex math** | 2008-05-22 → 2008-04-29 (-23d) | 2008-06-12 → 2008-05-22 (-21d) | 15.38d? → 16.38d? | 37.91d → 54.62d |  |
| 1170 | Review meas catalog & update | 2008-05-22 → 2008-04-29 (-23d) | 2008-05-22 → 2008-04-30 (-22d) |  | 37.91d → 55.62d |  |
| 1171 | Review managed & Native interface definitions | 2008-05-22 → 2008-04-30 (-22d) | 2008-05-23 → 2008-05-02 (-21d) |  | 37.91d → 54.62d |  |
| 1172 | Write code | 2008-05-23 → 2008-05-02 (-21d) | 2008-06-02 → 2008-05-12 (-21d) |  | 37.91d → 54.62d |  |
| 1173 | Unit test the code | 2008-06-02 → 2008-05-12 (-21d) | 2008-06-04 → 2008-05-13 (-22d) |  | 37.91d → 54.62d |  |
| 1174 | **Verifcation** | 2008-06-04 → 2008-05-13 (-22d) | 2008-06-09 → 2008-05-16 (-24d) |  | 37.91d → 54.62d |  |
| 1175 | Develop the verification code in Matlab | 2008-06-04 → 2008-05-13 (-22d) | 2008-06-05 → 2008-05-15 (-21d) |  | 37.91d → 54.62d |  |
| 1176 | Define the test input data & pass to ML & MATLAB | 2008-06-05 → 2008-05-15 (-21d) | 2008-06-06 → 2008-05-16 (-21d) |  | 37.91d → 54.62d |  |
| 1177 | Compare the outputs | 2008-06-06 → 2008-05-16 (-21d) | 2008-06-09 → 2008-05-16 (-24d) |  | 37.91d → 54.62d |  |
| 1178 | Measure performance & document mesaurements | 2008-06-09 → 2008-05-16 (-24d) | 2008-06-10 → 2008-05-20 (-21d) |  | 37.91d → 54.62d |  |
| 1179 | Interface definition, code, Nunit , Result & Doc review | 2008-06-10 → 2008-05-20 (-21d) | 2008-06-12 → 2008-05-22 (-21d) |  | 37.91d → 54.62d |  |
| 1180 | **Hilbert** | 2008-06-12 → 2008-05-22 (-21d) | 2008-07-03 → 2008-06-12 (-21d) |  | 37.91d → 54.62d |  |
| 1181 | Review meas catalog & update | 2008-06-12 → 2008-05-22 (-21d) | 2008-06-13 → 2008-05-22 (-22d) |  | 37.91d → 54.62d |  |
| 1182 | Review managed & Native interface definitions | 2008-06-13 → 2008-05-22 (-22d) | 2008-06-13 → 2008-05-23 (-21d) |  | 37.91d → 54.62d |  |
| 1183 | Write code | 2008-06-13 → 2008-05-23 (-21d) | 2008-06-24 → 2008-06-02 (-22d) |  | 37.91d → 54.62d |  |
| 1184 | Unit test the code | 2008-06-24 → 2008-06-02 (-22d) | 2008-06-25 → 2008-06-04 (-21d) |  | 38.91d → 55.62d |  |
| 1185 | **Verifcation** | 2008-06-25 → 2008-06-04 (-21d) | 2008-06-30 → 2008-06-09 (-21d) |  | 38.91d → 55.62d |  |
| 1186 | Develop the verification code in Matlab | 2008-06-25 → 2008-06-04 (-21d) | 2008-06-27 → 2008-06-05 (-22d) |  | 38.91d → 55.62d |  |
| 1187 | Define the test input data & pass to ML & MATLAB | 2008-06-27 → 2008-06-05 (-22d) | 2008-06-27 → 2008-06-06 (-21d) |  | 38.91d → 55.62d |  |
| 1188 | Compare the outputs | 2008-06-27 → 2008-06-06 (-21d) | 2008-06-30 → 2008-06-09 (-21d) |  | 38.91d → 55.62d |  |
| 1189 | Measure performance & document mesaurements | 2008-06-30 → 2008-06-09 (-21d) | 2008-07-02 → 2008-06-10 (-22d) |  | 38.91d → 55.62d |  |
| 1190 | Interface definition, code, Nunit , Result & Doc review | 2008-07-02 → 2008-06-10 (-22d) | 2008-07-03 → 2008-06-12 (-21d) |  | 38.91d → 55.62d |  |
| 1191 | **Conversions** | 2008-07-03 → 2008-06-12 (-21d) | 2008-08-04 → 2008-07-11 (-24d) |  | 38.91d → 55.62d |  |
| 1192 | Review meas catalog & update | 2008-07-03 → 2008-06-12 (-21d) | 2008-07-04 → 2008-06-13 (-21d) |  | 38.91d → 55.62d |  |
| 1193 | Review managed & Native interface definitions | 2008-07-04 → 2008-06-13 (-21d) | 2008-07-07 → 2008-06-13 (-24d) |  | 38.91d → 55.62d |  |
| 1194 | Write code | 2008-07-07 → 2008-06-13 (-24d) | 2008-07-18 → 2008-06-27 (-21d) |  | 38.91d → 55.62d |  |
| 1195 | Unit test the code | 2008-07-18 → 2008-06-27 (-21d) | 2008-07-23 → 2008-07-02 (-21d) |  | 39.91d → 56.62d |  |
| 1196 | **Verifcation** | 2008-07-23 → 2008-07-02 (-21d) | 2008-07-30 → 2008-07-08 (-22d) |  | 39.91d → 56.62d |  |
| 1197 | Develop the verification code in Matlab | 2008-07-23 → 2008-07-02 (-21d) | 2008-07-28 → 2008-07-07 (-21d) |  | 39.91d → 56.62d |  |
| 1198 | Define the test input data & pass to ML & MATLAB | 2008-07-28 → 2008-07-07 (-21d) | 2008-07-29 → 2008-07-08 (-21d) |  | 39.91d → 56.62d |  |
| 1199 | Compare the outputs | 2008-07-29 → 2008-07-08 (-21d) | 2008-07-30 → 2008-07-08 (-22d) |  | 39.91d → 56.62d |  |
| 1200 | Measure performance & document mesaurements | 2008-07-30 → 2008-07-08 (-22d) | 2008-07-31 → 2008-07-10 (-21d) |  | 39.91d → 56.62d |  |
| 1201 | Interface definition, code, Nunit , Result & Doc review | 2008-07-31 → 2008-07-10 (-21d) | 2008-08-04 → 2008-07-11 (-24d) |  | 39.91d → 56.62d |  |
| 1202 | **Differentiation/Integration** | 2008-08-04 → 2008-07-11 (-24d) | 2008-08-25 → 2008-08-01 (-24d) | 15.62d? → 14.62d? | 39.91d → 56.62d |  |
| 1203 | Review meas catalog & update | 2008-08-04 → 2008-07-11 (-24d) | 2008-08-05 → 2008-07-14 (-22d) |  | 39.91d → 56.62d |  |
| 1204 | Review managed & Native interface definitions | 2008-08-05 → 2008-07-14 (-22d) | 2008-08-05 → 2008-07-15 (-21d) |  | 39.91d → 56.62d |  |
| 1205 | Write code | 2008-08-05 → 2008-07-15 (-21d) | 2008-08-14 → 2008-07-23 (-22d) |  | 39.91d → 57.62d |  |
| 1206 | Unit test the code | 2008-08-14 → 2008-07-23 (-22d) | 2008-08-18 → 2008-07-25 (-24d) |  | 40.91d → 58.62d |  |
| 1207 | **Verifcation** | 2008-08-18 → 2008-07-25 (-24d) | 2008-08-21 → 2008-07-30 (-22d) |  | 40.91d → 58.62d |  |
| 1208 | Develop the verification code in Matlab | 2008-08-18 → 2008-07-25 (-24d) | 2008-08-20 → 2008-07-28 (-23d) |  | 40.91d → 58.62d |  |
| 1209 | Define the test input data & pass to ML & MATLAB | 2008-08-20 → 2008-07-28 (-23d) | 2008-08-20 → 2008-07-29 (-22d) |  | 40.91d → 58.62d |  |
| 1210 | Compare the outputs | 2008-08-20 → 2008-07-29 (-22d) | 2008-08-21 → 2008-07-30 (-22d) |  | 40.91d → 58.62d |  |
| 1211 | Measure performance & document mesaurements | 2008-08-21 → 2008-07-30 (-22d) | 2008-08-22 → 2008-07-31 (-22d) |  | 40.91d → 58.62d |  |
| 1212 | Interface definition, code, Nunit , Result & Doc review | 2008-08-22 → 2008-07-31 (-22d) | 2008-08-25 → 2008-08-01 (-24d) |  | 40.91d → 58.62d |  |
| 1213 | **Statistical (mean,mode…)** | 2008-08-25 → 2008-08-01 (-24d) | 2008-09-19 → 2008-08-28 (-22d) |  | 40.91d → 58.62d |  |
| 1214 | Review meas catalog & update | 2008-08-25 → 2008-08-01 (-24d) | 2008-08-26 → 2008-08-04 (-22d) |  | 40.91d → 58.62d |  |

| ID | Task | Start | Finish | Duration | Total float |
| --- | --- | --- | --- | --- | --- |
| 1215 | Review managed & Native interface definitions | 2008-08-26 → 2008-08-04 (-22d) | 2008-08-28 → 2008-08-05 (-23d) |  | 40.91d → 58.62d |
| 1216 | Write code | 2008-08-28 → 2008-08-05 (-23d) | 2008-09-08 → 2008-08-14 (-25d) |  | 40.91d → 58.62d |
| 1217 | Unit test the code | 2008-09-08 → 2008-08-14 (-25d) | 2008-09-09 → 2008-08-18 (-22d) |  | 40.91d → 58.62d |
| 1218 | **Verifcation** | 2008-09-09 → 2008-08-18 (-22d) | 2008-09-16 → 2008-08-25 (-22d) |  | 40.91d → 58.62d |
| 1219 | Develop the verification code in Matlab | 2008-09-09 → 2008-08-18 (-22d) | 2008-09-15 → 2008-08-21 (-25d) |  | 40.91d → 58.62d |
| 1220 | Define the test input data & pass to ML & MATLAB | 2008-09-15 → 2008-08-21 (-25d) | 2008-09-15 → 2008-08-22 (-24d) |  | 40.91d → 58.62d |
| 1221 | Compare the outputs | 2008-09-15 → 2008-08-22 (-24d) | 2008-09-16 → 2008-08-25 (-22d) |  | 40.91d → 58.62d |
| 1222 | Measure performance & document mesaurements | 2008-09-16 → 2008-08-25 (-22d) | 2008-09-18 → 2008-08-26 (-23d) |  | 40.91d → 58.62d |
| 1223 | Interface definition, code, Nunit , Result & Doc review | 2008-09-18 → 2008-08-26 (-23d) | 2008-09-19 → 2008-08-28 (-22d) |  | 40.91d → 58.62d |
| 1227 | **Testing and Result Verification** | 2008-04-01 → 2008-08-28 (+149d) | 2009-05-06 → 2009-04-21 (-15d) | 286.73d? → 168.02d? | 11.42d → 32.14d |
| 1228 | Verify THD | 2009-03-16 → 2009-02-26 (-18d) | 2009-03-20 → 2009-03-05 (-15d) |  | 11.42d → 32.14d |
| 1229 | Verify THD+N | 2009-03-20 → 2009-03-05 (-15d) | 2009-03-25 → 2009-03-10 (-15d) |  | 11.42d → 32.14d |
| 1230 | Verify SINAD | 2009-03-25 → 2009-03-10 (-15d) | 2009-03-30 → 2009-03-12 (-18d) |  | 11.42d → 32.14d |
| 1231 | Verify ENOB | 2009-03-30 → 2009-03-12 (-18d) | 2009-04-03 → 2009-03-19 (-15d) |  | 11.42d → 32.14d |
| 1232 | Verify SNR | 2009-04-03 → 2009-03-19 (-15d) | 2009-04-08 → 2009-03-24 (-15d) |  | 11.42d → 32.14d |
| 1233 | Verify SFDR | 2009-04-08 → 2009-03-24 (-15d) | 2009-04-15 → 2009-03-30 (-16d) |  | 11.42d → 32.14d |
| 1234 | Verify Averaging | 2009-04-15 → 2009-03-30 (-16d) | 2009-04-21 → 2009-04-03 (-18d) |  | 11.42d → 32.14d |
| 1235 | Verify Signal Generation | 2009-04-21 → 2009-04-03 (-18d) | 2009-04-27 → 2009-04-09 (-18d) |  | 11.42d → 32.14d |
| 1236 | Verify Marker Functions | 2009-04-27 → 2009-04-09 (-18d) | 2009-05-06 → 2009-04-21 (-15d) |  | 11.42d → 32.14d |
| 1237 | Verify Octave | 2008-04-01 → 2008-08-28 (+149d) | 2008-04-14 → 2008-09-10 (+149d) |  | 39d → 45.16d |
| 1238 | Verify Orbit | 2008-04-16 → 2008-09-11 (+148d) | 2008-04-25 → 2008-09-22 (+150d) |  | 39d → 45.16d |
| 1239 | Verify FFT | 2008-09-19 → 2008-08-28 (-22d) | 2008-09-26 → 2008-09-04 (-22d) |  | 72.91d → 97.31d |
| 1240 | Verify SFFT | 2008-09-26 → 2008-09-04 (-22d) | 2008-10-07 → 2008-09-15 (-22d) |  | 71.91d → 97.31d |
| 1241 | Verify Windowing | 2008-10-07 → 2008-09-15 (-22d) | 2008-10-16 → 2008-09-23 (-23d) |  | 70.91d → 97.31d |
| 1242 | Verify Resampling | 2008-10-16 → 2008-09-23 (-23d) | 2008-10-24 → 2008-10-01 (-23d) |  | 70.91d → 97.31d |
| 1243 | Verify Zoom FFT | 2008-10-24 → 2008-10-01 (-23d) | 2008-11-04 → 2008-10-13 (-22d) |  | 69.91d → 95.31d |
| 1244 | Verify Linear Spectrum | 2008-11-04 → 2008-10-13 (-22d) | 2008-11-11 → 2008-10-20 (-22d) |  | 69.91d → 95.31d |
| 1245 | Verify Power Spectrum | 2008-11-11 → 2008-10-20 (-22d) | 2008-11-18 → 2008-10-24 (-25d) |  | 69.91d → 95.31d |
| 1246 | Verify Phase Spectrum | 2008-11-18 → 2008-10-24 (-25d) | 2008-11-24 → 2008-11-03 (-21d) |  | 69.91d → 94.31d |
| 1247 | Verify Cross Power | 2008-11-24 → 2008-11-03 (-21d) | 2008-12-01 → 2008-11-07 (-24d) |  | 69.91d → 94.31d |
| 1248 | Verify Limit Lines | 2008-12-01 → 2008-11-07 (-24d) | 2008-12-12 → 2008-11-19 (-23d) |  | 68.91d → 94.31d |
| 1249 | Verify Swept Sine | 2008-12-12 → 2008-11-19 (-23d) | 2008-12-22 → 2008-11-27 (-25d) |  | 68.91d → 94.31d |
| 1250 | Verify Gain, Phase margins | 2008-12-22 → 2008-11-27 (-25d) | 2008-12-31 → 2008-12-05 (-26d) |  | 67.91d → 94.31d |
| 1251 | Verify Frequency, Damping | 2008-12-31 → 2008-12-05 (-26d) | 2009-01-08 → 2008-12-17 (-22d) |  | 67.91d → 93.31d |
| 1252 | Verify Frequency Response | 2009-01-08 → 2008-12-17 (-22d) | 2009-01-29 → 2009-01-08 (-21d) |  | 67.91d → 92.31d |
| 1253 | Verify Group Delay | 2009-01-29 → 2009-01-08 (-21d) | 2009-02-09 → 2009-01-16 (-24d) |  | 67.91d → 92.31d |
| 1254 | Verify Variance | 2009-02-09 → 2009-01-16 (-24d) | 2009-02-17 → 2009-01-26 (-22d) |  | 67.91d → 92.31d |
| 1255 | Verify Weighting filters for octave analysis A- weighting filter + B-weigghting filter +C- weighting filter | 2009-01-26 → 2009-01-14 (-12d) | 2009-02-04 → 2009-01-26 (-9d) |  | 37.91d → 54.62d |
| 1256 | Verify General Weighting filters (A+B+C-weighting filter) | 2009-02-04 → 2009-01-26 (-9d) | 2009-02-16 → 2009-02-04 (-12d) |  | 37.91d → 54.62d |
| 1257 | Verify CCIR filters | 2009-02-16 → 2009-02-04 (-12d) | 2009-02-26 → 2009-02-16 (-10d) |  | 37.91d → 54.62d |
| 1258 | Verify Low Pass, high pass, band pass, notch | 2009-02-26 → 2009-02-16 (-10d) | 2009-03-09 → 2009-02-26 (-11d) |  | 37.91d → 54.62d |
| 1259 | Verify Coherence | 2009-03-09 → 2009-02-26 (-11d) | 2009-03-19 → 2009-03-09 (-10d) |  | 37.91d → 54.62d |
| 1260 | Verify all Math | 2009-03-19 → 2009-03-09 (-10d) | 2009-03-31 → 2009-03-19 (-12d) |  | 37.91d → 54.62d |
| 1261 | **Tests With Hardware** | 2008-05-08 → 2008-09-23 (+138d) |  | 235d? → 137d? | 36.14d → 45.16d |
| 1262 | **Transforms** | 2008-05-08 → 2008-09-23 (+138d) | 2008-06-04 → 2008-10-07 (+125d) | 20d? → 11d? | 37d → 45.16d |
| 1263 | FFT | 2008-05-08 → 2008-09-23 (+138d) | 2008-05-09 → 2008-09-24 (+138d) |  | 37d → 45.16d |
| 1264 | Identify/Create actual input signals to match verification cases above | 2008-05-12 → 2008-09-25 (+136d) | 2008-05-13 → 2008-09-26 (+136d) |  | 37d → 45.16d |
| 1265 | Inject signals into hardware and capture the results. | 2008-05-20 → 2008-09-29 (+132d) | 2008-05-23 → 2008-10-02 (+132d) |  | 37d → 45.16d |
| 1266 | Compare results through hardware with software verfification | 2008-06-02 → 2008-10-03 (+123d) | 2008-06-03 → 2008-10-06 (+125d) |  | 37d → 45.16d |
| 1267 | Review Results | 2008-06-04 → 2008-10-07 (+125d) | 2008-06-04 → 2008-10-07 (+125d) |  | 37d → 45.16d |
| 1268 | **STFT** | 2008-06-10 → 2008-10-08 (+120d) | 2008-06-25 → 2008-10-20 (+117d) | 12d? → 9d? | 37d → 45.16d |
| 1269 | Identify/Create actual input signals to match verification cases above | 2008-06-10 → 2008-10-08 (+120d) | 2008-06-11 → 2008-10-09 (+120d) |  | 37d → 45.16d |
| 1270 | Inject signals into hardware and capture the results. | 2008-06-17 → 2008-10-10 (+115d) | 2008-06-20 → 2008-10-15 (+117d) |  | 38d → 45.16d |
| 1271 | Compare results through hardware with software verfification | 2008-06-23 → 2008-10-16 (+115d) | 2008-06-24 → 2008-10-17 (+115d) |  | 38d → 45.16d |
| 1272 | Review Results | 2008-06-25 → 2008-10-20 (+117d) | 2008-06-25 → 2008-10-20 (+117d) |  | 38d → 45.16d |
| 1273 | **Windowing** | 2008-06-26 → 2008-10-21 (+117d) | 2008-07-17 → 2008-10-28 (+103d) | 16d? → 6d? | 38d → 45.16d |
| 1274 | Identify/Create actual input signals to match verification cases above | 2008-06-26 → 2008-10-21 (+117d) | 2008-06-26 → 2008-10-21 (+117d) |  | 38d → 45.16d |
| 1275 | Inject signals into hardware and capture the results. | 2008-06-27 → 2008-10-22 (+117d) | 2008-06-30 → 2008-10-23 (+115d) |  | 38d → 45.16d |
| 1276 | Compare results through hardware with software verfification | 2008-07-01 → 2008-10-24 (+115d) | 2008-07-02 → 2008-10-27 (+117d) |  | 38d → 45.16d |
| 1277 | Review Results | 2008-07-17 → 2008-10-28 (+103d) | 2008-07-17 → 2008-10-28 (+103d) |  | 38d → 45.16d |
| 1278 | **Resampling** | 2008-07-24 → 2008-10-29 (+97d) | 2008-08-21 → 2008-11-14 (+85d) | 21d? → 13d? | 36d → 45.16d |
| 1279 | Identify/Create actual input signals to match verification cases above | 2008-07-24 → 2008-10-29 (+97d) | 2008-07-29 → 2008-11-03 (+97d) |  | 38d → 45.16d |
| 1280 | Inject signals into hardware and capture the results. | 2008-08-05 → 2008-11-04 (+91d) | 2008-08-08 → 2008-11-07 (+91d) |  | 38d → 45.16d |
| 1281 | Compare results through hardware with software verfification | 2008-08-15 → 2008-11-10 (+87d) | 2008-08-20 → 2008-11-13 (+85d) |  | 36d → 45.16d |
| 1282 | Review Results | 2008-08-21 → 2008-11-14 (+85d) | 2008-08-21 → 2008-11-14 (+85d) |  | 36d → 45.16d |
| 1283 | **ZoomFFT** | 2008-08-26 → 2008-11-17 (+83d) | 2008-09-11 → 2008-11-25 (+75d) | 13d? → 7d? | 36d → 45.16d |
| 1284 | Identify/Create actual input signals to match verification cases above | 2008-08-26 → 2008-11-17 (+83d) | 2008-08-27 → 2008-11-18 (+83d) |  | 36d → 45.16d |
| 1285 | Inject signals into hardware and capture the results. | 2008-09-01 → 2008-11-19 (+79d) | 2008-09-02 → 2008-11-20 (+79d) |  | 36d → 45.16d |
| 1286 | Compare results through hardware with software verfification | 2008-09-08 → 2008-11-21 (+74d) | 2008-09-09 → 2008-11-24 (+76d) |  | 36d → 45.16d |
| 1287 | Review Results | 2008-09-11 → 2008-11-25 (+75d) | 2008-09-11 → 2008-11-25 (+75d) |  | 36d → 45.16d |

| ID | Task | Start | Finish | Duration | Complete | Total float | Predecessors | Other |
| --- | --- | --- | --- | --- | --- | --- | --- | --- |
| 1288 | **Spectrums** | 2008-09-15 → 2008-11-26 (+72d) | 2008-11-20 → 2008-12-30 (+40d) | 49d? → 25d? |  | 36d → 45.16d |  |  |
| 1289 | **Linear** | 2008-09-15 → 2008-11-26 (+72d) | 2008-09-25 → 2008-12-02 (+68d) | 9d? → 5d? |  | 36d → 45.16d |  |  |
| 1290 | Identify/Create actual input signals to match verification cases above | 2008-09-15 → 2008-11-26 (+72d) | 2008-09-15 → 2008-11-26 (+72d) |  |  | 36d → 45.16d |  |  |
| 1291 | Inject signals into hardware and capture the results. | 2008-09-18 → 2008-11-27 (+70d) | 2008-09-19 → 2008-11-28 (+70d) |  |  | 36d → 45.16d |  |  |
| 1292 | Compare results through hardware with software verfification | 2008-09-23 → 2008-12-01 (+69d) | 2008-09-23 → 2008-12-01 (+69d) |  |  | 36d → 45.16d |  |  |
| 1293 | Review Results | 2008-09-25 → 2008-12-02 (+68d) | 2008-09-25 → 2008-12-02 (+68d) |  |  | 36d → 45.16d |  |  |
| 1294 | **Power** | 2008-09-29 → 2008-12-03 (+65d) | 2008-10-09 → 2008-12-09 (+61d) | 9d? → 5d? |  | 36d → 45.16d |  |  |
| 1295 | Identify/Create actual input signals to match verification cases above | 2008-09-29 → 2008-12-03 (+65d) | 2008-09-29 → 2008-12-03 (+65d) |  |  | 36d → 45.16d |  |  |
| 1296 | Inject signals into hardware and capture the results. | 2008-10-02 → 2008-12-04 (+63d) | 2008-10-03 → 2008-12-05 (+63d) |  |  | 36d → 45.16d |  |  |
| 1297 | Compare results through hardware with software verfification | 2008-10-07 → 2008-12-08 (+62d) | 2008-10-07 → 2008-12-08 (+62d) |  |  | 36d → 45.16d |  |  |
| 1298 | Review Results | 2008-10-09 → 2008-12-09 (+61d) | 2008-10-09 → 2008-12-09 (+61d) |  |  | 36d → 45.16d |  |  |
| 1299 | **Phase** | 2008-10-13 → 2008-12-10 (+58d) | 2008-10-23 → 2008-12-16 (+54d) | 9d? → 5d? |  | 36d → 45.16d |  |  |
| 1300 | Identify/Create actual input signals to match verification cases above | 2008-10-13 → 2008-12-10 (+58d) | 2008-10-13 → 2008-12-10 (+58d) |  |  | 36d → 45.16d |  |  |
| 1301 | Inject signals into hardware and capture the results. | 2008-10-16 → 2008-12-11 (+56d) | 2008-10-17 → 2008-12-12 (+56d) |  |  | 36d → 45.16d |  |  |
| 1302 | Compare results through hardware with software verfification | 2008-10-21 → 2008-12-15 (+55d) | 2008-10-21 → 2008-12-15 (+55d) |  |  | 36d → 45.16d |  |  |
| 1303 | Review Results | 2008-10-23 → 2008-12-16 (+54d) | 2008-10-23 → 2008-12-16 (+54d) |  |  | 36d → 45.16d |  |  |
| 1304 | **Auto power** | 2008-10-27 → 2008-12-17 (+51d) | 2008-11-06 → 2008-12-23 (+47d) | 9d? → 5d? |  | 36d → 45.16d |  |  |
| 1305 | Identify/Create actual input signals to match verification cases above | 2008-10-27 → 2008-12-17 (+51d) | 2008-10-27 → 2008-12-17 (+51d) |  |  | 36d → 45.16d |  |  |
| 1306 | Inject signals into hardware and capture the results. | 2008-10-29 → 2008-12-18 (+50d) | 2008-10-30 → 2008-12-19 (+50d) |  |  | 36d → 45.16d |  |  |
| 1307 | Compare results through hardware with software verfification | 2008-11-04 → 2008-12-22 (+48d) | 2008-11-04 → 2008-12-22 (+48d) |  |  | 38d → 45.16d |  |  |
| 1308 | Review Results | 2008-11-06 → 2008-12-23 (+47d) | 2008-11-06 → 2008-12-23 (+47d) |  |  | 37d → 45.16d |  |  |
| 1309 | **Cross power** | 2008-11-10 → 2008-12-24 (+44d) | 2008-11-20 → 2008-12-30 (+40d) | 9d? → 5d? |  | 37d → 45.16d |  |  |
| 1310 | Identify/Create actual input signals to match verification cases above | 2008-11-10 → 2008-12-24 (+44d) | 2008-11-10 → 2008-12-24 (+44d) |  |  | 39d → 45.16d |  |  |
| 1311 | Inject signals into hardware and capture the results. | 2008-11-13 → 2008-12-25 (+42d) | 2008-11-14 → 2008-12-26 (+42d) |  |  | 39d → 45.16d |  |  |
| 1312 | Compare results through hardware with software verfification | 2008-11-17 → 2008-12-29 (+42d) | 2008-11-17 → 2008-12-29 (+42d) |  |  | 39d → 45.16d |  |  |
| 1313 | Review Results | 2008-11-20 → 2008-12-30 (+40d) | 2008-11-20 → 2008-12-30 (+40d) |  |  | 37d → 45.16d |  |  |
| 1314 | **Limit lines** | 2008-11-21 → 2008-12-31 (+40d) | 2008-12-18 → 2009-01-13 (+26d) | 20d? → 10d? |  | 37d → 45.16d |  |  |
| 1315 | **Upper limit** | 2008-11-21 → 2008-12-31 (+40d) | 2008-12-03 → 2009-01-06 (+34d) | 9d? → 5d? |  | 37d → 45.16d |  |  |
| 1316 | Identify/Create actual input signals to match verification cases above | 2008-11-21 → 2008-12-31 (+40d) | 2008-11-21 → 2008-12-31 (+40d) |  |  | 37d → 45.16d |  |  |
| 1317 | Inject signals into hardware and capture the results. | 2008-11-24 → 2009-01-01 (+38d) | 2008-11-25 → 2009-01-02 (+38d) |  |  | 37d → 45.16d |  |  |
| 1318 | Compare results through hardware with software verfification | 2008-12-02 → 2009-01-05 (+34d) | 2008-12-02 → 2009-01-05 (+34d) |  |  | 37d → 45.16d |  |  |
| 1319 | Review Results | 2008-12-03 → 2009-01-06 (+34d) | 2008-12-03 → 2009-01-06 (+34d) |  |  | 37d → 45.16d |  |  |
| 1320 | **Lower limit** | 2008-12-08 → 2009-01-07 (+30d) | 2008-12-18 → 2009-01-13 (+26d) | 9d? → 5d? |  | 38d → 45.16d |  |  |
| 1321 | Identify/Create actual input signals to match verification cases above | 2008-12-08 → 2009-01-07 (+30d) | 2008-12-08 → 2009-01-07 (+30d) |  |  | 39d → 45.16d |  |  |
| 1322 | Inject signals into hardware and capture the results. | 2008-12-11 → 2009-01-08 (+28d) | 2008-12-12 → 2009-01-09 (+28d) |  |  | 39d → 45.16d |  |  |
| 1323 | Compare results through hardware with software verfification | 2008-12-15 → 2009-01-12 (+28d) | 2008-12-15 → 2009-01-12 (+28d) |  |  | 39d → 45.16d |  |  |
| 1324 | Review Results | 2008-12-18 → 2009-01-13 (+26d) | 2008-12-18 → 2009-01-13 (+26d) |  |  | 38d → 45.16d |  |  |
| 1325 | **Swept Sine** | 2008-12-25 → 2009-01-14 (+20d) |  | 70d? → 56d? |  | 36.14d → 45.16d |  |  |
| 1326 | **Gain, Phase margins** | 2008-12-25 → 2009-01-14 (+20d) | 2009-01-09 → 2009-01-23 (+14d) | 12d? → 8d? |  | 36d → 45.16d |  |  |
| 1327 | Identify/Create actual input signals to match verification cases above | 2008-12-25 → 2009-01-14 (+20d) | 2008-12-30 → 2009-01-19 (+20d) |  |  | 38d → 45.16d |  |  |
| 1328 | Inject signals into hardware and capture the results. | 2009-01-01 → 2009-01-20 (+19d) | 2009-01-02 → 2009-01-21 (+19d) |  |  | 38d → 45.16d |  |  |
| 1329 | Compare results through hardware with software verfification | 2009-01-05 → 2009-01-22 (+17d) | 2009-01-05 → 2009-01-22 (+17d) |  |  | 38d → 45.16d |  |  |
| 1330 | Review Results | 2009-01-09 → 2009-01-23 (+14d) | 2009-01-09 → 2009-01-23 (+14d) |  |  | 36d → 45.16d |  |  |
| 1331 | **Frequency, Damping** | 2009-01-14 → 2009-01-26 (+12d) | 2009-02-02 → 2009-02-04 (+2d) | 14d? → 8d? |  | 36d → 45.16d |  |  |
| 1332 | Identify/Create actual input signals to match verification cases above | 2009-01-14 → 2009-01-26 (+12d) | 2009-01-19 → 2009-01-29 (+10d) |  |  | 36d → 45.16d |  |  |
| 1333 | Inject signals into hardware and capture the results. | 2009-01-26 → 2009-01-30 (+4d) | 2009-01-27 → 2009-02-02 (+6d) |  |  | 36d → 45.16d |  |  |
| 1334 | Compare results through hardware with software verfification | 2009-01-29 → 2009-02-03 (+5d) | 2009-01-29 → 2009-02-03 (+5d) |  |  | 36d → 45.16d |  |  |
| 1335 | Review Results | 2009-02-02 → 2009-02-04 (+2d) | 2009-02-02 → 2009-02-04 (+2d) |  |  | 36d → 45.16d |  |  |
| 1351 | **Unmanaged interface definition** | 2008-02-08 → 2008-02-04 A (-4d) | 2008-11-12 → 2008-03-24 (-233d) | 199d? → 35.85d? | 0% → 13% | 34d → 312.31d |  |  |
| 1352 | Define interface style/model | 2008-02-20 → 2008-02-04 A (-16d) | 2008-03-06 → 2008-02-13 A (-22d) | 12d? → 8d? | 0% → 100% | 35d → none | Identify Heroes needs → none |  |
| 1353 | **Transforms** | 2008-03-17 → 2008-02-04 A (-42d) | 2008-03-25 → 2008-02-12 (-42d) | 7d? → 6d? | 0% → 29% | 35d → 314.08d |  |  |
| 1354 | FFT | 2008-03-17 → 2008-02-04 A (-42d) | 2008-03-18 → 2008-02-05 A (-42d) | 2d? → 1.43d? | 0% → 100% | 35d → none | Incorporate review decisions → none | resources Mike [50%] → Kapil [70%] |
| 1355 | STFT | 2008-03-19 → 2008-02-05 (-43d) | 2008-03-20 → 2008-02-06 (-43d) | 2d? → 1.43d? |  | 35d → 315.08d |  | resources Mike [50%] → Kapil [70%] |
| 1356 | Windowing | 2008-03-21 → 2008-02-06 (-44d) | 2008-03-21 → 2008-02-07 (-43d) | 1d? → 0.71d? |  | 35d → 315.08d |  | resources Mike [50%] → Kapil [70%] |
| 1357 | Resampling | 2008-03-24 → 2008-02-07 (-46d) | 2008-03-24 → 2008-02-08 (-45d) | 1d? → 0.71d? |  | 35d → 315.08d |  | resources Mike [50%] → Kapil [70%] |
| 1358 | ZoomFFT | 2008-03-25 → 2008-02-08 (-46d) | 2008-03-25 → 2008-02-12 (-42d) | 1d? → 0.71d? |  | 35d → 314.08d |  | resources Mike [50%] → Kapil [70%] |
| 1359 | **Spectrums** | 2008-03-26 → 2008-02-12 (-43d) | 2008-04-15 → 2008-02-15 (-60d) | 15d? → 3.08d? |  | 35d → 314.08d |  |  |
| 1360 | Linear | 2008-03-26 → 2008-02-12 (-43d) | 2008-03-26 → 2008-02-12 (-43d) | 1d? → 0.77d? |  | 35d → 314.08d |  | resources Mike [50%] → ShashiP [65%] |
| 1361 | Power | 2008-03-27 → 2008-02-12 (-44d) | 2008-03-27 → 2008-02-13 (-43d) | 1d? → 0.77d? |  | 35d → 314.08d |  | resources Mike [50%] → ShashiP [65%] |
| 1362 | Phase | 2008-03-28 → 2008-02-13 (-44d) | 2008-03-28 → 2008-02-14 (-43d) | 1d? → 0.77d? |  | 35d → 314.08d |  | resources Mike [50%] → ShashiP [65%] |
| 1363 | Cross power | 2008-04-15 → 2008-02-14 (-61d) | 2008-04-15 → 2008-02-15 (-60d) | 1d? → 0.77d? |  | 35d → 314.08d | Auto power → 1362 | resources Mike [50%] → ShashiP [65%] |
| 1364 | **Filters** | 2008-04-28 → 2008-02-15 (-73d) | 2008-05-29 → 2008-03-03 (-87d) | 24d? → 11.43d? |  | 35d → 314.08d |  |  |
| 1365 | Weighting filters | 2008-04-28 → 2008-02-15 (-73d) | 2008-05-07 → 2008-02-22 (-75d) | 8d? → 5.71d? |  | 35d → 314.08d |  | resources Mike [50%] → Kapil [70%] |
| 1366 | CCIR | 2008-05-14 → 2008-02-22 (-82d) | 2008-05-19 → 2008-02-27 (-82d) | 4d? → 2.86d? |  | 35d → 314.08d |  | resources Mike [50%] → Kapil [70%] |
| 1367 | Low Pass, high pass, band pass, notch | 2008-05-26 → 2008-02-27 (-89d) | 2008-05-29 → 2008-03-03 (-87d) | 4d? → 2.86d? |  | 35d → 314.08d |  | resources Mike [50%] → Kapil [70%] |
| 1368 | **Distortion** | 2008-05-30 → 2008-03-03 (-88d) | 2008-06-16 → 2008-03-10 (-98d) | 12d? → 5d? |  | 35d → 314.08d |  |  |
| 1369 | THD | 2008-05-30 → 2008-03-03 (-88d) | 2008-05-30 → 2008-03-04 (-87d) | 1d? → 0.71d? |  | 35d → 314.08d |  | resources Mike [50%] → Kapil [70%] |
| 1370 | THD + Noise | 2008-06-05 → 2008-03-04 (-93d) | 2008-06-06 → 2008-03-05 (-93d) | 2d? → 1.43d? |  | 35d → 314.08d |  | resources Mike [50%] → Kapil [70%] |
| 1371 | SINAD | 2008-06-09 → 2008-03-05 (-96d) | 2008-06-09 → 2008-03-06 (-95d) | 1d? → 0.71d? |  | 35d → 314.08d |  | resources Mike [50%] → Kapil [70%] |
| 1372 | ENOB | 2008-06-12 → 2008-03-06 (-98d) | 2008-06-12 → 2008-03-07 (-97d) | 1d? → 0.71d? |  | 35d → 314.08d |  | resources Mike [50%] → Kapil [70%] |

| ID | Task | Start | Finish | Duration | Complete | Total float | Predecessors | Other |
| --- | --- | --- | --- | --- | --- | --- | --- | --- |
| 1373 | SNR | 2008-06-13 → 2008-03-07 (-98d) | 2008-06-13 → 2008-03-07 (-98d) | 1d? → 0.71d? |  | 35d → 314.08d |  | resources Mike [50%] → Kapil [70%] |
| 1374 | SFDR | 2008-06-16 → 2008-03-07 (-101d) | 2008-06-16 → 2008-03-10 (-98d) | 1d? → 0.71d? |  | 35d → 314.08d |  | resources Mike [50%] → Kapil [70%] |
| 1375 | Averaging | 2008-07-03 → 2008-03-10 (-115d) | 2008-07-16 → 2008-03-19 (-119d) | 10d? → 7.14d? |  | 35d → 314.08d |  | resources Mike [50%] → Kapil [70%] |
| 1376 | Coherence | 2008-07-18 → 2008-03-19 (-121d) | 2008-07-21 → 2008-03-24 (-119d) | 2d? → 1.43d? |  | 35d → 313.08d |  | resources Mike [50%] → Kapil [70%] |
| 1377 | **Signal Generation** | 2008-07-22 → 2008-02-04 A (-169d) | 2008-08-04 → 2008-03-24 (-133d) | 10d? → 35.85d? | 0% → 20% | 35d → 280.63d |  |  |
| 1378 | Sine | 2008-07-22 → 2008-03-24 A (-120d) | 2008-07-22 → 2008-03-24 A (-120d) | 1d? → 0.77d? | 0% → 100% | 35d → none |  | resources Mike [50%] → Ramkumar [65%] |
| 1379 | **Noise** | 2008-07-30 → 2008-02-04 (-177d) | 2008-08-04 → 2008-02-07 (-179d) | 4d? → 3.08d? |  | 35d → 313.4d |  |  |
| 1380 | Random | 2008-07-30 → 2008-02-04 (-177d) | 2008-07-30 → 2008-02-04 (-177d) | 1d? → 0.77d? |  | 35d → 313.4d | Square → none | resources Mike [50%] → Ramkumar [65%] |
| 1381 | Pink | 2008-07-31 → 2008-02-04 (-178d) | 2008-07-31 → 2008-02-05 (-177d) | 1d? → 0.77d? |  | 35d → 313.4d |  | resources Mike [50%] → Ramkumar [65%] |
| 1382 | White | 2008-08-01 → 2008-02-05 (-178d) | 2008-08-01 → 2008-02-06 (-177d) | 1d? → 0.77d? |  | 35d → 313.4d |  | resources Mike [50%] → Ramkumar [65%] |
| 1383 | Gaussian | 2008-08-04 → 2008-02-06 (-180d) | 2008-08-04 → 2008-02-07 (-179d) | 1d? → 0.77d? |  | 35d → 313.4d |  | resources Mike [50%] → Ramkumar [65%] |
| 1384 | Octave | 2008-08-11 → 2008-02-07 (-186d) | 2008-08-12 → 2008-02-08 (-186d) | 2d? → 1.54d? |  | 35d → 313.4d |  | resources Mike [50%] → Ramkumar [65%] |
| 1385 | **Math** | 2008-08-13 → 2008-02-08 (-187d) | 2008-09-10 → 2008-02-20 (-203d) | 21d? → 8.14d? |  | 35d → 312.4d |  |  |
| 1386 | Cepstrum | 2008-08-13 → 2008-02-08 (-187d) | 2008-08-14 → 2008-02-13 (-183d) | 2d? → 1.43d? |  | 35d → 312.4d |  | resources Mike [50%] → Kapil [70%] |
| 1387 | Basic Complex math | 2008-08-22 → 2008-02-13 (-191d) | 2008-08-25 → 2008-02-14 (-193d) | 2d? → 1.43d? |  | 35d → 312.4d |  | resources Mike [50%] → Kapil [70%] |
| 1388 | Hilbert | 2008-08-28 → 2008-02-14 (-196d) | 2008-08-29 → 2008-02-15 (-196d) | 2d? → 1.43d? |  | 35d → 312.4d |  | resources Mike [50%] → Kapil [70%] |
| 1389 | Conversions | 2008-09-03 → 2008-02-15 (-201d) | 2008-09-04 → 2008-02-19 (-198d) | 2d? → 1.43d? |  | 35d → 312.4d |  | resources Mike [50%] → Kapil [70%] |
| 1390 | Differentiation/Integration | 2008-09-05 → 2008-02-19 (-199d) | 2008-09-05 → 2008-02-20 (-198d) | 1d? → 0.71d? |  | 35d → 312.4d |  | resources Mike [50%] → Kapil [70%] |
| 1391 | Statistical (mean,mode…) | 2008-09-10 → 2008-02-20 (-203d) | 2008-09-10 → 2008-02-20 (-203d) | 1d? → 0.71d? |  | 35d → 312.4d |  | resources Mike [50%] → Kapil [70%] |
| 1392 | **Limit lines** | 2008-09-12 → 2008-02-20 (-205d) | 2008-09-16 → 2008-02-22 (-207d) | 3d? → 2d? |  | 35d → 312.4d |  |  |
| 1393 | Upper limit | 2008-09-12 → 2008-02-20 (-205d) | 2008-09-12 → 2008-02-21 (-204d) |  |  | 35d → 312.4d |  |  |
| 1394 | Lower limit | 2008-09-16 → 2008-02-21 (-208d) | 2008-09-16 → 2008-02-22 (-207d) |  |  | 35d → 312.4d |  |  |
| 1395 | **Swept Sine** | 2008-09-17 → 2008-02-22 (-208d) | 2008-09-30 → 2008-02-29 (-214d) | 10d? → 5d? |  | 35d → 312.4d |  |  |
| 1396 | Gain, Phase margins | 2008-09-17 → 2008-02-22 (-208d) | 2008-09-17 → 2008-02-25 (-205d) |  |  | 35d → 312.4d |  |  |
| 1397 | Frequency, Damping | 2008-09-22 → 2008-02-25 (-210d) | 2008-09-22 → 2008-02-26 (-209d) |  |  | 35d → 312.4d |  |  |
| 1398 | Frequency Response | 2008-09-24 → 2008-02-26 (-211d) | 2008-09-24 → 2008-02-27 (-210d) |  |  | 35d → 312.4d |  |  |
| 1399 | Variance | 2008-09-26 → 2008-02-27 (-212d) | 2008-09-26 → 2008-02-28 (-211d) |  |  | 35d → 312.4d |  |  |
| 1400 | Group Delay | 2008-09-30 → 2008-02-28 (-215d) | 2008-09-30 → 2008-02-29 (-214d) |  |  | 35d → 312.4d |  |  |
| 1401 | **Marker Functions** | 2008-10-01 → 2008-02-29 (-215d) | 2008-10-15 → 2008-03-10 (-219d) | 11d? → 6d? |  | 35d → 312.4d |  |  |
| 1402 | Peak Search | 2008-10-01 → 2008-02-29 (-215d) | 2008-10-01 → 2008-03-03 (-212d) |  |  | 35d → 312.4d |  |  |
| 1403 | Next Largest Peak | 2008-10-06 → 2008-03-03 (-217d) | 2008-10-06 → 2008-03-04 (-216d) |  |  | 35d → 312.4d |  |  |
| 1404 | Next Peak Right | 2008-10-08 → 2008-03-04 (-218d) | 2008-10-08 → 2008-03-05 (-217d) |  |  | 35d → 312.4d |  |  |
| 1405 | Next Peak Left | 2008-10-10 → 2008-03-05 (-219d) | 2008-10-10 → 2008-03-06 (-218d) |  |  | 35d → 312.4d |  |  |
| 1406 | Peak Tracking | 2008-10-14 → 2008-03-06 (-222d) | 2008-10-14 → 2008-03-07 (-221d) |  |  | 35d → 312.4d |  |  |
| 1407 | Marker to Center | 2008-10-15 → 2008-03-07 (-222d) | 2008-10-15 → 2008-03-10 (-219d) |  |  | 35d → 312.4d |  |  |
| 1408 | Orbit | 2008-10-20 → 2008-03-10 (-224d) | 2008-10-20 → 2008-03-11 (-223d) |  |  | 35d → 312.4d |  |  |
| 1409 | **Time measurements** | 2008-10-22 → 2008-03-11 (-225d) | 2008-11-12 → 2008-03-24 (-233d) | 16d? → 9d? |  | 34d → 312.4d |  |  |
| 1410 | Delay time function | 2008-10-22 → 2008-03-11 (-225d) | 2008-10-22 → 2008-03-12 (-224d) |  |  | 35d → 312.4d |  |  |
| 1411 | Maximum overshoot | 2008-10-24 → 2008-03-12 (-226d) | 2008-10-24 → 2008-03-13 (-225d) |  |  | 35d → 312.4d |  |  |
| 1412 | Rise time | 2008-10-28 → 2008-03-13 (-229d) | 2008-10-28 → 2008-03-14 (-228d) |  |  | 35d → 312.4d |  |  |
| 1413 | Decay Time | 2008-10-31 → 2008-03-14 (-231d) | 2008-11-03 → 2008-03-18 (-230d) |  |  | 35d → 312.4d |  |  |
| 1414 | Pulse Width | 2008-11-05 → 2008-03-18 (-232d) | 2008-11-05 → 2008-03-19 (-231d) |  |  | 35d → 312.4d |  |  |
| 1415 | Voltage Max | 2008-11-07 → 2008-03-19 (-233d) | 2008-11-07 → 2008-03-20 (-232d) |  |  | 35d → 312.4d |  |  |
| 1416 | Voltage Min | 2008-11-11 → 2008-03-20 (-236d) | 2008-11-11 → 2008-03-21 (-235d) |  |  | 34d → 312.4d |  |  |
| 1417 | Settling time | 2008-11-12 → 2008-03-21 (-236d) | 2008-11-12 → 2008-03-24 (-233d) |  |  | 34d → 312.4d |  |  |
| 1418 | **Error codes definition** | 2008-03-04 → 2008-02-14 A (-19d) | 2008-03-18 → 2008-02-28 A (-19d) |  | 0% → 100% | 9.99d → none |  |  |
| 1419 | Categorize errors | 2008-03-04 → 2008-02-14 A (-19d) | 2008-03-10 → 2008-02-21 A (-18d) |  | 0% → 100% | 9.99d → none |  | resources Kapil [70%] → Himanshu [70%] |
| 1420 | Error code translation proposal/plan | 2008-03-11 → 2008-02-21 A (-19d) | 2008-03-17 → 2008-02-27 A (-19d) |  | 0% → 100% | 10.99d → none |  | resources Kapil [70%] → Himanshu [70%] |
| 1421 | Review with team | 2008-03-17 → 2008-02-27 A (-19d) | 2008-03-17 → 2008-02-28 A (-18d) |  | 0% → 100% | 10.99d → none |  | resources Kapil [70%] → Himanshu [70%] |
| 1422 | Incorporate review decisions | 2008-03-18 → 2008-02-28 A (-19d) | 2008-03-18 → 2008-02-28 A (-19d) |  | 0% → 100% | 10.99d → none |  | resources Kapil [70%] → Himanshu [70%] |
| 1423 | **Define meas to be implemented in MVP** | 2008-11-18 → 2008-07-11 A (-130d) | 2008-12-17 → 2008-07-29 A (-141d) | 22d? → 12d? | 0% → 100% | 32d → none |  |  |
| 1424 | List the meas for MVP | 2008-11-18 → 2008-07-11 A (-130d) | 2008-11-19 → 2008-07-15 A (-127d) |  | 0% → 100% | 34d → none |  |  |
| 1425 | Identify dependecies on other meas | 2008-11-26 → 2008-07-15 A (-134d) | 2008-12-01 → 2008-07-21 A (-133d) |  | 0% → 100% | 34d → none |  |  |
| 1426 | Review with team | 2008-12-04 → 2008-07-21 A (-136d) | 2008-12-05 → 2008-07-23 A (-135d) |  | 0% → 100% | 32d → none |  |  |
| 1427 | Incorporate review decisions | 2008-12-09 → 2008-07-23 A (-139d) | 2008-12-10 → 2008-07-25 A (-138d) |  | 0% → 100% | 32d → none |  |  |
| 1428 | Finalize meas definition for MVP | 2008-12-16 → 2008-07-25 A (-144d) | 2008-12-17 → 2008-07-29 A (-141d) |  | 0% → 100% | 32d → none |  |  |
| 1429 | **Infrastructure Development** | 2008-02-04 A | 2008-12-24 → 2008-08-04 (-142d) | 233d? → 130.14d? | 0% → 92% | 10.99d → 53.42d |  |  |
| 1430 | Unit test framework setup | 2008-02-06 → 2008-02-04 A (-2d) | 2008-02-12 → 2008-02-06 A (-6d) |  | 0% → 100% | 9.99d → none | Process to keep development tools in sync on development machines → none |  |
| 1431 | Test result reporting and tracking | 2008-02-12 → 2008-02-06 A (-6d) | 2008-02-18 → 2008-02-14 A (-4d) |  | 0% → 100% | 9.99d → none |  |  |
| 1432 | Folder structure (OS, Unit test, performance test, verfication test and results) | 2008-02-18 → 2008-02-14 A (-4d) | 2008-02-20 → 2008-02-15 A (-5d) |  | 0% → 100% | 9.99d → none |  |  |
| 1433 | Work with LP to understand their needs | 2008-12-19 → 2008-07-29 A (-143d) | 2008-12-24 → 2008-08-04 (-142d) |  | 0% → 75% | 31d → 53.42d | 1428, Defect tracking system → 1428 |  |
| 1434 | **AI Less SLIC Single Commands** | 2008-02-04 A | 2009-05-22 → 2009-05-27 (+5d) | 339.14d? → 342.33d? | 0% → 2% | 0d → 5.83d |  |  |
| 1435 | Develop Code and Nunit tests for 200 Parser Commands (15 per Day) | 2008-02-04 A |  |  | 0% → 50% | 0d → 5.83d |  |  |
| 1436 | **AI Layer to IE State Proxy (Instrument Engine AI Layer)** |  | 2008-07-23 → 2008-07-25 (+2d) | 102.57d → 104.55d |  | 0d → 5.83d |  | was named Instrument Engine AI Layer |
| 1446 | Design Source IE Interface |  | 2008-05-16 → 2008-05-19 (+3d) | 7.14d → 7.69d |  | 0d → 5.83d |  | resources Vishal [70%] → 2ETW [65%] |
| 1447 | Implement Source IE Interface |  | 2008-05-28 → 2008-05-29 (+1d) | 7.14d → 7.69d |  | 0d → 5.83d |  | resources Vishal [70%] → 2ETW [65%] |
| 1448 | Nunit Source IE Interface | 2008-05-28 → 2008-05-29 (+1d) | 2008-06-03 → 2008-06-04 (+1d) | 4.29d → 4.62d |  | 0d → 5.83d |  | resources Vishal [70%] → 2ETW [65%] |
| 1449 | Design CAL IE Interface | 2008-06-03 → 2008-06-04 (+1d) | 2008-06-06 → 2008-06-09 (+3d) | 2.86d → 3.08d |  | 0d → 5.83d |  | resources Vishal [70%] → 2ETW [65%] |
| 1450 | Implement CAL IE Interface | 2008-06-06 → 2008-06-09 (+3d) | 2008-06-11 → 2008-06-13 (+2d) | 2.86d → 3.08d |  | 0d → 5.83d |  | resources Vishal [70%] → 2ETW [65%] |
| 1451 | Nunit CAL IE Interface | 2008-06-11 → 2008-06-13 (+2d) | 2008-06-12 → 2008-06-16 (+4d) | 1.43d → 1.54d |  | 0d → 5.83d |  | resources Vishal [70%] → 2ETW [65%] |

| ID | Task | Start | Finish | Duration | Total float | Predecessors | Other |
| --- | --- | --- | --- | --- | --- | --- | --- |
| 1452 | Design Data Access Free Run Mode IE Interface | 2008-06-12 → 2008-06-16 (+4d) | 2008-06-17 → 2008-06-19 (+2d) |  | 0d → 5.83d |  |  |
| 1453 | Implement Data Access Free Run Mode IE Interface | 2008-06-17 → 2008-06-19 (+2d) | 2008-06-20 → 2008-06-24 (+4d) |  | 0d → 5.83d |  |  |
| 1454 | Nunit Data Access Free Run Mode IE Interface | 2008-06-20 → 2008-06-24 (+4d) | 2008-06-23 → 2008-06-25 (+2d) |  | 0d → 5.83d |  |  |
| 1455 | Design Data Access Trigger Mode IE Interface | 2008-06-23 → 2008-06-25 (+2d) | 2008-07-01 → 2008-07-03 (+2d) |  | 0d → 5.83d |  |  |
| 1456 | Implement Data Access Trigger Mode IE Interface | 2008-07-01 → 2008-07-03 (+2d) | 2008-07-09 → 2008-07-11 (+2d) |  | 0d → 5.83d |  |  |
| 1457 | Nunit Data Access Trigger Mode IE Interface | 2008-07-09 → 2008-07-11 (+2d) | 2008-07-11 → 2008-07-15 (+4d) |  | 0d → 5.83d |  |  |
| 1458 | Design Data Access Octave Mode IE Interface | 2008-07-11 → 2008-07-15 (+4d) | 2008-07-16 → 2008-07-18 (+2d) |  | 0d → 5.83d |  |  |
| 1459 | Implement Data Access Octave Mode IE Interface | 2008-07-16 → 2008-07-18 (+2d) | 2008-07-21 → 2008-07-23 (+2d) |  | 0d → 5.83d |  |  |
| 1460 | Nunit Data Access Octave Mode IE Interface | 2008-07-21 → 2008-07-23 (+2d) | 2008-07-23 → 2008-07-25 (+2d) |  | 0d → 5.83d |  |  |
| 1461 | **Status System** | 2008-07-08 → 2008-02-04 (-155d) | 2008-08-05 → 2008-03-03 (-155d) | 20d? → 21d? | 101.4d → 44.62d |  |  |
| 1462 | Design Status System Registers | 2008-07-08 → 2008-02-04 (-155d) | 2008-07-17 → 2008-02-14 (-154d) |  | 101.4d → 44.62d | Nunit Run Mode Logic → none |  |
| 1463 | Implement Status System Execution Routines | 2008-07-17 → 2008-02-14 (-154d) | 2008-07-29 → 2008-02-26 (-154d) |  | 101.4d → 44.62d |  |  |
| 1464 | Nunit Status System | 2008-07-29 → 2008-02-26 (-154d) | 2008-08-05 → 2008-03-03 (-155d) |  | 102.4d → 45.62d |  |  |
| 1465 | **SCPI Required Commands** | 2008-08-05 → 2008-03-03 (-155d) | 2008-09-30 → 2008-08-01 (-60d) | 40.46d? → 108.62d? | 101.4d → 43.39d |  |  |
| 1466 | Design SCPI Required Commands | 2008-08-05 → 2008-03-03 (-155d) | 2008-08-27 → 2008-03-26 (-154d) |  | 102.4d → 45.62d |  |  |
| 1467 | Implement SCPI Required Commands | 2008-08-27 → 2008-03-26 (-154d) | 2008-09-18 → 2008-04-25 (-146d) |  | 101.4d → 43.62d |  |  |
| 1468 | Nunit SCPI Required commands | 2008-09-18 → 2008-07-22 (-58d) | 2008-09-30 → 2008-08-01 (-60d) |  | 101.4d → 43.39d |  |  |
| 1469 | **Analyzer Modes** | 2008-07-23 → 2008-07-25 (+2d) | 2008-08-13 → 2008-08-18 (+5d) | 15.71d? → 16.71d? | 0d → 5.83d |  |  |
| 1470 | Design FFT Mode | 2008-07-23 → 2008-07-25 (+2d) | 2008-07-29 → 2008-07-31 (+2d) |  | 0d → 5.83d |  |  |
| 1471 | Design Octave Mode | 2008-07-29 → 2008-07-31 (+2d) | 2008-08-04 → 2008-08-06 (+2d) |  | 0d → 5.83d |  |  |
| 1472 | Design Stepped Sine Mode | 2008-08-04 → 2008-08-06 (+2d) | 2008-08-13 → 2008-08-18 (+5d) |  | 0d → 5.83d |  |  |
| 1473 | **Frequency Execution Routines** | 2008-08-13 → 2008-08-18 (+5d) | 2008-08-21 → 2008-08-25 (+4d) | 5.29d? → 4.29d? | 0d → 5.83d |  |  |
| 1474 | Implement | 2008-08-13 → 2008-08-18 (+5d) | 2008-08-19 → 2008-08-21 (+2d) |  | 0d → 5.83d |  |  |
| 1475 | Nunit | 2008-08-19 → 2008-08-21 (+2d) | 2008-08-21 → 2008-08-25 (+4d) |  | 0d → 5.83d |  |  |
| 1476 | **Averaging Execution Routines** | 2008-08-21 → 2008-08-25 (+4d) | 2008-09-02 → 2008-09-05 (+3d) | 8.57d? → 9.57d? | 0d → 5.83d |  |  |
| 1477 | Implement | 2008-08-21 → 2008-08-25 (+4d) | 2008-08-28 → 2008-09-01 (+4d) |  | 0d → 5.83d |  |  |
| 1478 | Nunit | 2008-08-28 → 2008-09-01 (+4d) | 2008-09-02 → 2008-09-05 (+3d) |  | 0d → 5.83d |  |  |
| 1479 | **Source Execution Routines** | 2008-09-02 → 2008-09-05 (+3d) | 2008-09-25 → 2008-09-30 (+5d) | 16.71d? → 16.92d? | 0d → 5.83d |  |  |
| 1480 | Implement | 2008-09-02 → 2008-09-05 (+3d) | 2008-09-19 → 2008-09-23 (+4d) | 11.43d? → 12.31d? | 0d → 5.83d |  | resources Vishal [70%] → 2ETW [65%] |
| 1481 | Nunit | 2008-09-19 → 2008-09-23 (+4d) | 2008-09-25 → 2008-09-30 (+5d) | 4.29d? → 4.62d? | 0d → 5.83d |  | resources Vishal [70%] → 2ETW [65%] |
| 1482 | **Channel Execution Routines** | 2008-09-25 → 2008-09-30 (+5d) | 2008-10-21 → 2008-10-24 (+3d) |  | 0d → 6.83d |  |  |
| 1483 | Implement | 2008-09-25 → 2008-09-30 (+5d) | 2008-10-14 → 2008-10-20 (+6d) |  | 0d → 5.83d |  |  |
| 1484 | Nunit | 2008-10-14 → 2008-10-20 (+6d) | 2008-10-21 → 2008-10-24 (+3d) |  | 0d → 5.83d |  |  |
| 1485 | **Trigger Execution Routines** | 2008-10-21 → 2008-10-24 (+3d) | 2008-11-12 → 2008-11-18 (+6d) |  | 0d → 5.83d |  |  |
| 1486 | Implement | 2008-10-21 → 2008-10-24 (+3d) | 2008-11-06 → 2008-11-11 (+5d) |  | 0d → 5.83d |  |  |
| 1487 | Nunit | 2008-11-06 → 2008-11-11 (+5d) | 2008-11-12 → 2008-11-18 (+6d) |  | 0d → 5.83d |  |  |
| 1488 | Nunit For TCA Commands | 2008-09-30 → 2008-08-22 (-39d) | 2008-10-14 → 2008-09-04 (-40d) |  | 99.4d → 43.85d | 1468, 1487, Implement SCPI Interface logic → 1468 |  |
| 1489 | **Trace Commands** | 2008-11-12 → 2008-11-18 (+6d) | 2009-01-19 → 2009-01-22 (+3d) |  | 0d → 5.83d |  |  |
| 1490 | Design AI - Analysis Layer Interface | 2008-11-12 → 2008-11-18 (+6d) | 2008-11-19 → 2008-11-24 (+5d) |  | 0d → 5.83d |  |  |
| 1491 | Implement AI -- Analysis Layer Interface | 2008-11-19 → 2008-11-24 (+5d) | 2008-11-25 → 2008-11-28 (+3d) |  | 0d → 5.83d |  |  |
| 1492 | Design Trace Combinations | 2008-11-25 → 2008-11-28 (+3d) | 2008-12-16 → 2008-12-19 (+3d) |  | 0d → 5.83d |  |  |
| 1493 | Implement Trace Combinations | 2008-12-16 → 2008-12-19 (+3d) | 2009-01-06 → 2009-01-12 (+6d) |  | 0d → 5.83d |  |  |
| 1494 | Implement Fetch Command | 2009-01-06 → 2009-01-12 (+6d) | 2009-01-09 → 2009-01-15 (+6d) |  | 0d → 5.83d |  |  |
| 1495 | Nunit Fetch Commands | 2009-01-09 → 2009-01-15 (+6d) | 2009-01-19 → 2009-01-22 (+3d) |  | 0d → 5.83d |  |  |
| 1496 | **Measurement Value** | 2009-01-19 → 2009-01-22 (+3d) | 2009-05-22 → 2009-05-27 (+5d) |  | 0d → 5.83d |  |  |
| 1497 | Design MV Combinations (19 Measurements * 2 Days per Measurment) | 2009-01-19 → 2009-01-22 (+3d) | 2009-04-03 → 2009-04-09 (+6d) |  | 0d → 5.83d | 1495, Nunit SCPI Interface logic → 1495 |  |
| 1498 | Implement Trace Combinations | 2009-04-03 → 2009-04-09 (+6d) | 2009-04-24 → 2009-04-29 (+5d) |  | 0d → 5.83d |  |  |
| 1499 | Implement Fetch Command | 2009-04-24 → 2009-04-29 (+5d) | 2009-05-14 → 2009-05-19 (+5d) |  | 0d → 5.83d |  |  |
| 1500 | Nunit Fetch Commands | 2009-05-14 → 2009-05-19 (+5d) | 2009-05-22 → 2009-05-27 (+5d) |  | 0d → 5.83d |  |  |
| 1501 | **Analysis** | 2008-06-24 → 2008-02-04 (-141d) | 2008-11-19 → 2009-01-07 (+49d) | 105.45d → 242.77d | 117.32d → 47.08d |  |  |
| 1502 | Design Analysis Combinations (3 Measurements * 3 Days per Measurment) | 2008-06-24 → 2008-02-04 (-141d) | 2008-07-17 → 2008-02-26 (-142d) |  | 117.32d → 47.08d | Nunit SCPI Interface logic → none |  |
| 1503 | Design Equation Parser | 2008-07-17 → 2008-02-26 (-142d) | 2008-07-30 → 2008-03-10 (-142d) |  | 117.32d → 47.08d |  |  |
| 1504 | Implement Equation Parser | 2008-07-30 → 2008-04-30 (-91d) | 2008-09-18 → 2008-07-22 (-58d) | 36.36d → 30.77d | 117.32d → 47.08d |  | resources Gowie [55%] → 2ETW [65%] |
| 1505 | Implement Trace Combinations | 2008-09-18 → 2008-09-04 (-14d) | 2008-10-14 → 2008-10-22 (+8d) | 18.18d → 15.38d | 117.32d → 47.54d |  | resources Gowie [55%] → 2ETW [65%] |
| 1506 | Implement Fetch Command | 2008-10-14 → 2008-11-27 (+44d) | 2008-11-07 → 2008-12-19 (+42d) | 18.18d → 15.38d | 117.32d → 46.04d |  | resources Gowie [55%] → 2ETW [65%] |
| 1507 | Nunit Fetch Commands | 2008-11-07 → 2008-12-30 (+53d) | 2008-11-19 → 2009-01-07 (+49d) | 7.27d → 6.15d | 117.32d → 48.16d |  | resources Gowie [55%] → 2ETW [65%] |
| 1508 | **Lan Configuration** | 2008-10-14 → 2008-10-22 (+8d) | 2008-10-31 → 2008-11-27 (+27d) | 13.31d → 25.62d | 98.4d → 41.93d |  |  |
| 1509 | Port from Heroes | 2008-10-14 → 2008-10-22 (+8d) | 2008-10-23 → 2008-11-04 (+12d) |  | 99.4d → 43.85d |  |  |
| 1510 | Nunit | 2008-10-23 → 2008-11-20 (+28d) | 2008-10-31 → 2008-11-27 (+27d) |  | 98.4d → 41.93d |  |  |
| 1511 | **Calibration Commands** | 2008-11-19 → 2009-02-26 (+99d) | 2008-12-09 → 2009-03-27 (+108d) | 14.55d → 21.54d | 117.32d → 48.16d |  |  |
| 1512 | Implement | 2008-11-19 → 2009-02-26 (+99d) | 2008-12-02 → 2009-03-09 (+97d) | 9.09d → 7.69d | 117.32d → 48.16d |  | resources Gowie [55%] → 2ETW [65%] |
| 1513 | Nunit | 2008-12-02 → 2009-03-23 (+111d) | 2008-12-09 → 2009-03-27 (+108d) | 5.45d → 4.62d | 117.32d → 48.47d |  | resources Gowie [55%] → 2ETW [65%] |
| 1514 | **Misc Commands** | 2008-10-31 → 2009-01-07 (+68d) | 2008-12-03 → 2009-04-08 (+126d) | 23.08d → 64.62d | 98.4d → 40.78d |  |  |
| 1515 | Implement | 2008-10-31 → 2009-01-07 (+68d) | 2008-11-21 → 2009-01-29 (+69d) |  | 98.4d → 41.85d |  |  |
| 1516 | Nunit | 2008-11-21 → 2009-03-27 (+126d) | 2008-12-03 → 2009-04-08 (+126d) |  | 98.4d → 40.78d |  |  |
| 1517 | **FFT Mode I.I.** | 2008-02-20 → 2008-03-27 (+36d) | 2008-07-08 → 2009-04-28 (+294d) | 98.41d? → 283.05d? | 100.4d → 26.93d |  | was named II |
| 1518 | Design Frequency GUI | 2008-02-20 → 2008-03-27 (+36d) | 2008-02-26 → 2008-04-01 (+35d) |  | 100.4d → 34.54d |  |  |
| 1519 | Implement Frequency GUI | 2008-02-26 → 2008-04-01 (+35d) | 2008-03-03 → 2008-04-08 (+36d) |  | 100.4d → 34.54d |  |  |
| 1520 | Nunit Frequency GUI | 2008-03-03 → 2008-04-25 (+53d) | 2008-03-07 → 2008-04-30 (+54d) |  | 100.4d → 34.54d |  |  |
| 1521 | Design Channel GUI | 2008-02-26 → 2008-04-01 (+35d) | 2008-03-06 → 2008-04-11 (+36d) |  | 117.32d → 265.91d |  |  |

| ID | Task | Start | Finish | Duration | Complete | Total float | Predecessors | Other |
| --- | --- | --- | --- | --- | --- | --- | --- | --- |
| 1522 | Implement Channel GUI | 2008-03-07 → 2008-08-01 (+147d) | 2008-03-20 → 2008-08-14 (+147d) |  |  | 100.4d → 34.54d |  |  |
| 1523 | Nunit Channel GUI | 2008-03-20 → 2008-08-14 (+147d) | 2008-03-27 → 2008-08-22 (+148d) |  |  | 99.4d → 35.54d |  |  |
| 1524 | Design Trigger GUI | 2008-03-06 → 2008-04-16 (+41d) | 2008-03-27 → 2008-05-07 (+41d) |  |  | 117.32d → 266.34d |  |  |
| 1525 | Implement Trigger GUI | 2008-03-27 → 2008-11-04 (+222d) | 2008-04-16 → 2008-11-20 (+218d) |  |  | 99.4d → 35.54d |  |  |
| 1526 | Nunit Trigger GUI | 2008-04-16 → 2008-12-19 (+247d) | 2008-04-25 → 2008-12-30 (+249d) |  |  | 99.4d → 34.89d |  |  |
| 1527 | Design Source GUI | 2008-03-27 → 2008-05-07 (+41d) | 2008-04-16 → 2008-05-27 (+41d) |  |  | 117.32d → 266.34d |  |  |
| 1528 | Implement Source GUI | 2008-04-25 → 2009-02-09 (+290d) | 2008-05-14 → 2009-02-26 (+288d) |  |  | 98.4d → 34.85d |  |  |
| 1529 | Nunit Source GUI | 2008-05-14 → 2009-04-08 (+329d) | 2008-05-22 → 2009-04-16 (+329d) |  |  | 98.4d → 34.62d |  |  |
| 1530 | Design Cancel / Ok Logic | 2008-04-29 → 2008-09-12 (+136d) | 2008-05-09 → 2008-09-23 (+137d) |  |  | 117.32d → 181.79d | Design Legal Settings Logic → none |  |
| 1531 | Implement Cancel / Ok Logic | 2008-06-06 → 2009-03-09 (+276d) | 2008-06-16 → 2009-03-17 (+274d) |  |  | 100.4d → 53.08d | Nunit legal settings logic → none |  |
| 1532 | Nunit Cancel / Ok Logic | 2008-06-16 → 2009-03-17 (+274d) | 2008-06-19 → 2009-03-23 (+277d) |  |  | 101.4d → 53.08d |  |  |
| 1536 | **35670A DataLinker** | 2008-01-07 A | 2008-07-02 → 2009-04-20 (+292d) | 127.32d? → 335.51d? | 0% → 77% | 38.13d → 32.65d |  |  |
| 1537 | **Design** | 2008-01-07 A | 2008-02-07 A |  | 0% → 100% | 39.13d → none |  |  |
| 1538 | FrameWork Design | 2008-01-07 A | 2008-01-14 A |  | 0% → 100% | 39.13d → none |  |  |
| 1539 | Review and Updation | 2008-01-14 A | 2008-01-18 A |  | 0% → 100% | 38.13d → none |  |  |
| 1540 | UI Design | 2008-01-18 A | 2008-01-29 A |  | 0% → 100% | 38.13d → none |  |  |
| 1541 | Review and Updation | 2008-01-29 A | 2008-02-07 A |  | 0% → 100% | 39.13d → none |  |  |
| 1542 | **Functionality** | 2008-02-07 A | 2008-05-05 → 2008-12-12 A (+221d) | 61.92d? → 220.22d? | 0% → 100% | 37.13d → none |  |  |
| 1543 | Finding 35670 on LAN-GPIB Converter | 2008-02-07 A | 2008-02-15 A |  | 0% → 100% | 38.13d → none |  |  |
| 1544 | Finding 35670 on USB-GPIB Converter | 2008-02-15 A | 2008-02-22 A |  | 0% → 100% | 38.13d → none |  |  |
| 1545 | Finding 35670 on GPIB-GPIB | 2008-02-22 A | 2008-02-28 A |  | 0% → 100% | 39.13d → none |  |  |
| 1546 | Ibasic prog for Dir info transfer in RAM | 2008-02-28 A | 2008-03-07 → 2008-05-05 A (+59d) |  | 0% → 100% | 40.13d → none |  |  |
| 1547 | Ibasic prog for Dir info transfer in Floppy Drive | 2008-03-07 → 2008-05-05 A (+59d) | 2008-03-14 → 2008-09-09 A (+179d) |  | 0% → 100% | 41.13d → none |  |  |
| 1548 | Implement Data structure to store Dir Info | 2008-03-14 → 2008-09-17 A (+187d) | 2008-03-19 → 2008-09-22 A (+187d) |  | 0% → 100% | 41.13d → none |  |  |
| 1549 | Parse the ascii file and store the info in datastructure | 2008-03-19 → 2008-09-22 A (+187d) | 2008-03-24 → 2008-09-24 A (+184d) |  | 0% → 100% | 40.13d → none |  |  |
| 1550 | Display data on Screen as per Format | 2008-03-24 → 2008-09-29 A (+189d) | 2008-03-27 → 2008-10-03 A (+190d) |  | 0% → 100% | 40.13d → none |  |  |
| 1551 | Sorting of displayed data | 2008-03-27 → 2008-10-10 A (+197d) | 2008-04-01 → 2008-10-15 A (+197d) |  | 0% → 100% | 40.13d → none |  |  |
| 1552 | Download selected file | 2008-04-01 → 2008-10-20 A (+202d) | 2008-04-04 → 2008-10-23 A (+202d) |  | 0% → 100% | 40.13d → none |  |  |
| 1553 | Download Directory selection dialog box | 2008-04-04 → 2008-10-23 A (+202d) | 2008-04-07 → 2008-10-24 A (+200d) |  | 0% → 100% | 40.13d → none |  |  |
| 1554 | DataViewer integration | 2008-04-07 → 2008-11-04 A (+211d) | 2008-04-15 → 2008-11-11 A (+210d) |  | 0% → 100% | 39.13d → none |  |  |
| 1555 | Uint Testing | 2008-04-15 → 2008-11-24 A (+223d) | 2008-05-05 → 2008-12-12 A (+221d) |  | 0% → 100% | 37.13d → none |  |  |
| 1556 | System Testing | 2008-05-05 → 2009-01-07 A (+247d) | 2008-05-27 → 2009-01-29 (+247d) |  | 0% → 25% | 37.13d → 72.05d |  |  |
| 1557 | **Help** | 2008-05-27 → 2009-02-09 A (+258d) | 2008-06-19 → 2009-02-26 (+252d) | 16.92d? → 12.31d? | 0% → 9% | 37.13d → 63.2d |  |  |
| 1558 | Online Manual help | 2008-05-27 → 2009-02-09 A (+258d) | 2008-06-02 → 2009-02-16 (+259d) |  | 0% → 25% | 37.13d → 63.2d |  |  |
| 1559 | Link Dialog Help button | 2008-06-04 → 2009-02-16 (+257d) | 2008-06-09 → 2009-02-19 (+255d) |  |  | 37.13d → 63.2d | Help Version → 1558 |  |
| 1560 | Getting Started | 2008-06-12 → 2009-02-19 (+252d) | 2008-06-19 → 2009-02-26 (+252d) |  |  | 37.13d → 63.2d | Help Organization → 1559 |  |
| 1561 | Show Software (Version number etc) | 2008-06-19 → 2009-03-02 (+256d) | 2008-06-24 → 2009-03-05 (+254d) |  |  | 37.13d → 63.54d |  |  |
| 1562 | Installer/Uninstaller | 2008-06-24 → 2009-04-10 A (+290d) | 2008-07-02 → 2009-04-20 (+292d) |  | 0% → 75% | 37.13d → 32.65d |  |  |
| 1575 | Implement | 2008-12-03 → 2009-03-02 (+89d) | 2008-12-29 → 2009-03-04 (+65d) | 15.38d? → 1.82d? |  | 96.4d → 66.16d | 1516 → none | resources 2ETW [65%] → Gowie [55%] |
| 1576 | Nunit | 2008-12-29 → 2009-03-04 (+65d) | 2009-01-07 → 2009-03-05 (+57d) | 7.69d? → 1.82d? |  | 96.4d → 64.34d | 1575 → none | resources 2ETW [65%] → Gowie [55%] |

## Version 3 (saved 2008-06-12, file MirageDEVPlan_12June.mpp)

Note of the change: Initial migration from $/Mirage

Last finish 2009-06-04 → 2009-07-21 (+47d). Complete tasks 107 → 289.

Added:

| ID | Task | Duration | Start | Finish | Predecessors | Constraint | Resources |
| --- | --- | --- | --- | --- | --- | --- | --- |
| 31 | Deploying latest NK.bin on all P2000 | 1d? | 2008-06-04 | 2008-06-05 | 26 |  | RKB [70%] |
| 32 | Build Mirage Components for Device image SDK | 1d? | 2008-06-05 | 2008-06-06 | 31 |  | RKB [70%] |
| 65 | Implement screen Load Preconfigured | 1.43d? | 2008-06-02 A | 2008-06-03 |  |  | Vishal [70%] |
| 71 | Active Display Traversing | 2.14d? | 2008-06-12 | 2008-06-16 | 70 |  | Vishal [70%] |
| 72 | Unit test for Active Display | 1d? | 2008-06-17 | 2008-06-17 | 71 |  | Vishal [70%] |
| 73 | UT for Show and Hide of Status/SoftKeys | 1d? | 2008-06-18 | 2008-06-18 | 72 |  | Vishal [70%] |
| 74 | UT for Configuring Multiple display | 1d? | 2008-06-19 | 2008-06-19 | 73 |  | Vishal [70%] |
| 75 | UT for configuring Pre-configured display | 1d? | 2008-06-20 | 2008-06-20 | 74 |  | Vishal [70%] |
| 76 | Code Reviews | 1d? | 2008-06-23 | 2008-06-23 | 75 |  | Vishal [70%] |
| 77 | Absorb changes of Code Reviews | 1d? | 2008-06-24 | 2008-06-24 | 76 |  | Vishal [70%] |
| 78 | **Common Screen Navigation Technique** | 7.57d? | 2008-06-02 A | 2008-06-11 |  |  |  |
| 79 | Design the intial framework | 2.86d? | 2008-06-02 A | 2008-06-04 |  | start no earlier than 2008-06-02 | RKB [70%] |
| 80 | Implement common Navigation technique | 1.43d? | 2008-06-06 | 2008-06-09 |  | start no earlier than 2008-06-06 | Pallavi [70%] |
| 81 | Implement the Navigation technique on Freq Config screen | 0.71d? | 2008-06-09 | 2008-06-10 | 80 |  | Pallavi [70%] |
| 82 | Implement the Navigation technique on Channel | 0.71d? | 2008-06-10 | 2008-06-10 | 81 |  | Pallavi [70%] |
| 83 | Implemnt the Navigation technique on THD | 0.71d? | 2008-06-10 | 2008-06-11 | 82 |  | Pallavi [70%] |
| 84 | **Measurment Value Implementation** | 32.86d? | 2008-06-02 A | 2008-07-16 |  |  |  |
| 85 | Design the intial framework | 2.14d? | 2008-06-02 A | 2008-06-04 |  | start no earlier than 2008-06-02 | RKB [70%] |
| 86 | Implement Configure THD Screen | 1.43d? | 2008-06-02 A | 2008-06-03 A |  | start no earlier than 2008-06-11 | Himanshu [70%] |
| 87 | Implement Common Framework For Distortion Measurment Values | 2.14d? | 2008-06-03 | 2008-06-12 | 86 |  | Himanshu [70%] |
| 88 | populate Softkeys for Measurment Value Button | 2.14d? | 2008-06-12 A | 2008-06-16 A | 87 |  | Himanshu [70%] |
| 89 | Implement Configure THD +n screen | 2.14d? | 2008-06-16 A | 2008-06-18 | 88 |  | Himanshu [70%] |
| 90 | Implement SNR Screen | 2.14d? | 2008-06-18 A | 2008-06-23 | 89 |  | Himanshu [70%] |
| 91 | Implement SFDR screen | 2.14d? | 2008-06-23 A | 2008-06-25 | 90 |  | Himanshu [70%] |
| 92 | Implement SINAD Screen | 2.14d? | 2008-06-25 A | 2008-06-27 | 91 |  | Himanshu [70%] |
| 93 | Implement ENOB Screen | 2.14d? | 2008-06-27 A | 2008-07-01 | 92 |  | Himanshu [70%] |
| 94 | UT THD Screen | 1.43d? | 2008-07-01 | 2008-07-02 | 93 |  | Himanshu [70%] |
| 95 | UT THD +N | 1.43d? | 2008-07-02 | 2008-07-04 | 94 |  | Himanshu [70%] |
| 96 | UT SNR | 1.43d? | 2008-07-04 | 2008-07-07 | 95 |  | Himanshu [70%] |
| 97 | UT SFDR | 1.43d? | 2008-07-07 | 2008-07-09 | 96 |  | Himanshu [70%] |
| 98 | UT SINAD | 1.43d? | 2008-07-09 | 2008-07-10 | 97 |  | Himanshu [70%] |
| 99 | UT ENOB | 1.43d? | 2008-07-10 | 2008-07-14 | 98 |  | Himanshu [70%] |
| 100 | Code Reviews | 1.43d? | 2008-07-14 | 2008-07-15 | 99 |  | Himanshu [70%] |
| 101 | Absorb changes of Code Reviews | 1.43d? | 2008-07-15 | 2008-07-16 | 100 |  | Himanshu [70%] |
| 102 | **Measurment Data Implementation** | 34.57d? | 2008-06-02 A | 2008-07-18 |  |  |  |
| 103 | Design Intial Framework | 2.86d? | 2008-06-02 A | 2008-06-04 A |  | start no earlier than 2008-06-02 | RKB [70%] |
| 104 | Populate softkeys for Meas data | 1.43d? | 2008-06-09 A | 2008-06-10 |  | start no earlier than 2008-06-09 | Ravi [70%] |
| 105 | Implement Trace to Graph Screen | 2.14d? | 2008-06-10 | 2008-06-12 | 104 |  | Ravi [70%] |
| 106 | Implement WaterFall settings | 2.14d? | 2008-06-12 | 2008-06-16 | 105 |  | Ravi [70%] |
| 107 | Implement Add multiple Channels on Trace | 1d? | 2008-06-16 | 2008-06-17 | 106 |  | Ravi [70%] |
| 108 | Implement Graph Co-Ordinate ( Log) | 1d? | 2008-06-17 | 2008-06-18 | 107 |  | Ravi [70%] |
| 109 | Implement Graph Co-Ordinate ( Magnitude) | 1d? | 2008-06-18 | 2008-06-19 | 108 |  | Ravi [70%] |
| 110 | Implement Graph Co-Ordinate ( DB Magnitude) | 1d? | 2008-06-19 | 2008-06-20 | 109 |  | Ravi [70%] |
| 111 | Implement Graph Co-Ordinate ( Real/Imaginary) | 1d? | 2008-06-20 | 2008-06-23 | 110 |  | Ravi [70%] |
| 112 | Implement Graph Co-Ordinate ( Phase/WnWrape phase) | 1d? | 2008-06-23 | 2008-06-24 | 111 |  | Ravi [70%] |
| 113 | Implement Graph Co-Ordinate ( Group Delay) | 2.14d? | 2008-06-24 | 2008-06-26 | 112 |  | Ravi [70%] |
| 114 | Implement Graph Co-Ordinate ( Polar) | 2.14d? | 2008-06-26 | 2008-07-01 | 113 |  | Ravi [70%] |
| 115 | Implement Graph Co-Ordinate ( Nichols) | 2.14d? | 2008-07-01 | 2008-07-03 | 114 |  | Ravi [70%] |
| 116 | Implement Graph Co-Ordinate ( Nyquist) | 2.14d? | 2008-07-03 | 2008-07-07 | 115 |  | Ravi [70%] |
| 117 | AutoScale On/Off | 1d? | 2008-07-07 | 2008-07-08 | 116 |  | Ravi [70%] |
| 118 | UT Populate SoftKey | 1d? | 2008-07-08 | 2008-07-09 | 117 |  | Ravi [70%] |
| 119 | UT Trace to Graph Changes | 1d? | 2008-07-09 | 2008-07-10 | 118 |  | Ravi [70%] |
| 120 | UT WaterFall settings | 1d? | 2008-07-10 | 2008-07-11 | 119 |  | Ravi [70%] |
| 121 | UT Different co-ordinate types | 2.14d? | 2008-07-11 | 2008-07-15 | 120 |  | Ravi [70%] |
| 122 | Code Reviews | 1d? | 2008-07-15 | 2008-07-16 | 121 |  | Ravi [70%] |
| 123 | Absorb changes of Code Reviews | 2.14d? | 2008-07-16 | 2008-07-18 | 122 |  | Ravi [70%] |
| 124 | **Channel Key pattern** | 16.57d? | 2008-06-11 A | 2008-07-04 |  |  |  |
| 125 | Accelerators implementation | 2.14d? | 2008-06-13 A | 2008-06-17 A |  |  | Pallavi [70%] |
| 126 | OK/Cancel framework | 2.14d? | 2008-07-02 A | 2008-07-04 A |  |  | Pallavi [70%] |
| 127 | Accelerators implementation | 2.14d? | 2008-06-13 A | 2008-06-17 A |  |  | RKB [70%] |
| 128 | Source key selection change/ Accelerator data change mechanism | 2.14d? | 2008-06-11 A | 2008-06-13 | 83 |  | Pallavi [70%] |
| 129 | Unit test for exposed User control | 1d? | 2008-06-13 | 2008-06-16 | 128 |  | Pallavi [70%] |
| 130 | Unit test for Accelerators | 1d? | 2008-06-16 | 2008-06-17 | 129 |  | Pallavi [70%] |
| 131 | Unit test for data refresh | 1d? | 2008-06-17 | 2008-06-30 | 130 |  | Pallavi [70%] |
| 132 | Unit test for OK/Cancel logic | 1d? | 2008-06-30 | 2008-07-01 | 131 |  | Pallavi [70%] |
| 133 | Code reviews | 1d? | 2008-07-01 | 2008-07-02 | 132 |  | Pallavi [70%] |
| 134 | Absorb code reviews changes | 1d? | 2008-07-02 | 2008-07-03 | 133 |  | Pallavi [70%] |
| 135 | **Trigger/Arm Implementation** | 34.86d? | 2008-06-02 | 2008-07-18 |  |  |  |
| 136 | Design the intial framework | 2.86d? | 2008-06-02 | 2008-06-04 |  | start no earlier than 2008-06-02 | RKB [70%] |
| 137 | Populate Trigger SoftKeys | 2.14d? | 2008-06-25 | 2008-06-27 | 77 |  | Vishal [70%] |
| 138 | Configure Trigger Screen | 2.86d? | 2008-06-27 | 2008-07-01 | 137 |  | Vishal [70%] |
| 139 | Configure ARM Screen | 2.86d? | 2008-07-02 | 2008-07-04 | 138 |  | Vishal [70%] |
| 140 | Implement Advance Button for ARM | 2.86d? | 2008-07-04 | 2008-07-09 | 139 |  | Vishal [70%] |
| 141 | Accelerators implementation | 2.14d? | 2008-07-09 | 2008-07-11 | 140 |  | Vishal [70%] |
| 142 | UT for Trigger Screen | 1d? | 2008-07-11 | 2008-07-14 | 141 |  | Vishal [70%] |
| 143 | UT for ARM Screen | 1d? | 2008-07-14 | 2008-07-15 | 142 |  | Vishal [70%] |
| 144 | UT for Accelerators | 1d? | 2008-07-15 | 2008-07-16 | 143 |  | Vishal [70%] |
| 145 | Code Reviews | 1d? | 2008-07-16 | 2008-07-17 | 144 |  | Vishal [70%] |
| 146 | Absorb changes of Code Reviews | 1d? | 2008-07-17 | 2008-07-18 | 145 |  | Vishal [70%] |
| 148 | Design the intial framework | 2.14d? | 2008-02-04 | 2008-02-06 |  |  | RKB [70%] |
| 149 | Populate Averaging SoftKeys | 1d? | 2008-07-03 | 2008-07-04 | 134 |  | Pallavi [70%] |
| 150 | Implement Average Screen | 2.14d? | 2008-07-04 | 2008-07-08 | 149 |  | Pallavi [70%] |
| 151 | Implement Accelerators | 1d? | 2008-07-08 | 2008-07-09 | 150 |  | Pallavi [70%] |
| 152 | Display Average Count information | 1d? | 2008-07-09 | 2008-07-10 | 151 |  | Pallavi [70%] |
| 153 | UT for Average SoftKeys | 1d? | 2008-07-10 | 2008-07-11 | 152 |  | Pallavi [70%] |
| 154 | UT for Average Screen | 1d? | 2008-07-11 | 2008-07-14 | 153 |  | Pallavi [70%] |
| 155 | UT for Accelerators | 1d? | 2008-07-14 | 2008-07-15 | 154 |  | Pallavi [70%] |
| 156 | UT for Display Average Count information | 1d? | 2008-07-15 | 2008-07-16 | 155 |  | Pallavi [70%] |
| 157 | Code Reviews | 1d? | 2008-07-16 | 2008-07-17 | 156 |  | Pallavi [70%] |
| 158 | Absorb changes of Code Reviews | 1d? | 2008-07-17 | 2008-07-18 | 157 |  | Pallavi [70%] |
| 159 | **Save/Recall** | 22.71d? | 2008-06-09 | 2008-07-09 |  |  |  |
| 160 | Design the intial framework | 4.29d? | 2008-06-09 | 2008-06-13 |  | start no earlier than 2008-06-09 | RKB [70%] |
| 161 | Populate Trigger SoftKeys | 1d? | 2008-06-13 | 2008-06-16 | 160 |  | RKB [70%] |
| 162 | Implement Screen for save set up | 2.14d? | 2008-06-16 | 2008-06-18 | 161 |  | RKB [70%] |
| 163 | Implement screen for load set up | 2.14d? | 2008-06-18 | 2008-06-20 | 162 |  | RKB [70%] |
| 164 | Implement screen save Data | 2.14d? | 2008-06-20 | 2008-06-24 | 163 |  | RKB [70%] |
| 165 | Implement screen for load data | 2.14d? | 2008-06-24 | 2008-06-26 | 164 |  | RKB [70%] |
| 166 | Implement Automatic/manual save | 2.14d? | 2008-06-26 | 2008-07-01 | 165 |  | RKB [70%] |
| 167 | Implement Manual save with comments | 2.14d? | 2008-07-01 | 2008-07-03 | 166 |  | RKB [70%] |
| 168 | UT for Populated softkeys | 0.71d? | 2008-07-03 | 2008-07-03 | 167 |  | RKB [70%] |
| 169 | UT for save/Load set up | 0.71d? | 2008-07-03 | 2008-07-04 | 168 |  | RKB [70%] |
| 170 | UT for Save Data | 0.71d? | 2008-07-04 | 2008-07-07 | 169 |  | RKB [70%] |
| 171 | UT for load Data | 0.71d? | 2008-07-07 | 2008-07-08 | 170 |  | RKB [70%] |
| 172 | Code Reviews | 0.71d? | 2008-07-08 | 2008-07-08 | 171 |  | RKB [70%] |
| 173 | Absorb changes of Code Reviews | 1d? | 2008-07-08 | 2008-07-09 | 172 |  | RKB [70%] |
| 176 | Change Accelerators as per chart Requirment | 1d? | 2008-06-10 | 2008-06-10 | 175 |  | Anurag [70%] |
| 179 | Absorb changes of Code Reviews | 1d? | 2008-06-13 | 2008-06-13 | 178 |  | Anurag [70%] |
| 182 | Change Accelerators as per chart Requirment | 1d? | 2008-06-17 | 2008-06-17 | 181 |  | Anurag [70%] |
| 186 | Absorb changes of Code Reviews | 1d? | 2008-06-23 | 2008-06-23 | 185 |  | Anurag [70%] |
| 188 | Change Accelerators as per chart Requirment | 1d? | 2008-06-24 | 2008-06-24 | 186 |  | Anurag [70%] |
| 191 | Absorb code reviews changes | 1d? | 2008-06-27 | 2008-06-27 | 190 |  | Anurag [70%] |
| 194 | Change Accelerators as per chart Requirment | 1d? | 2008-07-01 | 2008-07-01 | 193 |  | Anurag [70%] |
| 197 | Absorb code reviews changes | 1d? | 2008-07-04 | 2008-07-04 | 196 |  | Anurag [70%] |
| 198 | **Display Error Log** | 1d? | 2008-02-04 | 2008-02-04 |  |  |  |
| 199 | Design Framework for showing Error Log | 1d? | 2008-02-04 | 2008-02-04 |  |  |  |
| 201 | Save Error Log in different format | 1d? | 2008-02-04 | 2008-02-04 |  |  |  |
| 202 | Filter Error log | 1d? | 2008-02-04 | 2008-02-04 |  |  |  |
| 203 | Enable/Show/Clear/Save Debug Error log | 1d? | 2008-02-04 | 2008-02-04 |  |  |  |
| 204 | Code reviews/unit test case reviews | 1d? | 2008-02-04 | 2008-02-04 |  |  |  |
| 205 | Absorb code reviews changes | 1d? | 2008-02-04 | 2008-02-04 |  |  |  |
| 206 | **WaterFall** | 9.71d? | 2008-07-07 | 2008-07-18 |  |  |  |
| 207 | Existing code study | 1d? | 2008-07-07 | 2008-07-07 | 197 |  | Anurag [70%] |
| 209 | Z-Axis Range support | 1.43d? | 2008-07-09 | 2008-07-10 | 208 |  | Anurag [70%] |
| 210 | Skew angle | 1.43d? | 2008-07-10 | 2008-07-14 | 209 |  | Anurag [70%] |
| 211 | Line clipping | 1.43d? | 2008-07-14 | 2008-07-15 | 210 |  | Anurag [70%] |
| 214 | Absorb code reviews changes | 1d? | 2008-07-17 | 2008-07-18 | 213 |  | Anurag [70%] |
| 215 | **Spectrogram** | 1d? | 2008-02-04 | 2008-02-04 |  |  |  |
| 216 | Existing Code study | 1d? | 2008-02-04 | 2008-02-04 |  |  |  |
| 217 | Implement Chart View Object | 1d? | 2008-02-04 | 2008-02-04 |  |  |  |
| 218 | multiple color intensity | 1d? | 2008-02-04 | 2008-02-04 |  |  |  |
| 219 | Z-Axis Range , Top, Bottom | 1d? | 2008-02-04 | 2008-02-04 |  |  |  |
| 222 | Absorb code reviews changes | 1d? | 2008-02-04 | 2008-02-04 |  |  |  |
| 223 | **Implement Units for Frequency Dailog** | 1d? | 2008-02-04 | 2008-02-04 |  |  |  |
| 224 | Implement Units on Screen | 1d? | 2008-02-04 | 2008-02-04 |  |  |  |
| 225 | Unit changes using Accelerators | 1d? | 2008-02-04 | 2008-02-04 |  |  |  |
| 226 | Changing Accelerators with Unit attached | 1d? | 2008-02-04 | 2008-02-04 |  |  |  |
| 227 | Code Reviews | 1d? | 2008-02-04 | 2008-02-04 |  |  |  |
| 228 | Absorb changes of Code Reviews | 1d? | 2008-02-04 | 2008-02-04 |  |  |  |
| 229 | **Code Refactoring To Use Gradient Controls** | 4.29d? | 2008-06-02 A | 2008-06-06 A |  |  |  |
| 230 | Code Refactoring To Use Gradient Controls | 4.29d? | 2008-06-02 A | 2008-06-06 A |  | start no earlier than 2008-06-02 | RKB [70%] |
| 660 | Unit testing (still need auto detect testing) | 0.23d? | 2008-02-04 A | 2008-02-05 | 659 |  | Gowie [70%]; Mike [55%] |
| 668 | Test available status for all combinatioins of Meas Data, Meas Value | 1.82d? | 2008-02-04 A | 2008-02-25 A |  |  | Gowie [70%]; Mike [55%] |
| 677 | Start of Phase 3 | 1d? | 2008-06-02 | 2008-06-02 |  | start no earlier than 2008-06-02 |  |
| 679 | **Averaging FFT Mode** | 16.5d? | 2008-05-27 A | 2008-06-18 |  |  |  |
| 680 | Understand data flow for averaging in the 35670 | 2.5d? | 2008-06-09 | 2008-06-11 |  | start no earlier than 2008-06-02 | Mike [80%] |
| 681 | Define Data flow for averaging in Mirage | 5d? | 2008-06-11 | 2008-06-18 | 680 |  | Mike [80%] |
| 682 | Design Averaging Interface | 0.77d? | 2008-05-27 A | 2008-06-09 |  |  | Mike [80%]; Gowie [75%] |
| 683 | Implement Averaging Interface | 0.77d? | 2008-06-10 A | 2008-06-10 | 682 |  | Mike [80%]; Gowie [75%] |
| 684 | Test & Verify Averaging Interface For All FFT average types | 1.55d? | 2008-06-11 A | 2008-06-12 | 683 |  | Mike [80%]; Gowie [75%] |
| 685 | Review flow and code | 0.37d? | 2008-06-12 | 2008-06-12 | 684 |  | Mike [80%]; Gowie [75%] |
| 686 | Implement / Test Overlap Processing | 0.98d? | 2008-06-13 A | 2008-06-13 | 685 |  | Mike [80%]; Gowie [75%] |
| 688 | Define where math happens in AML | 0.69d? | 2008-06-18 | 2008-06-19 | 681 |  | Mike [80%] |
| 689 | **Trace Coordinates** | 11.5d? | 2008-06-19 | 2008-07-04 | 687 |  |  |
| 690 | **Linear Mag Trace Coordinates** | 4d? | 2008-06-19 | 2008-06-25 |  |  |  |
| 695 | **Phase & Unwrapped Phase Trace Coordinates** | 2.5d? | 2008-06-25 | 2008-06-27 | 690 |  |  |
| 700 | **Log & dB Trace Coordinates** | 2.5d? | 2008-06-27 | 2008-07-02 | 695 |  |  |
| 701 | Implement Measurement Value Transform | 0.67d? | 2008-06-27 | 2008-06-30 | 699 |  | Gowie [75%]; Mike [80%] |
| 702 | Implement Availablity Action | 1d? | 2008-06-30 | 2008-07-01 | 701 |  | Gowie [75%]; Mike [80%] |
| 704 | Enhance All Events for this data | 0.67d? | 2008-07-01 | 2008-07-02 | 703 |  | Gowie [75%]; Mike [80%] |
| 705 | **Real & Imag Trace Coordinates** | 2.5d? | 2008-07-02 | 2008-07-04 | 700 |  |  |
| 706 | Implement Measurement Value Transform | 0.67d? | 2008-07-02 | 2008-07-02 |  |  | Gowie [75%]; Mike [80%] |
| 707 | Implement Availablity Action | 1d? | 2008-07-02 | 2008-07-03 | 706 |  | Gowie [75%]; Mike [80%] |
| 709 | Enhance All Events for this data | 0.67d? | 2008-07-04 | 2008-07-04 | 708 |  | Gowie [75%]; Mike [80%] |
| 710 | **Windowing** | 4.5d? | 2008-07-08 A | 2008-07-14 | 689 |  |  |
| 711 | Design Window Interface | 1.25d | 2008-07-08 A | 2008-07-09 | 708 |  | Mike [80%] |
| 712 | Implement Window Interface | 1.25d | 2008-07-10 A | 2008-07-11 | 711 |  | Mike [80%] |
| 713 | Test & Verify Window Interface For Hann, Hamming, Flat Top, Uniform | 1.25d? | 2008-07-11 | 2008-07-14 | 712 |  | Mike [80%] |
| 715 | **FFT** | 20.3d? | 2008-07-15 A | 2008-08-12 |  |  |  |
| 716 | Design FFT Interface | 1.82d? | 2008-07-15 A | 2008-07-16 A |  |  | Mike [80%] |
| 717 | Implement FFT Interface | 1.53d? | 2008-08-07 A | 2008-08-11 | 716 |  | Mike [80%] |
| 718 | Test & Verify FFT Interface | 1.25d? | 2008-08-11 | 2008-08-12 | 717 |  | Mike [80%] |
| 719 | **Measurement Traces** | 2.3d? | 2008-08-12 | 2008-08-14 | 714 |  |  |
| 720 | **Auto Power Spectrum** | 2.3d? | 2008-08-12 | 2008-08-14 | 647 |  |  |
| 721 | Implement Meas Data Transform | 0.39d? | 2008-08-12 | 2008-08-12 |  |  | Mike [80%]; Gowie [75%] |
| 722 | Implement Availablity Action | 0.39d? | 2008-08-12 | 2008-08-13 | 721 |  | Mike [80%]; Gowie [75%] |
| 723 | Unit testing | 0.78d? | 2008-08-13 | 2008-08-13 | 722 |  | Mike [80%]; Gowie [75%] |
| 724 | Enhance All Events for this data | 0.75d? | 2008-08-13 | 2008-08-14 | 723 |  | Gowie [75%]; Mike [80%] |
| 725 | **Scalar Measurements** | 54.88d? | 2008-06-09 A | 2008-08-22 | 719 |  |  |
| 726 | **Single Tone Distortion** | 3.03d? | 2008-06-09 | 2008-06-12 |  |  |  |
| 727 | Design Interface | 0.78d? | 2008-06-09 | 2008-06-09 |  |  | Mike [80%]; Gowie [75%] |
| 728 | Implement Interface | 0.78d? | 2008-06-09 | 2008-06-10 | 727 |  | Mike [80%]; Gowie [75%] |
| 729 | Test & Verify Interface for THD + Noise | 0.78d? | 2008-06-10 | 2008-06-11 | 728 |  | Mike [80%]; Gowie [75%] |
| 730 | Test & Verify Interface for SINAD | 0.23d? | 2008-06-11 | 2008-06-11 | 729 |  | Mike [80%]; Gowie [75%] |
| 731 | Test & Verify Interface for ENOB | 0.23d? | 2008-06-11 | 2008-06-11 | 730 |  | Mike [80%]; Gowie [75%] |
| 732 | Test & Verify Interface for SNR | 0.23d? | 2008-06-11 | 2008-06-12 | 731 |  | Mike [80%]; Gowie [75%] |
| 733 | Enhance All Events for this data | 0.65d? | 2008-06-10 | 2008-06-11 | 728 |  | Mike [80%]; Gowie [75%] |
| 734 | **Band Power (time)** | 51.88d? | 2008-06-12 A | 2008-08-22 | 726 |  |  |
| 735 | Implement Meas Data Transform | 1.25d? | 2008-06-12 A | 2008-06-13 A |  |  | Mike [80%]; Gowie [75%] |
| 736 | Implement Availablity Action | 1.25d? | 2008-08-20 A | 2008-08-22 A | 735 |  | Mike [80%]; Gowie [75%] |
| 737 | Unit testing | 1.09d? | 2008-06-16 | 2008-06-17 |  | start no earlier than 2008-06-16 | Mike [80%]; Gowie [75%] |
| 738 | Enhance All Events for this data | 0.75d? | 2008-08-22 | 2008-08-22 | 736 |  | Mike [80%]; Gowie [75%] |
| 739 | **Band Power (Freq)** | 1.52d? | 2008-06-23 | 2008-06-24 |  |  |  |
| 740 | Implement Meas Data Transform | 0.39d? | 2008-06-23 | 2008-06-23 |  | start no earlier than 2008-06-23 | Mike [80%]; Gowie [75%] |
| 741 | Implement Availablity Action | 0.39d? | 2008-06-23 | 2008-06-23 | 740 |  | Mike [80%]; Gowie [75%] |
| 742 | Unit testing | 0.39d? | 2008-06-23 | 2008-06-24 | 741 |  | Mike [80%]; Gowie [75%] |
| 743 | Enhance All Events for this data | 0.75d? | 2008-06-23 | 2008-06-24 | 741 |  | Mike [80%]; Gowie [75%] |
| 748 | Unit testing | 2.24d? | 2008-08-28 | 2008-09-01 | 747 |  | Gowie [75%]; Mike [80%] |
| 750 | **Testing** | 4d? | 2008-09-02 | 2008-09-08 | 679, 687, 710, 714, 719, 725, 744, 689 |  |  |
| 752 | Test mode change event for all combinations | 0.67d? | 2008-09-03 | 2008-09-04 | 751 |  | Gowie [75%]; Mike [80%] |
| 753 | Test state change event for all combinations | 0.67d? | 2008-09-04 | 2008-09-04 | 752 |  | Gowie [75%]; Mike [80%] |
| 754 | Test data available event for all combinations | 0.67d? | 2008-09-04 | 2008-09-05 | 753 |  | Gowie [75%]; Mike [80%] |
| 755 | Collect baseline performace | 1.33d? | 2008-09-05 | 2008-09-08 | 754 |  | Gowie [75%]; Mike [80%] |
| 756 | **Code Review** | 1.33d? | 2008-09-08 | 2008-09-10 | 750 |  |  |
| 757 | Code review trace and meas values | 0.67d? | 2008-09-08 | 2008-09-09 | 755 |  | Gowie [75%]; Mike [80%] |
| 758 | implement changes | 0.67d? | 2008-09-09 | 2008-09-10 | 757 |  | Gowie [75%]; Mike [80%] |
| 759 | **Phase 4** | 93.52d? | 2008-09-10 | 2009-01-19 | 678 |  |  |
| 760 | **Windowing** | 3.64d? | 2008-09-10 | 2008-09-15 | 1048, 710 |  |  |
| 761 | Test & Verify Window interface all remaining windows | 3.64d? | 2008-09-10 | 2008-09-15 |  |  | Mike [55%] |
| 763 | **ZOOM FFT** | 5.45d? | 2008-09-10 | 2008-09-17 | 1070 |  |  |
| 764 | Design FFT Interface | 1.82d? | 2008-09-10 | 2008-09-12 |  |  | Mike [55%] |
| 765 | Implement FFT Interface | 1.82d? | 2008-09-12 | 2008-09-15 | 764 |  | Mike [55%] |
| 766 | Test & Verify FFT Interface | 1.82d? | 2008-09-15 | 2008-09-17 | 765 |  | Mike [55%] |
| 767 | **Measurement Traces** | 93.52d? | 2008-09-10 | 2009-01-19 | 719 |  |  |
| 768 | **Frequency Response (H1, H2, Hv)** | 3.8d? | 2008-09-10 | 2008-09-16 | 1172 |  |  |
| 769 | Implement Meas Data Transform | 1d | 2008-09-10 | 2008-09-11 |  |  | Mike [55%]; Gowie [70%] |
| 770 | Implement Availablity Action | 1d | 2008-09-11 | 2008-09-12 | 769 |  | Mike [55%]; Gowie [70%] |
| 771 | Unit testing | 1d | 2008-09-12 | 2008-09-15 | 770 |  | Mike [55%]; Gowie [70%] |
| 772 | Enhance All Events for this data | 0.8d? | 2008-09-15 | 2008-09-16 | 771 |  | Gowie [70%]; Mike [55%] |
| 773 | **Coherence** | 2.47d? | 2008-09-16 | 2008-09-18 | 768 |  |  |
| 774 | Implement Meas Data Transform | 0.42d? | 2008-09-16 | 2008-09-16 |  |  | Mike [55%]; Gowie [70%] |
| 775 | Implement Availablity Action | 0.42d? | 2008-09-16 | 2008-09-16 | 774 |  | Mike [55%]; Gowie [70%] |
| 776 | Unit testing | 0.83d? | 2008-09-16 | 2008-09-17 | 775 |  | Mike [55%]; Gowie [70%] |
| 777 | Enhance All Events for this data | 0.8d? | 2008-09-17 | 2008-09-18 | 776 |  | Gowie [70%]; Mike [55%] |
| 778 | **Orbit Diagram** | 4d? | 2009-01-13 | 2009-01-19 | 1361 |  |  |
| 779 | Implement Meas Data Transform | 1d | 2009-01-13 | 2009-01-14 |  |  | Mike [55%]; Gowie [70%] |
| 780 | Implement Availablity Action | 1d | 2009-01-14 | 2009-01-15 | 779 |  | Mike [55%]; Gowie [70%] |
| 781 | Unit testing | 1d | 2009-01-15 | 2009-01-16 | 780 |  | Mike [55%]; Gowie [70%] |
| 782 | Enhance All Events for this data | 1d? | 2009-01-16 | 2009-01-19 | 781 |  | Gowie [70%]; Mike [55%] |
| 783 | **Scalar Measurements** | 15.6d? | 2008-09-10 | 2008-10-01 | 725 |  |  |
| 784 | **Spurious Free Dynamic Range** | 2.67d? | 2008-09-10 | 2008-09-12 | 1256 |  |  |
| 785 | Implement Meas Data Transform | 0.83d? | 2008-09-10 | 2008-09-11 |  |  | Mike [55%]; Gowie [70%] |
| 786 | Implement Availablity Action | 0.83d? | 2008-09-11 | 2008-09-11 | 785 |  | Mike [55%]; Gowie [70%] |
| 787 | Unit testing | 0.83d? | 2008-09-11 | 2008-09-12 | 786 |  | Mike [55%]; Gowie [70%] |
| 788 | Enhance All Events for this data | 1d? | 2008-09-11 | 2008-09-12 | 786 |  | Mike [55%]; Gowie [70%] |
| 789 | **Side Band Power** | 1.67d? | 2008-09-12 | 2008-09-16 | 784 |  |  |
| 790 | Implement Meas Data Transform | 0.42d? | 2008-09-12 | 2008-09-15 |  |  | Mike [55%]; Gowie [70%] |
| 791 | Implement Availablity Action | 0.42d? | 2008-09-15 | 2008-09-15 | 790 |  | Mike [55%]; Gowie [70%] |
| 792 | Unit testing | 0.83d? | 2008-09-15 | 2008-09-16 | 791 |  | Mike [55%]; Gowie [70%] |
| 793 | Enhance All Events for this data | 0.8d? | 2008-09-15 | 2008-09-16 | 791 |  | Mike [55%]; Gowie [70%] |
| 794 | **Gain and Phase Margins** | 3.33d? | 2008-09-10 | 2008-09-15 | 1150 |  |  |
| 795 | Implement Meas Data Transform | 0.83d? | 2008-09-10 | 2008-09-11 |  |  | Mike [55%]; Gowie [70%] |
| 796 | Implement Availablity Action | 0.83d? | 2008-09-11 | 2008-09-11 | 795 |  | Mike [55%]; Gowie [70%] |
| 797 | Unit testing | 1.67d? | 2008-09-11 | 2008-09-15 | 796 |  | Mike [55%]; Gowie [70%] |
| 798 | Enhance All Events for this data | 0.8d? | 2008-09-11 | 2008-09-12 | 796 |  | Mike [55%]; Gowie [70%] |
| 799 | **Frequency and Damping** | 4.17d? | 2008-09-10 | 2008-09-16 | 1161 |  |  |
| 800 | Implement Meas Data Transform | 1.67d? | 2008-09-10 | 2008-09-11 |  |  | Mike [55%]; Gowie [70%] |
| 801 | Implement Availablity Action | 0.83d? | 2008-09-11 | 2008-09-12 | 800 |  | Mike [55%]; Gowie [70%] |
| 802 | Unit testing | 1.67d? | 2008-09-12 | 2008-09-16 | 801 |  | Mike [55%]; Gowie [70%] |
| 803 | Enhance All Events for this data | 0.8d? | 2008-09-12 | 2008-09-15 | 801 |  | Mike [55%]; Gowie [70%] |
| 804 | **Delay Time** | 1.63d? | 2008-09-16 | 2008-09-18 | 799 |  |  |
| 805 | Implement Meas Data Transform | 0.42d? | 2008-09-16 | 2008-09-16 |  |  | Mike [55%]; Gowie [70%] |
| 806 | Implement Availablity Action | 0.42d? | 2008-09-16 | 2008-09-17 | 805 |  | Mike [55%]; Gowie [70%] |
| 807 | Unit testing | 0.42d? | 2008-09-17 | 2008-09-17 | 806 |  | Mike [55%]; Gowie [70%] |
| 808 | Enhance All Events for this data | 0.8d? | 2008-09-17 | 2008-09-18 | 806 |  | Mike [55%]; Gowie [70%] |
| 809 | **Rise Time** | 1.63d? | 2008-09-18 | 2008-09-19 | 804 |  |  |
| 810 | Implement Meas Data Transform | 0.42d? | 2008-09-18 | 2008-09-18 |  |  | Mike [55%]; Gowie [70%] |
| 811 | Implement Availablity Action | 0.42d? | 2008-09-18 | 2008-09-18 | 810 |  | Mike [55%]; Gowie [70%] |
| 812 | Unit testing | 0.42d? | 2008-09-18 | 2008-09-19 | 811 |  | Mike [55%]; Gowie [70%] |
| 813 | Enhance All Events for this data | 0.8d? | 2008-09-18 | 2008-09-19 | 811 |  | Mike [55%]; Gowie [70%] |
| 814 | **Decay Time** | 1.63d? | 2008-09-19 | 2008-09-23 | 809 |  |  |
| 815 | Implement Meas Data Transform | 0.42d? | 2008-09-19 | 2008-09-22 |  |  | Mike [55%]; Gowie [70%] |
| 816 | Implement Availablity Action | 0.42d? | 2008-09-22 | 2008-09-22 | 815 |  | Mike [55%]; Gowie [70%] |
| 817 | Unit testing | 0.42d? | 2008-09-22 | 2008-09-22 | 816 |  | Mike [55%]; Gowie [70%] |
| 818 | Enhance All Events for this data | 0.8d? | 2008-09-22 | 2008-09-23 | 816 |  | Mike [55%]; Gowie [70%] |
| 819 | **Settling Time** | 1.63d? | 2008-09-23 | 2008-09-25 | 814 |  |  |
| 820 | Implement Meas Data Transform | 0.42d? | 2008-09-23 | 2008-09-23 |  |  | Mike [55%]; Gowie [70%] |
| 821 | Implement Availablity Action | 0.42d? | 2008-09-23 | 2008-09-24 | 820 |  | Mike [55%]; Gowie [70%] |
| 822 | Unit testing | 0.42d? | 2008-09-24 | 2008-09-24 | 821 |  | Mike [55%]; Gowie [70%] |
| 823 | Enhance All Events for this data | 0.8d? | 2008-09-24 | 2008-09-25 | 821 |  | Mike [55%]; Gowie [70%] |
| 824 | **Pulse Width** | 1.63d? | 2008-09-25 | 2008-09-26 | 819 |  |  |
| 825 | Implement Meas Data Transform | 0.42d? | 2008-09-25 | 2008-09-25 |  |  | Mike [55%]; Gowie [70%] |
| 826 | Implement Availablity Action | 0.42d? | 2008-09-25 | 2008-09-25 | 825 |  | Mike [55%]; Gowie [70%] |
| 827 | Unit testing | 0.42d? | 2008-09-25 | 2008-09-26 | 826 |  | Mike [55%]; Gowie [70%] |
| 828 | Enhance All Events for this data | 0.8d? | 2008-09-25 | 2008-09-26 | 826 |  | Mike [55%]; Gowie [70%] |
| 829 | **Voltage Min** | 1.63d? | 2008-09-26 | 2008-09-30 | 824 |  |  |
| 830 | Implement Meas Data Transform | 0.42d? | 2008-09-26 | 2008-09-29 |  |  | Mike [55%]; Gowie [70%] |
| 831 | Implement Availablity Action | 0.42d? | 2008-09-29 | 2008-09-29 | 830 |  | Mike [55%]; Gowie [70%] |
| 832 | Unit testing | 0.42d? | 2008-09-29 | 2008-09-29 | 831 |  | Mike [55%]; Gowie [70%] |
| 833 | Enhance All Events for this data | 0.8d? | 2008-09-29 | 2008-09-30 | 831 |  | Mike [55%]; Gowie [70%] |
| 834 | **Voltage Max** | 1.63d? | 2008-09-30 | 2008-10-01 | 829 |  |  |
| 835 | Implement Meas Data Transform | 0.42d? | 2008-09-30 | 2008-09-30 |  |  | Mike [55%]; Gowie [70%] |
| 836 | Implement Availablity Action | 0.42d? | 2008-09-30 | 2008-10-01 | 835 |  | Mike [55%]; Gowie [70%] |
| 837 | Unit testing | 0.42d? | 2008-10-01 | 2008-10-01 | 836 |  | Mike [55%]; Gowie [70%] |
| 838 | Enhance All Events for this data | 0.8d? | 2008-10-01 | 2008-10-01 | 836 |  | Mike [55%]; Gowie [70%] |
| 839 | **Trace Coordinates** | 7.36d? | 2008-09-10 | 2008-09-19 | 689 |  |  |
| 840 | **Group Delay Trace Coordinates** | 3.68d? | 2008-09-10 | 2008-09-15 | 1193 |  |  |
| 841 | Implement Measurement Value Transform | 0.91d? | 2008-09-10 | 2008-09-11 |  |  | Gowie [70%]; Mike [55%] |
| 842 | Implement Availablity Action | 1.36d? | 2008-09-11 | 2008-09-12 | 841 |  | Gowie [70%]; Mike [55%] |
| 843 | Unit testing | 0.5d? | 2008-09-12 | 2008-09-15 | 842 |  | Gowie [25%]; Mike [25%] |
| 844 | Enhance All Events for this data | 0.91d? | 2008-09-15 | 2008-09-15 | 843 |  | Gowie [70%]; Mike [55%] |
| 845 | **Polar Trace Coordinates** | 3.68d? | 2008-09-15 | 2008-09-19 | 840 |  |  |
| 846 | Implement Measurement Value Transform | 0.91d? | 2008-09-15 | 2008-09-16 |  |  | Gowie [70%]; Mike [55%] |
| 847 | Implement Availablity Action | 1.36d? | 2008-09-16 | 2008-09-18 | 846 |  | Gowie [70%]; Mike [55%] |
| 848 | Unit testing | 0.5d? | 2008-09-18 | 2008-09-18 | 847 |  | Gowie [25%]; Mike [25%] |
| 849 | Enhance All Events for this data | 0.91d? | 2008-09-18 | 2008-09-19 | 848 |  | Gowie [70%]; Mike [55%] |
| 856 | **Testing** | 9.09d? | 2008-09-10 | 2008-09-23 |  |  |  |
| 857 | Test available status for all combinatioins of Meas Data, Meas Value, transducer units, trace coord | 1.82d? | 2008-09-10 | 2008-09-12 |  |  | Gowie [70%]; Mike [55%] |
| 858 | Test mode change event for all combinations | 1.82d? | 2008-09-12 | 2008-09-15 | 857 |  | Gowie [70%]; Mike [55%] |
| 859 | Test state change event for all combinations | 1.82d? | 2008-09-15 | 2008-09-17 | 858 |  | Gowie [70%]; Mike [55%] |
| 860 | Test data available event for all combinations | 1.82d? | 2008-09-17 | 2008-09-19 | 859 |  | Gowie [70%]; Mike [55%] |
| 861 | Collect baseline performace | 1.82d? | 2008-09-19 | 2008-09-23 | 860 |  | Gowie [70%]; Mike [55%] |
| 862 | **Code Review** | 1.82d? | 2008-09-23 | 2008-09-25 | 856 |  |  |
| 863 | Code review trace and meas values | 0.91d? | 2008-09-23 | 2008-09-24 | 861 |  | Gowie [70%]; Mike [55%] |
| 864 | implement changes | 0.91d? | 2008-09-24 | 2008-09-25 | 863 |  | Gowie [70%]; Mike [55%] |
| 865 | **Phase 5** | 16.36d? | 2009-01-19 | 2009-02-11 | 759 |  |  |
| 866 | **Transforms** | 5.45d? | 2009-01-19 | 2009-01-27 | 762 |  |  |
| 867 | **STFT** | 5.45d? | 2009-01-19 | 2009-01-27 | 1037 |  |  |
| 868 | Design FFT Interface | 1.82d? | 2009-01-19 | 2009-01-21 |  |  | Mike [55%] |
| 869 | Implement FFT Interface | 1.82d? | 2009-01-21 | 2009-01-23 | 868 |  | Mike [55%] |
| 870 | Test & Verify FFT Interface | 1.82d? | 2009-01-23 | 2009-01-27 | 869 |  | Mike [55%] |
| 871 | **Resampling : Assume this will be done in the IE** | 0d? | 2009-01-27 | 2009-01-27 | 867 |  |  |
| 872 | Design FFT Interface | 0d? | 2009-01-27 | 2009-01-27 |  |  | Mike [55%] |
| 873 | Implement FFT Interface | 0d? | 2009-01-27 | 2009-01-27 | 872 |  | Mike [55%] |
| 874 | Test & Verify FFT Interface | 0d? | 2009-01-27 | 2009-01-27 | 873 |  | Mike [55%] |
| 882 | **Testing** | 9.09d? | 2009-01-27 | 2009-02-09 | 866, 875 |  |  |
| 883 | Test available status for all combinatioins of Meas Data, Meas Value, transducer units, trace coord | 1.82d? | 2009-01-27 | 2009-01-29 |  |  | Gowie [70%]; Mike [55%] |
| 884 | Test mode change event for all combinations | 1.82d? | 2009-01-29 | 2009-01-30 | 883 |  | Gowie [70%]; Mike [55%] |
| 885 | Test state change event for all combinations | 1.82d? | 2009-01-30 | 2009-02-03 | 884 |  | Gowie [70%]; Mike [55%] |
| 886 | Test data available event for all combinations | 1.82d? | 2009-02-03 | 2009-02-05 | 885 |  | Gowie [70%]; Mike [55%] |
| 887 | Collect baseline performace | 1.82d? | 2009-02-05 | 2009-02-09 | 886 |  | Gowie [70%]; Mike [55%] |
| 888 | **Code Review** | 1.82d? | 2009-02-09 | 2009-02-11 | 882 |  |  |
| 889 | Code review trace and meas values | 0.91d? | 2009-02-09 | 2009-02-10 | 887 |  | Gowie [70%]; Mike [55%] |
| 890 | implement changes | 0.91d? | 2009-02-10 | 2009-02-11 | 889 |  | Gowie [70%]; Mike [55%] |
| 891 | **Phase 6** | 10.91d? | 2009-02-11 | 2009-02-26 | 865 |  |  |
| 892 | **Averaging Stepped Sine Mode** | 2.73d? | 2009-02-11 | 2009-02-13 |  |  |  |
| 893 | Design Averaging Interface | 0.91d? | 2009-02-11 | 2009-02-12 |  |  | Gowie [70%]; Mike [55%] |
| 894 | Implement Averaging Interface | 0.91d? | 2009-02-12 | 2009-02-13 | 893 |  | Gowie [70%]; Mike [55%] |
| 895 | Test & Verify Averaging Interface For All Swept Sine average types | 0.91d? | 2009-02-13 | 2009-02-13 | 894 |  | Gowie [70%]; Mike [55%] |
| 896 | **Measurement Traces** | 2.67d? | 2009-02-11 | 2009-02-13 | 767 |  |  |
| 897 | **Normalize Variance** | 2.67d? | 2009-02-11 | 2009-02-13 | 1182 |  |  |
| 898 | Implement Meas Data Transform | 0.42d? | 2009-02-11 | 2009-02-11 |  |  | Mike [55%]; Gowie [70%] |
| 899 | Implement Availablity Action | 0.42d? | 2009-02-11 | 2009-02-12 | 898 |  | Mike [55%]; Gowie [70%] |
| 900 | Unit testing | 0.83d? | 2009-02-12 | 2009-02-12 | 899 |  | Mike [55%]; Gowie [70%] |
| 901 | Enhance All Events for this data | 1d? | 2009-02-12 | 2009-02-13 | 900 |  | Gowie [70%]; Mike [55%] |
| 903 | **Weighting Filters** | 6d? | 2009-02-11 | 2009-02-19 |  |  |  |
| 904 | Implement Meas Data Transform | 1.67d? | 2009-02-11 | 2009-02-12 |  |  | Mike [55%]; Gowie [70%] |
| 905 | Implement Availablity Action | 1.67d? | 2009-02-12 | 2009-02-16 | 904 |  | Mike [55%]; Gowie [70%] |
| 906 | Unit testing | 1.67d? | 2009-02-16 | 2009-02-18 | 905 |  | Mike [55%]; Gowie [70%] |
| 907 | Enhance All Events for this data | 1d? | 2009-02-18 | 2009-02-19 | 906 |  | Gowie [70%]; Mike [55%] |
| 908 | **C Message** | 6d? | 2009-02-11 | 2009-02-19 |  |  |  |
| 909 | Implement Meas Data Transform | 1.67d? | 2009-02-11 | 2009-02-12 |  |  | Mike [55%]; Gowie [70%] |
| 910 | Implement Availablity Action | 1.67d? | 2009-02-12 | 2009-02-16 | 909 |  | Mike [55%]; Gowie [70%] |
| 911 | Unit testing | 1.67d? | 2009-02-16 | 2009-02-18 | 910 |  | Mike [55%]; Gowie [70%] |
| 912 | Enhance All Events for this data | 1d? | 2009-02-18 | 2009-02-19 | 911 |  | Gowie [70%]; Mike [55%] |
| 923 | **Testing** | 9.09d? | 2009-02-11 | 2009-02-24 |  |  |  |
| 924 | Test available status for all combinatioins of Meas Data, Meas Value, transducer units, trace coord | 1.82d? | 2009-02-11 | 2009-02-13 |  |  | Gowie [70%]; Mike [55%] |
| 925 | Test mode change event for all combinations | 1.82d? | 2009-02-13 | 2009-02-16 | 924 |  | Gowie [70%]; Mike [55%] |
| 926 | Test state change event for all combinations | 1.82d? | 2009-02-16 | 2009-02-18 | 925 |  | Gowie [70%]; Mike [55%] |
| 927 | Test data available event for all combinations | 1.82d? | 2009-02-18 | 2009-02-20 | 926 |  | Gowie [70%]; Mike [55%] |
| 928 | Collect baseline performace | 1.82d? | 2009-02-20 | 2009-02-24 | 927 |  | Gowie [70%]; Mike [55%] |
| 929 | **Code Review** | 1.82d? | 2009-02-24 | 2009-02-26 | 923 |  |  |
| 930 | Code review trace and meas values | 0.91d? | 2009-02-24 | 2009-02-25 | 928 |  | Gowie [70%]; Mike [55%] |
| 931 | implement changes | 0.91d? | 2009-02-25 | 2009-02-26 | 930 |  | Gowie [70%]; Mike [55%] |
| 932 | **Phase 7** | 10.91d? | 2009-02-26 | 2009-03-13 | 891 |  |  |
| 933 | **Averaging Octave Mode** | 3d? | 2009-02-26 | 2009-03-03 |  |  |  |
| 934 | Design Averaging Interface | 1d? | 2009-02-26 | 2009-02-27 |  |  |  |
| 935 | Implement Averaging Interface | 1d? | 2009-02-27 | 2009-03-02 | 934 |  |  |
| 936 | Test & Verify Averaging Interface For All Swept Sine average types | 1d? | 2009-03-02 | 2009-03-03 | 935 |  |  |
| 937 | **Testing** | 9.09d? | 2009-02-26 | 2009-03-11 |  |  |  |
| 938 | Test available status for all combinatioins of Meas Data, Meas Value, transducer units, trace coord | 1.82d? | 2009-02-26 | 2009-02-27 |  |  | Gowie [70%]; Mike [55%] |
| 939 | Test mode change event for all combinations | 1.82d? | 2009-02-27 | 2009-03-03 | 938 |  | Gowie [70%]; Mike [55%] |
| 940 | Test state change event for all combinations | 1.82d? | 2009-03-03 | 2009-03-05 | 939 |  | Gowie [70%]; Mike [55%] |
| 941 | Test data available event for all combinations | 1.82d? | 2009-03-05 | 2009-03-09 | 940 |  | Gowie [70%]; Mike [55%] |
| 942 | Collect baseline performace | 1.82d? | 2009-03-09 | 2009-03-11 | 941 |  | Gowie [70%]; Mike [55%] |
| 943 | **Code Review** | 1.82d? | 2009-03-11 | 2009-03-13 | 937 |  |  |
| 944 | Code review trace and meas values | 0.91d? | 2009-03-11 | 2009-03-12 | 942 |  | Gowie [70%]; Mike [55%] |
| 945 | implement changes | 0.91d? | 2009-03-12 | 2009-03-13 | 944 |  | Gowie [70%]; Mike [55%] |
| 960 | **Transforms** | 3.57d? | 2008-02-04 A | 2008-02-07 |  |  |  |
| 992 | **Math** | 8.14d? | 2008-02-05 | 2008-02-15 |  |  |  |
| 1276 | **P** | 64.77d? | 2008-02-04 A | 2008-05-02 |  |  |  |
| 1650 | **Design C# IE Interface** | 72.32d? | 2008-03-12 A | 2008-06-23 | 1649 |  |  |
| 1651 | Implement / Test Enum Conversion | 1.97d | 2008-05-26 A | 2008-05-27 |  |  | Gowie [75%] |
| 1652 | Implement Test Struct Conversion | 1.97d | 2008-03-12 A | 2008-05-28 | 1651 |  | Gowie [75%] |
| 1653 | Implement / Test Init | 3.2d? | 2008-05-28 | 2008-06-02 | 1652 |  | Gowie [75%] |
| 1654 | Implement / Test Get | 3.2d? | 2008-06-02 | 2008-06-05 | 1653 |  | Gowie [75%] |
| 1655 | Implement / Test Validate | 3.2d? | 2008-06-05 | 2008-06-11 | 1654 |  | Gowie [75%] |
| 1656 | Implement / Test Set | 2d? | 2008-06-11 | 2008-06-13 | 1655 |  | Gowie [75%] |
| 1657 | Implement / Test Boot Up | 2d? | 2008-06-13 | 2008-06-17 | 1656 |  | Gowie [75%] |
| 1658 | Implement / Test Self Test | 2d? | 2008-06-17 | 2008-06-19 | 1657 |  | Gowie [75%] |
| 1659 | Implement / Test Calibration | 2d? | 2008-06-19 | 2008-06-23 | 1658 |  | Gowie [75%] |
| 1660 | **Tie C# IE into IP** | 2.67d? | 2008-06-23 | 2008-06-25 | 1659 |  |  |
| 1667 | **Unit Testing** | 11d? | 2008-03-11 A | 2008-03-26 |  |  |  |
| 1674 | **Error Handling and Exception Propogation** | 8.57d? | 2008-03-26 | 2008-04-08 |  |  |  |
| 1675 | Error Handling | 2.86d? | 2008-03-26 | 2008-03-31 | 1673 |  | Vishal [70%] |
| 1681 | **Simulator(Frequency Parameter)** | 19.14d? | 2008-04-15 A | 2008-05-12 A |  |  |  |
| 1684 | **Design Instrument Engine Call Protocol** | 9.93d? | 2008-05-12 A | 2008-05-26 |  |  |  |
| 1693 | Arm | 10d? | 2008-05-26 | 2008-06-09 | 1691 |  | Vishal [70%] |
| 1695 | Channel | 10d? | 2008-06-09 | 2008-06-23 | 1694 |  | Vishal [70%] |
| 1696 | Frequency | 10d? | 2008-06-23 | 2008-07-07 | 1695 |  | Vishal [70%] |
| 1697 | Source | 10d? | 2008-07-07 | 2008-07-21 | 1696 |  | Vishal [70%] |
| 1698 | Trigger | 10d? | 2008-07-21 | 2008-08-04 | 1697 |  | Vishal [70%] |
| 1704 | **Instrument Interface** | 131.43d? | 2008-02-04 A | 2008-08-05 |  |  |  |
| 1705 | **I.I public interfaces** | 16.71d? | 2008-02-04 A | 2008-02-26 A |  |  |  |
| 1708 | Unit test | 5.71d? | 2008-02-19 A | 2008-02-26 A | 1707 |  | RKB [70%] |
| 1709 | **Channel Key pattern** | 73.29d? | 2008-02-29 A | 2008-06-11 |  |  |  |
| 1710 | Channel config screen implementation | 2.86d? | 2008-06-02 A | 2008-06-11 A | 1708 |  | Himanshu [70%] |
| 1711 | Accelerators implementation | 2.86d? | 2008-02-29 A | 2008-03-05 A | 1710 |  | Himanshu [70%] |
| 1712 | Source key selection change/ Accelerator data change mechanism | 2.86d? | 2008-03-05 | 2008-03-10 | 1711 |  | Himanshu [70%] |
| 1713 | OK/Cancel framework | 2.86d? | 2008-03-10 | 2008-03-13 | 1712 |  | Himanshu [70%] |
| 1714 | Unit test for exposed User control | 1.43d? | 2008-03-13 | 2008-03-14 | 1713 |  | Himanshu [70%] |
| 1715 | Unit test for Accelerators | 1.43d? | 2008-03-14 | 2008-03-17 | 1714 |  | Himanshu [70%] |
| 1716 | Unit test for data refresh | 1.43d? | 2008-03-17 | 2008-03-19 | 1715 |  | Himanshu [70%] |
| 1717 | Unit test for OK/Cancel logic | 1.43d? | 2008-03-19 | 2008-03-20 | 1716 |  | Himanshu [70%] |
| 1718 | Code reviews | 1.43d? | 2008-03-20 | 2008-03-25 | 1717 |  | Himanshu [70%] |
| 1719 | Absorb code reviews changes | 1.43d? | 2008-03-25 | 2008-03-26 | 1718 |  | Himanshu [70%] |
| 1720 | **Frequency Key pattern** | 22d? | 2008-03-26 A | 2008-04-25 A |  |  |  |
| 1721 | Frequencyl config screen implementation | 2.86d? | 2008-03-26 A | 2008-03-31 A | 1719 |  | Himanshu [70%] |
| 1722 | Accelerators implementation | 2.86d? | 2008-03-31 A | 2008-04-03 A | 1721 |  | Himanshu [70%] |
| 1723 | OK/Cancel framework | 2.86d? | 2008-04-08 A | 2008-04-11 A | 1722 |  | Himanshu [70%] |
| 1724 | Unit test for exposed User control | 1.43d? | 2008-04-11 A | 2008-04-15 A | 1723 |  | Himanshu [70%] |
| 1725 | Unit test for Accelerators | 1.43d? | 2008-04-15 A | 2008-04-16 A | 1724 |  | Himanshu [70%] |
| 1726 | Unit test for data refresh | 1.43d? | 2008-04-16 A | 2008-04-21 A | 1725 |  | Himanshu [70%] |
| 1727 | Unit test for OK/Cancel logic | 1.43d? | 2008-04-21 A | 2008-04-22 A | 1726 |  | Himanshu [70%] |
| 1728 | Code reviews | 1.43d? | 2008-04-22 A | 2008-04-24 A | 1727 |  | Himanshu [70%] |
| 1729 | Absorb code reviews changes | 1.43d? | 2008-04-24 A | 2008-04-25 A | 1728 |  | Himanshu [70%] |
| 1730 | **Analyzer type Key pattern** | 6.71d? | 2008-04-25 | 2008-05-06 |  |  |  |
| 1731 | Analyzer slection change event implemntation | 2.86d? | 2008-04-25 | 2008-04-30 | 1729 |  | Himanshu [70%] |
| 1732 | Code reviews | 1.43d? | 2008-04-30 | 2008-05-02 | 1731 |  | Himanshu [70%] |
| 1733 | Absorb code reviews changes | 1.43d? | 2008-05-02 | 2008-05-06 | 1732 |  | Himanshu [70%] |
| 1734 | **Trigger Key pattern** | 20d? | 2008-05-06 A | 2008-06-03 |  |  |  |
| 1735 | Trigger config screen implementation | 2.86d? | 2008-05-06 A | 2008-05-09 A | 1733 |  | Himanshu [70%] |
| 1736 | Accelerators implementation | 2.86d? | 2008-05-09 A | 2008-05-14 A | 1735 |  | Himanshu [70%] |
| 1737 | Source key selection change/ Accelerator data change mechanism | 2.86d? | 2008-05-14 | 2008-05-16 | 1736 |  | Himanshu [70%] |
| 1738 | OK/Cancel framework | 2.86d? | 2008-05-16 | 2008-05-21 | 1737 |  | Himanshu [70%] |
| 1739 | Unit test for exposed User control | 1.43d? | 2008-05-21 | 2008-05-23 | 1738 |  | Himanshu [70%] |
| 1740 | Unit test for Accelerators | 1.43d? | 2008-05-23 | 2008-05-26 | 1739 |  | Himanshu [70%] |
| 1741 | Unit test for data refresh | 1.43d? | 2008-05-26 | 2008-05-28 | 1740 |  | Himanshu [70%] |
| 1742 | Unit test for OK/Cancel logic | 1.43d? | 2008-05-28 | 2008-05-29 | 1741 |  | Himanshu [70%] |
| 1743 | Code reviews | 1.43d? | 2008-05-29 | 2008-05-30 | 1742 |  | Himanshu [70%] |
| 1744 | Absorb code reviews changes | 1.43d? | 2008-05-30 | 2008-06-03 | 1743 |  | Himanshu [70%] |
| 1745 | **Average setup Key pattern** | 25d? | 2008-06-03 | 2008-07-08 |  |  |  |
| 1746 | Average config screen implementation | 2.86d? | 2008-06-03 | 2008-06-13 | 1744 |  | Himanshu [70%] |
| 1747 | Accelerators implementation | 2.86d? | 2008-06-13 | 2008-06-18 | 1746 |  | Himanshu [70%] |
| 1748 | Source key selection change/ Accelerator data change mechanism | 2.86d? | 2008-06-18 | 2008-06-20 | 1747 |  | Himanshu [70%] |
| 1749 | OK/Cancel framework | 2.86d? | 2008-06-20 | 2008-06-25 | 1748 |  | Himanshu [70%] |
| 1750 | Unit test for exposed User control | 1.43d? | 2008-06-25 | 2008-06-27 | 1749 |  | Himanshu [70%] |
| 1751 | Unit test for Accelerators | 1.43d? | 2008-06-27 | 2008-06-30 | 1750 |  | Himanshu [70%] |
| 1752 | Unit test for data refresh | 1.43d? | 2008-06-30 | 2008-07-02 | 1751 |  | Himanshu [70%] |
| 1753 | Unit test for OK/Cancel logic | 1.43d? | 2008-07-02 | 2008-07-03 | 1752 |  | Himanshu [70%] |
| 1754 | Code reviews | 1.43d? | 2008-07-03 | 2008-07-04 | 1753 |  | Himanshu [70%] |
| 1755 | Absorb code reviews changes | 1.43d? | 2008-07-04 | 2008-07-08 | 1754 |  | Himanshu [70%] |
| 1756 | **Source Key pattern** | 20d? | 2008-07-08 | 2008-08-05 |  |  |  |
| 1757 | Source config screen implementation | 2.86d? | 2008-07-08 | 2008-07-11 | 1755 |  | Himanshu [70%] |
| 1758 | Accelerators implementation | 2.86d? | 2008-07-11 | 2008-07-16 | 1757 |  | Himanshu [70%] |
| 1759 | Source key selection change/ Accelerator data change mechanism | 2.86d? | 2008-07-16 | 2008-07-18 | 1758 |  | Himanshu [70%] |
| 1760 | OK/Cancel framework | 2.86d? | 2008-07-18 | 2008-07-23 | 1759 |  | Himanshu [70%] |
| 1761 | Unit test for exposed User control | 1.43d? | 2008-07-23 | 2008-07-25 | 1760 |  | Himanshu [70%] |
| 1762 | Unit test for Accelerators | 1.43d? | 2008-07-25 | 2008-07-28 | 1761 |  | Himanshu [70%] |
| 1763 | Unit test for data refresh | 1.43d? | 2008-07-28 | 2008-07-30 | 1762 |  | Himanshu [70%] |
| 1764 | Unit test for OK/Cancel logic | 1.43d? | 2008-07-30 | 2008-07-31 | 1763 |  | Himanshu [70%] |
| 1765 | Code reviews | 1.43d? | 2008-07-31 | 2008-08-01 | 1764 |  | Himanshu [70%] |
| 1766 | Absorb code reviews changes | 1.43d? | 2008-08-01 | 2008-08-05 | 1765 |  | Himanshu [70%] |

Removed: 64 Configure Layout/Number of Display; 103 Configure Triggering : Free Run; 106 Code/unit test Review; 107 Configure ARM : Automatic; 108 Design; 110 Code/unit test Review; 203 Configure Analyzer Channels; 205 Unit Testing/Code Review; 206 Configure Measurements : THD+n; 207 Design Framework for THD+n configuration; 208 Implement Framework for Temporary Measurement flow; 209 Implement screen ( With Live Chart); 210 Hooks the value change on screen with Temporary Measurement flow; 211 Display THD+n Measurement Value on Status bar; 214 Configure Measurements : SNR; 215 Design Framework for SNR configuration; 216 Implement Framework for Temporary Measurement flow; 217 Implement screen ( With Live Chart); 218 Hooks the value change on screen with Temporary Measurement flow; 219 Display SNR Measurement Value on Status bar; 222 Configure Measurements : SFDR; 223 Design Framework for SFDR configuration; 224 Implement Framework for Temporary Measurement flow; 225 Implement screen ( With Live Chart); 226 Hooks the value change on screen with Temporary Measurement flow; 227 Display SFDR Measurement Value on Status bar; 230 Configure Measurements : SINAD; 231 Design framework for SINAD configuration; 232 Implement Framework for Temporary Measurement flow; 233 Implement screen ( With Live Chart); 234 Hooks the value change on screen with Temporary Measurement flow; 235 Display SINAD Measurement Value on Status bar; 238 Configure Measurements : ENOB; 239 Design framework for ENOB configuration; 240 Implement Framework for Temporary Measurement flow; 241 Implement screen ( With Live Chart); 242 Hooks the value change on screen with Temporary Measurement flow; 243 Display ENOB Measurement Value on Status bar; 251 Support multiple X-Axis Type ( Lin, Log) & Y-Axis scaling; 252 Support multiple Data point units and Multiple channels support\Marker support; 253 Unit test case; 257 Support multiple X-Axis Type ( Lin, Log); 258 Support multiple Data point units; 259 Y-Axis Scaling ( Auto Sclaing) Display only; 261 Marker support; 262 Integrate with data push mechnaism; 264 Code Review/ Unit test case review/Design screen/ Screen usability reviews with Jan Ryles; 267 Support multiple X-Axis Type ( Lin, Log) & Y-Axis scaling; 268 Support multiple Data point units; 269 Multiple channels support\Marker support; 270 Unit test case; 271 Code Review/ Unit test case review/Design screen/ Screen usability reviews with Jan Ryles; 274 Support multiple X-Axis Type ( Lin, Log) & Y-Axis scaling; 275 Support multiple Data point units; 276 Multiple channels support\Marker support; 277 Unit test case; 278 Code Review/ Unit test case review/Design screen/ Screen usability reviews with Jan Ryles; 290 Configure different type of Averaging; 291 Implement Hooks for Manual Averaging (Accept /Reject); 307 Save Configuration; 308 Save & Recall stratgies; 309 Design framework for Saving configuration; 310 Implement exposed interface in each searlizable objects; 311 Design & implement screen to trigger Saving mechanism; 312 unit testing; 313 design review/unit test review/usability review; 314 Load Configuration; 315 Design framework for loading configuration; 316 Implement exposed interface in each searlizable objects; 317 Design & implement screen to trigger loading mechanism; 318 unit testing; 319 design review/unit test review/usability review; 320 View Configuration; 321 Design & implement screen to trigger loading mechanism; 322 unit testing; 323 design review/unit test review/usability review; 337 Configure Triggering : External Source; 338 Design; 339 Implementation; 340 Code/unit test Review; 341 Configure Triggering : Internal Source; 342 Design; 343 Implementation; 344 Code/unit test Review; 345 Configure Triggering : Channel; 346 Design; 347 Implementation; 348 Code/unit test Review; 349 Configure ARM : Manual; 350 Design; 351 Implementation; 352 Code/unit test Review; 353 Configure ARM : Time Step; 354 Design; 355 Implementation; 356 Code/unit test Review; 357 Configure ARM : RPM Step; 358 Design; 359 Implementation; 360 Code/unit test Review; 566 Refactor at Octave Mode; 567 GUI; 568 Automation Interface; 569 Analysis and Measurement Layer; 570 Web service; 571 Basix LXI support pages; 572 With in Device Testing; 637 Linear Trace Coordinates; 642 Phase Trace Coordinates; 658 tbd; 662 Implementation; 665 Code Review; 667 Managed interface definition; 668 Defining (first pass)interfaces for all MVP meas; 669 Review with team & Incorporate Review decisions; 674 Window coeff for IE needs, Managed & Unmanaged; 896 Review managed & Native interface definitions; 941 Review managed & Native interface definitions; 952 Review managed & Native interface definitions; 963 Review managed & Native interface definitions; 974 Review managed & Native interface definitions; 985 Review managed & Native interface definitions; 996 Review managed & Native interface definitions; 1354 FFT; 1355 STFT; 1356 Windowing; 1357 Resampling; 1358 ZoomFFT; 1359 Spectrums; 1360 Linear; 1361 Power; 1362 Phase; 1363 Cross power; 1365 Weighting filters; 1366 CCIR; 1367 Low Pass, high pass, band pass, notch; 1368 Distortion; 1369 THD; 1370 THD + Noise; 1371 SINAD; 1372 ENOB; 1373 SNR; 1374 SFDR; 1375 Averaging; 1376 Coherence; 1377 Signal Generation; 1378 Sine; 1384 Octave; 1395 Swept Sine; 1396 Gain, Phase margins; 1397 Frequency, Damping; 1398 Frequency Response; 1399 Variance; 1400 Group Delay; 1408 Orbit; 1409 Time measurements; 1410 Delay time function; 1411 Maximum overshoot; 1412 Rise time; 1413 Decay Time; 1414 Pulse Width; 1415 Voltage Max; 1416 Voltage Min; 1417 Settling time; 1517 FFT Mode I.I.; 1518 Design Frequency GUI; 1519 Implement Frequency GUI; 1520 Nunit Frequency GUI; 1521 Design Channel GUI; 1522 Implement Channel GUI; 1523 Nunit Channel GUI; 1524 Design Trigger GUI; 1525 Implement Trigger GUI; 1526 Nunit Trigger GUI; 1527 Design Source GUI; 1528 Implement Source GUI; 1529 Nunit Source GUI; 1530 Design Cancel / Ok Logic; 1531 Implement Cancel / Ok Logic; 1532 Nunit Cancel / Ok Logic; 1533 Design Averaging GUI; 1534 Implement Averaging GUI; 1535 Nunit Averaging GUI; 1564 NEW TASKS ADDED 2/12/08; 1565 Architecture Development; 1566 GUI Technical Spec FFT Mode; 1567 GUI Technical Spec Swept Sine Mode; 1568 GUI Technical Spec Octave Mode; 1569 SCPI Technical Spec FFT Mode; 1570 SCPI Technical Spec Swept Sine Mode; 1571 SCPI Technical Spec Octave Mode; 1572 FFT Mode IE State Proxy Component; 1573 IE Proxy Collection; 1574 Design; 1575 Implement; 1576 Nunit; 1577 Frequency Proxy; 1578 Design; 1579 Implement; 1580 Nunit; 1581 Arm Proxy; 1582 Design; 1583 Implement; 1584 Nunit; 1585 Trigger Proxy; 1586 Design; 1587 Implement; 1588 Nunit; 1589 Averaging Proxy; 1590 Design; 1591 Implement; 1592 Nunit; 1593 Source Proxy; 1594 Design; 1595 Implement; 1596 Nunit; 1597 Data Pacer; 1598 Design; 1599 Implement Simulation; 1600 Implement; 1601 Nunit; 1602 Instrument Utilities Proxy (Cal, Self Test, Abort); 1603 Design; 1604 Implement; 1605 Nunit; 1606 Step Sine Mode IE State Proxy Component; 1607 Arm Proxy; 1608 Design; 1609 Implement; 1610 Nunit; 1611 Trigger Proxy; 1612 Design; 1613 Implement; 1614 Nunit; 1615 Averaging Proxy; 1616 Design; 1617 Implement; 1618 Nunit; 1619 Source Proxy; 1620 Design; 1621 Implement; 1622 Nunit; 1623 Data Pacer; 1624 Design; 1625 Implement Simulation; 1626 Implement; 1627 Nunit; 1628 Octave Mode IE State Proxy Component; 1629 Arm Proxy; 1630 Design; 1631 Implement; 1632 Nunit; 1633 Trigger Proxy; 1634 Design; 1635 Implement; 1636 Nunit; 1637 Averaging Proxy; 1638 Design; 1639 Implement; 1640 Nunit; 1641 Source Proxy; 1642 Design; 1643 Implement; 1644 Nunit; 1645 Data Pacer; 1646 Design; 1647 Implement Simulation; 1648 Implement; 1649 Nunit; 1650 AI SLIC Step Sine Port (20% of Original FFT work); 1651 AI SLIC Octave Port (20% of Original FFT work); 1652 Swept Sine Mode I.I. (20% of Original FFT I.I.); 1653 Octave Mode I.I. (20% of Original FFT I.I.); 1667 Implement/Nunit Test Parameters; 1674 Special Testing; 1681 Simulator; 1684 Design Instrument Engine Calls; 1694 Average; 1704 Rejection; 1705 Design Enabled; 1706 Implement Enabled; 1707 Test Enabled

Changed:

| ID | Task | Start | Finish | Duration | Complete | Total float | Predecessors | Other |
| --- | --- | --- | --- | --- | --- | --- | --- | --- |
| 1 | **Mirage SW DEV** |  | 2009-06-04 → 2009-07-21 (+47d) | 348.16d? → 382d? | 9% → 19% | 0d → 5d |  |  |
| 2 | **Phases** | 2008-06-24 A |  |  | 0% → 18% | 0.54d → 34.38d | 15, 18, 21, 25, 26, 27, 34, 44, 609, Defining (first pass)interfaces for all MVP meas, 961, 963, Window coeff for IE needs, Managed & Unmanaged, 967, 968, 976, 977 → 15, 18, 21, 25, 26, 27, 34, 44, 609 |  |
| 3 | Phase 1 (Design and Initial Creation) | 2009-06-02 A | 2009-06-03 A |  | 0% → 100% | 0.54d → none | 63, 231, 242, 247, 257, Configure Triggering : Free Run, Configure ARM : Automatic, 270, 305, 314, 323, 330, 337, 344, 354, Configure Measurements : THD+n, 177, Hooks the value change on screen with Temporary Measurement flow, 189, Code Review/ Unit test case review/Design screen/ Screen usability reviews with Jan Ryles, 174, Multiple channels support\Marker support, Unit test case, Support multiple X-Axis Type ( Lin, Log) & Y-Axis scaling, 25, 567, 377, Design & implement screen to trigger Saving mechanism, unit testing, Configure Triggering : Channel, Code/unit test Review, 405, 416, 427, 445, 446, 450, 465, 466, 468, 470, 471, Support multiple X-Axis Type ( Lin, Log) & Y-Axis scaling, Support multiple Data point units, 464, 463, 460, 461, 57 → 63, 231, 242, 247, 257, 270, 305, 314, 323, 330, 337, 344, 354, 25, 567, 377, 405, 416, 427, 445, 446, 450, 465, 466, 468, 470, 471, 464, 463, 460, 461, 57 |  |
| 4 | Phase 2 (FFT & THD) | 2009-05-27 A | 2009-05-28 A |  | 0% → 100% | 5.15d → none | 252, 260, 265, 278, 286, 294, 302, 472, Implement Framework for Temporary Measurement flow, Design framework for SINAD configuration, Configure Measurements : ENOB, 213 → 252, 260, 265, 278, 286, 294, 302, 472 |  |
| 14 | **Process Infrastructure** |  |  |  | 58% → 60% | 222.16d → 261d |  |  |
| 24 | **Platform Builder Image** |  |  |  | 26% → 33% | 222.16d → 261d |  |  |
| 25 | Identifying the components which are to be added |  | 2008-02-13 A |  | 70% → 100% | 337.3d → none |  |  |
| 26 | Creating NK.bin for Device | 2008-02-13 A → 2008-06-02 A (+110d) | 2008-02-15 → 2008-06-04 (+110d) |  | 50% → 40% | 336.59d → 253.43d | 25 → none | was named Creating NK.bin; constraint none → start no earlier than 2008-06-02; resources Anurag [70%] → RKB [70%] |
| 27 | Checking presence and working of all components | 2008-02-15 → 2008-06-04 (+110d) | 2008-02-18 → 2008-06-05 (+108d) |  |  | 336.59d → 253.43d |  |  |
| 28 | Automation: FTP Image in the box |  |  |  |  | 59.14d → 256.43d |  | was named Automation: Pushing this Image in the box |
| 30 | Integrating it with Trace Control & Registry settings |  | 2008-07-25 A |  | 40% → 100% | 60d → none |  |  |
| 33 | **Front Panel Tasks** |  |  |  | 6% → 17% | 0d → 38.84d |  |  |
| 34 | **Define interface IGUIHardKey** |  | 2008-06-11 A |  | 33% → 100% | 254.59d → none |  |  |
| 36 | Implementation | 2008-02-20 A | 2008-06-11 A | 5.71d? → 0.71d? | 0% → 100% | 254.59d → none |  | resources Himanshu [70%] → Himanshu [560%] |
| 44 | **Error & Debug Information** |  | 2008-06-24 A |  | 94% → 100% | 246.01d → none |  |  |
| 47 | Unit Testing & Code Review |  | 2008-06-24 A |  | 75% → 100% | 246.01d → none |  |  |
| 48 | **Define interface for All Major Component** |  | 2008-07-17 → 2008-07-28 (+11d) | 104.42d? → 111.42d? |  | 229.88d → 256.72d |  |  |
| 52 | File Formatting Component |  | 2008-07-17 → 2008-07-28 (+11d) |  |  | 229.88d → 256.72d |  |  |
| 53 | **Start/Shut down activity** |  | 2008-07-03 A |  | 93% → 100% | 58.14d → none |  |  |
| 56 | Code Review/ Unit test case review/Design screen/ Screen usability reviews with Jan Ryles |  | 2008-07-03 A |  | 50% → 100% | 58.14d → none |  |  |
| 58 | Design framework & splash screen, Review with Jan Ryles |  |  |  |  | 328.01d → 362.86d |  | resources Anurag [70%] → none |
| 59 | Implement Framework |  |  |  |  | 58.14d → 256.35d |  | resources Himanshu [70%] → none |
| 60 | Incorporate the Intilization Events to show progress |  |  |  |  | 58.14d → 256.35d |  | resources Himanshu [70%] → none |
| 61 | Integrate splash screen with Start Shut down activity |  |  |  |  | 58.14d → 256.35d |  | resources Himanshu [70%] → none |
| 62 | Unit test case,Design review/Code review |  |  |  |  | 58.14d → 256.35d |  | resources Himanshu [70%] → none |
| 63 | **Display layout Management** | 2008-02-28 A → 2008-06-02 A (+95d) | 2009-06-02 → 2008-06-24 (-343d) | 327.76d? → 17d? | 6% → 42% | 0.54d → 280d |  |  |
| 64 | Design the intial framework | 2008-02-28 A → 2008-06-02 A (+95d) | 2008-03-05 → 2008-06-05 (+92d) | 4d? → 3.54d? | 30% → 68% | 0.3d → 293.46d |  | was named Design Display Layout; resources RKB [50%] → RKB [70%] |
| 66 | Key board activation of Display layout screen | 2008-03-05 → 2008-06-03 A (+90d) | 2008-03-10 → 2008-06-04 (+86d) | 3.08d? → 1.43d? | 0% → 50% | 0.3d → 294.14d | 64 → 65 | was named Change Active Display; constraint none → start no earlier than 2008-06-02; resources 1ETW [65%] → Vishal [70%] |
| 67 | Implement screen "No of display" | 2008-03-17 → 2008-06-04 A (+79d) | 2008-03-20 → 2008-06-06 A (+78d) | 3.08d? → 2.14d? | 0% → 100% | 0.3d → none | Configure Layout/Number of Display → 66 | was named Display Traversing; resources 1ETW [65%] → Vishal [70%] |
| 68 | Implement status Show/Hide | 2008-03-20 → 2008-06-09 A (+81d) | 2008-03-25 → 2008-06-10 A (+77d) | 1.54d? → 1.43d? | 0% → 100% | 0.3d → none |  | was named Show/Hide Status & Softkey bar; resources 1ETW [65%] → Vishal [70%] |
| 69 | Implement SoftKeys Show/Hide | 2008-03-25 → 2008-06-10 A (+77d) | 2008-03-26 → 2008-06-11 (+77d) | 1.54d? → 1.43d? | 0% → 70% | 0.3d → 262.14d |  | was named Full screen Graph Mode; resources 1ETW [65%] → Vishal [70%] |
| 70 | Implement Mesament graph (Normal/Full) | 2009-06-01 → 2008-06-11 (-355d) | 2009-06-02 → 2008-06-12 (-355d) | 1.54d → 1d |  | 0.54d → 262.14d |  | was named Code Review; resources 1ETW [65%] → Vishal [70%] |
| 147 | **Averaging** | 2008-06-27 → 2008-02-04 (-144d) | 2008-07-11 → 2008-07-18 (+7d) | 10d? → 119.86d? |  | 26.1d → 262.14d |  |  |
| 174 | **Frequency Response Chart** | 2008-07-10 → 2008-06-09 (-31d) | 2008-07-18 → 2008-06-13 (-35d) | 6.43d? → 5d? |  | 56.92d → 262.29d |  |  |
| 175 | Implement Chart View Object | 2008-06-05 → 2008-06-09 (+4d) |  | 2.14d? → 1d? |  | 55.92d → 267.29d | Unit Testing/Code Review → none | constraint none → start no earlier than 2008-06-09 |
| 177 | Unit test case | 2008-06-17 → 2008-06-11 (-6d) | 2008-06-19 → 2008-06-11 (-8d) | 1.54d? → 1d? |  | 14.56d → 267.29d | Display THD+n Measurement Value on Status bar → 176 | resources 1ETW [65%] → Anurag [70%] |
| 178 | Code Review/ Unit test case review/Design screen/ Screen usability reviews with Jan Ryles | 2009-05-12 → 2008-06-12 (-334d) | 2009-05-13 → 2008-06-12 (-335d) | 1.54d → 1d? |  | 14.56d → 267.29d |  | resources 1ETW [65%] → Anurag [70%] |
| 180 | **Coherence Chart** | 2008-07-18 → 2008-06-16 (-32d) | 2009-03-11 → 2008-06-23 (-261d) | 168.06d? → 6d? |  | 57.92d → 262.29d |  |  |
| 181 | Implement Chart View Object |  | 2008-06-24 → 2008-06-16 (-8d) | 5.71d? → 1d? |  | 55.92d → 267.29d | 221 → 179 |  |
| 183 | Multiple channels support | 2008-06-30 → 2008-06-18 (-12d) | 2008-07-01 → 2008-06-18 (-13d) | 1.43d? → 1d? |  | 56.92d → 267.29d | Y-Axis Scaling ( Auto Sclaing) Display only → 182 |  |
| 184 | Unit test case | 2008-07-01 → 2008-06-19 (-12d) | 2008-07-02 → 2008-06-19 (-13d) | 1.54d? → 1d? |  | 35.51d → 267.29d | Display SNR Measurement Value on Status bar → 183 | resources Pallavi [65%] → Anurag [70%] |
| 185 | Code Review/ Unit test case review/Design screen/ Screen usability reviews with Jan Ryles | 2009-04-14 → 2008-06-20 (-298d) | 2009-04-15 → 2008-06-20 (-299d) | 1.54d → 1d? |  | 35.62d → 267.29d |  | resources Pallavi [65%] → Anurag [70%] |
| 187 | **Cross Power spectrum Chart** | 2008-06-16 → 2008-06-24 (+8d) | 2008-07-10 → 2008-06-27 (-13d) | 17.86d? → 4d? |  | 55.92d → 262.29d |  |  |
| 189 | unit test case | 2008-07-04 → 2008-06-25 (-9d) | 2008-07-08 → 2008-06-25 (-13d) | 2.14d? → 1d? |  | 56.92d → 267.29d | Integrate with data push mechnaism → 188 |  |
| 190 | Code Review/ Unit test case review/Design screen/ Screen usability reviews with Jan Ryles | 2009-05-04 → 2008-06-26 (-312d) | 2009-05-05 → 2008-06-26 (-313d) | 1.54d → 1d? |  | 21.62d → 267.29d | 195 → 189 | resources 1ETW [65%] → Anurag [70%] |
| 192 | **Auto Power spectrum Chart** | 2008-06-05 → 2008-06-30 (+25d) | 2008-06-16 → 2008-07-04 (+18d) | 7.14d? → 5d? |  | 55.92d → 262.29d |  |  |
| 193 | Implement Chart View Object | 2008-07-10 → 2008-06-30 (-10d) | 2008-07-11 → 2008-06-30 (-11d) | 1.43d? → 1d? |  | 56.92d → 267.29d | Code Review/ Unit test case review/Design screen/ Screen usability reviews with Jan Ryles → 191 |  |
| 195 | Unit test case | 2008-06-30 → 2008-07-02 (+2d) | 2008-07-01 → 2008-07-02 (+1d) | 1.54d? → 1d? |  | 23.25d → 267.29d | Display SFDR Measurement Value on Status bar → 194 | resources 1ETW [65%] → Anurag [70%] |
| 196 | Code Review/ Unit test case review/Design screen/ Screen usability reviews with Jan Ryles | 2009-04-29 → 2008-07-03 (-300d) | 2009-04-30 → 2008-07-03 (-301d) | 1.54d → 1d? |  | 24.62d → 267.29d | 212 → 195 | resources 1ETW [65%] → Anurag [70%] |
| 200 | Implementation | 2008-04-21 → 2008-02-04 (-77d) | 2008-04-24 → 2008-02-04 (-80d) | 3.08d? → 1d? |  | 5.69d → 386d | 1706, 255 → none | resources 1ETW [65%] → none |
| 208 | Implement Chart View Object | 2008-07-18 → 2008-07-08 (-10d) | 2008-07-21 → 2008-07-09 (-12d) | 0.71d? → 1.43d? |  | 57.92d → 267.29d | Code Review/ Unit test case review/Design screen/ Screen usability reviews with Jan Ryles → 207 |  |
| 212 | Unit test case | 2008-07-10 → 2008-07-15 (+5d) | 2008-07-14 → 2008-07-16 (+2d) | 1.54d? → 1d? |  | 23.86d → 262.29d | Display SINAD Measurement Value on Status bar → 211 | resources 1ETW [65%] → Anurag [70%] |
| 213 | Code Review/ Unit test case review/Design screen/ Screen usability reviews with Jan Ryles | 2009-04-27 → 2008-07-16 (-285d) | 2009-04-28 → 2008-07-17 (-285d) | 1.54d → 1d? |  | 25.62d → 262.29d | 220 → 212 | resources 1ETW [65%] → Anurag [70%] |
| 220 | Unit test case | 2008-07-23 → 2008-02-04 (-170d) | 2008-07-25 → 2008-02-04 (-172d) | 1.54d? → 1d? |  | 25.62d → 386d | Display ENOB Measurement Value on Status bar → none | resources 1ETW [65%] → none |
| 221 | Code Review/ Unit test case review/Design screen/ Screen usability reviews with Jan Ryles | 2008-06-13 → 2008-02-04 (-130d) | 2008-06-16 → 2008-02-04 (-133d) | 0.71d → 1d? |  | 55.92d → 386d | Unit test case → none | resources Anurag [70%] → none |
| 231 | **Common Custom Control & Menu Structure invocation** |  |  |  | 15% → 65% | 302.3d → 337.14d |  | was named XML Based Menu Tree Framework |
| 232 | Dual State Selection Control |  |  |  |  |  |  | was named Design XML schema |
| 233 | Group Box Implementation |  | 2008-03-12 A |  | 50% → 100% | 8.64d → none |  | was named Desgin SoftKey handling Framework |
| 234 | Combo box implementation | 2008-03-12 A | 2008-03-17 A |  | 0% → 100% | 47.1d → none |  | was named Populate Softkey handler memory objects from XML File |
| 235 | Implement Rooted Softkey Design pattern invocation |  |  |  |  | 47.1d → 347.37d |  | was named Implement Softkey ( 4/7 ) More key Traversing mechansim |
| 237 | Enable Keyboard for Combo controls | 2008-03-24 A | 2008-03-26 A |  | 0% → 100% | 46.1d → none |  | was named Implement Combo Box based Selection Mechansim |
| 238 | Enable Key board for dual state selection ( Show/Hide, AC/DC etc) | 2008-03-26 A | 2008-03-31 A |  | 0% → 100% | 46.1d → none |  | was named Implement bi-value based selection ( Show/Hide, AC/DC etc) |
| 239 | Unit test case for validating Menu State & Code review | 2008-03-31 A | 2008-04-03 A |  | 0% → 100% | 46.1d → none |  |  |
| 242 | **Screen Header Panel** | 2008-03-12 A | 2009-06-01 A |  | 0% → 100% | 2.08d → none |  |  |
| 243 | Design screen header layouts/ Class/ Exposed function | 2008-03-12 A | 2008-03-18 A |  | 0% → 100% | 8.64d → none |  |  |
| 244 | Implementation | 2008-03-26 A | 2008-04-02 A |  | 0% → 100% | 2.08d → none |  | resources 1ETW [65%] → Ravi [65%] |
| 245 | Unit test case | 2008-04-02 A | 2008-04-03 A |  | 0% → 100% | 2.08d → none |  | resources 1ETW [65%] → Ravi [65%] |
| 246 | Code reviews/unit test case reviews | 2009-05-28 A | 2009-06-01 A |  | 0% → 100% | 2.08d → none |  | resources 1ETW [65%] → Ravi [65%] |
| 247 | **Status Panel** | 2008-03-18 A | 2009-05-28 A |  | 0% → 100% | 3.62d → none |  |  |
| 248 | Design Status Panel layout/ Exposed classes/ Functions | 2008-03-18 A | 2008-03-25 A |  | 0% → 100% | 9.41d → none |  |  |

| ID | Task | Start | Finish | Duration | Complete | Total float | Predecessors | Other |
| --- | --- | --- | --- | --- | --- | --- | --- | --- |
| 249 | Implementation of status panel | 2008-04-03 A | 2008-04-08 A |  | 0% → 100% | 2.53d → none |  | resources 1ETW [65%] → Ravi [65%] |
| 250 | Unit test case | 2008-04-08 A | 2008-04-10 A |  | 0% → 100% | 2.53d → none |  | resources 1ETW [65%] → Ravi [65%] |
| 251 | Code reviews/unit test case reviews | 2009-05-27 A | 2009-05-28 A |  | 0% → 100% | 3.62d → none |  | resources 1ETW [65%] → Ravi [65%] |
| 254 | Implementation |  |  |  |  | 6.14d → 41d |  | resources 1ETW [65%] → Ravi [65%] |
| 255 | Unit Testing |  |  |  |  | 5.14d → 40d |  | resources 1ETW [65%] → Ravi [65%] |
| 256 | Code Review |  |  |  |  | 5.15d → 40d |  | resources 1ETW [65%] → Ravi [65%] |
| 257 | **Module Integration** | 2008-03-27 A | 2008-04-08 A |  | 0% → 100% | 9.41d → none |  |  |
| 258 | Module Integration GUI - Inst Interface | 2008-03-27 A | 2008-04-02 A |  | 0% → 100% | 9.41d → none |  |  |
| 259 | Module integration GUI - AML | 2008-04-02 A | 2008-04-08 A |  | 0% → 100% | 10.41d → none |  |  |
| 260 | **Configure Analyzer Frequency** | 2008-04-08 A | 2009-02-19 A |  | 0% → 100% | 11.41d → none |  |  |
| 261 | Design | 2008-04-08 A | 2008-04-10 A |  | 0% → 100% | 11.41d → none |  |  |
| 262 | Implementation | 2008-04-10 A | 2008-04-17 A |  | 0% → 100% | 41.82d → none |  |  |
| 263 | Unit Testing | 2008-04-17 A | 2008-04-22 A |  | 0% → 100% | 40.82d → none |  |  |
| 264 | Code reviews/unit test case reviews | 2008-06-02 A | 2009-02-19 A | 1.54d → 1.47d | 0% → 100% | 73.61d → none |  | resources Pallavi [65%] → Pallavi [68%] |
| 265 | **Start/Pause/Run** | 2008-04-16 A | 2008-05-28 A |  | 0% → 100% | 13.48d → none |  |  |
| 266 | Design the framework | 2008-04-16 A | 2008-04-22 A |  | 0% → 100% | 12.48d → none | Design → none |  |
| 267 | Implementation of Run Behaviour | 2008-04-22 A | 2008-04-25 A |  | 0% → 100% | 40.82d → none |  |  |
| 268 | Unit testing | 2008-04-25 A | 2008-04-29 A |  | 0% → 100% | 40.82d → none |  |  |
| 269 | Code Review/ Unit test case review | 2008-05-27 A | 2008-05-28 A |  | 0% → 100% | 264.62d → none |  |  |
| 270 | **Configure Measurements: THD** | 2008-04-22 A | 2009-05-19 → 2009-05-11 (-8d) | 280.4d? → 274.45d? | 0% → 21% | 10.62d → 51.4d |  |  |
| 271 | Design Framework for THD configuration | 2008-04-22 A | 2008-04-25 A |  | 0% → 100% | 12.48d → none |  | resources RKB [50%] → Himanshu |
| 272 | Design Framework for Temporary Measurement flow |  | 2008-05-05 → 2008-04-29 (-6d) | 5d? → 2.5d? |  | 11.48d → 45.9d |  | resources RKB [50%] → Himanshu |
| 273 | Implement screen ( With Live Chart) | 2008-05-05 → 2008-04-29 (-6d) | 2008-05-08 → 2008-05-05 (-3d) | 3.85d? → 2.5d? |  | 11.48d → 53.86d | 272, 747 → 272 | resources 1ETW [65%] → Himanshu |
| 274 | Hooks the value change on screen with Temporary Measurement flow | 2008-05-08 → 2008-05-05 (-3d) | 2008-05-13 → 2008-05-06 (-7d) | 2.31d? → 1.5d? |  | 11.48d → 53.86d |  | resources 1ETW [65%] → Himanshu |
| 275 | Display THD Measurement Value on Status bar | 2008-05-13 → 2008-05-06 (-7d) | 2008-05-15 → 2008-05-08 (-7d) | 2.31d? → 1.5d? |  | 11.48d → 53.86d |  | resources 1ETW [65%] → Himanshu |
| 276 | Unit test case | 2008-05-15 → 2008-05-08 (-7d) | 2008-05-20 → 2008-05-12 (-8d) | 3.08d? → 2d? |  | 11.48d → 53.86d |  | resources 1ETW [65%] → Himanshu |
| 277 | Code Review/ Unit test case review/Design screen/ Screen usability reviews with Jan Ryles | 2009-05-18 → 2009-05-08 (-10d) | 2009-05-19 → 2009-05-11 (-8d) | 1.54d → 1d |  | 10.62d → 51.4d |  | resources 1ETW [65%] → Himanshu |
| 281 | Implement screen ( With Live Chart) |  |  |  |  | 39.82d → 74d | 280, 747 → 280 |  |
| 286 | **Configure Measurements : Side band power** | 2008-05-05 → 2008-04-29 (-6d) |  | 15.23d? → 18.73d? |  | 14.69d → 45.9d |  |  |
| 287 | Design Framework for Side band power configuration | 2008-05-05 → 2008-04-29 (-6d) | 2008-05-07 → 2008-05-02 (-5d) |  |  | 14.69d → 44.9d |  |  |
| 288 | Design Framework for Temporary Measurement flow | 2008-05-07 → 2008-05-02 (-5d) | 2008-05-12 → 2008-05-07 (-5d) |  |  | 14.69d → 44.9d |  |  |
| 294 | **Configure Measurements : Band power value** | 2008-05-12 → 2008-05-07 (-5d) | 2009-05-15 → 2009-05-11 (-4d) | 263.9d? → 262.4d? |  | 13.12d → 44.9d |  |  |
| 295 | Design framework for band power configuration | 2008-05-12 → 2008-05-07 (-5d) | 2008-05-14 → 2008-05-09 (-5d) |  |  | 14.69d → 44.9d |  |  |
| 296 | Design Framework for Temporary Measurement flow | 2008-05-14 → 2008-05-09 (-5d) | 2008-05-19 → 2008-05-14 (-5d) |  |  | 14.69d → 51.9d |  |  |
| 297 | Implement screen ( With Live Chart) | 2008-05-20 → 2008-05-14 (-6d) | 2008-05-22 → 2008-05-16 (-6d) |  |  | 13.15d → 51.9d |  | resources 1ETW [65%] → Ravi [65%] |
| 298 | Hooks the value change on screen with Temporary Measurement flow | 2008-05-22 → 2008-05-16 (-6d) | 2008-05-23 → 2008-05-19 (-4d) |  |  | 13.15d → 51.9d |  | resources 1ETW [65%] → Ravi [65%] |
| 299 | Display band power Measurement Value on Status bar | 2008-05-23 → 2008-05-19 (-4d) | 2008-05-27 → 2008-05-21 (-6d) |  |  | 13.15d → 51.9d |  | resources 1ETW [65%] → Ravi [65%] |
| 300 | Unit test case | 2008-05-27 → 2008-05-21 (-6d) | 2008-05-28 → 2008-05-22 (-6d) |  |  | 13.15d → 51.9d |  | resources 1ETW [65%] → Ravi [65%] |
| 301 | Code Review/ Unit test case review/Design screen/ Screen usability reviews with Jan Ryles | 2009-05-13 → 2009-05-07 (-6d) | 2009-05-15 → 2009-05-11 (-4d) |  |  | 13.12d → 56.96d |  | resources 1ETW [65%] → Ravi [65%] |
| 302 | **File Service** | 2008-05-19 → 2008-05-14 (-5d) | 2008-05-26 → 2008-05-21 (-5d) |  |  | 16.64d → 71.2d |  |  |
| 303 | Define File/Directory structure hierarchy | 2008-05-19 → 2008-05-14 (-5d) | 2008-05-23 → 2008-05-20 (-3d) |  |  | 16.64d → 71.2d |  |  |
| 304 | Review with team | 2008-05-23 → 2008-05-20 (-3d) | 2008-05-26 → 2008-05-21 (-5d) |  |  | 16.64d → 71.2d |  |  |
| 305 | **Linear spectrum Chart** | 2008-08-05 A |  |  | 0% → 42% | 58.01d → 92.86d |  |  |
| 306 | Implement Chart View Object | 2008-08-05 A | 2008-08-08 A |  | 0% → 100% | 59.43d → none |  |  |
| 310 | Multiple channels support | 2008-09-04 A | 2008-09-08 A |  | 0% → 100% | 56.41d → none |  |  |
| 311 | Integrate with data push mechnaism | 2008-09-10 A | 2008-09-11 A |  | 0% → 100% | 56.57d → none |  |  |
| 350 | **Display Error Log** | 2008-05-26 → 2008-05-21 (-5d) | 2009-04-15 → 2009-04-24 (+9d) | 232.16d? → 242.16d? |  | 16.64d → 62.2d |  |  |
| 351 | Design Framework for showing Error Log | 2008-05-26 → 2008-05-21 (-5d) | 2008-05-30 → 2008-05-27 (-3d) |  |  | 16.64d → 71.2d |  |  |
| 352 | Implementation | 2008-05-30 → 2008-05-27 (-3d) | 2008-06-05 → 2008-06-03 (-2d) |  |  | 34.51d → 72.2d |  |  |
| 353 | Save Error Log in different format | 2008-06-05 → 2008-06-03 (-2d) | 2008-06-10 → 2008-06-06 (-4d) |  |  | 34.51d → 72.2d |  |  |
| 354 | Filter Error log | 2008-06-10 → 2008-06-06 (-4d) | 2008-06-13 → 2008-06-11 (-2d) |  |  | 34.51d → 72.2d |  |  |
| 355 | Enable/Show/Clear/Save Debug Error log | 2008-06-13 → 2008-06-11 (-2d) | 2008-06-20 → 2008-06-30 (+10d) |  |  | 34.51d → 64.2d |  |  |
| 356 | Code reviews/unit test case reviews | 2009-04-13 → 2009-04-23 (+10d) | 2009-04-15 → 2009-04-24 (+9d) |  |  | 35.85d → 62.2d |  |  |
| 357 | **Local/Remote Mode Implication** | 2008-06-13 → 2008-02-04 (-130d) | 2008-06-23 → 2008-02-12 (-132d) | 6d? → 7d? |  | 26.1d → 167.85d |  |  |
| 358 | Configuring all FP components in Local & Remote mode | 2008-06-13 → 2008-02-04 (-130d) | 2008-06-18 → 2008-02-06 (-133d) |  |  | 26.1d → 167.85d | Design framework for ENOB configuration → none |  |
| 359 | Unit testing | 2008-06-18 → 2008-02-07 (-132d) | 2008-06-23 → 2008-02-12 (-132d) |  |  | 26.1d → 173.53d |  |  |
| 360 | **Save Trace** | 2008-06-23 → 2008-02-13 (-131d) | 2009-04-13 → 2008-11-27 (-137d) | 210.63d? → 206.77d? |  | 26.1d → 167.85d |  |  |
| 361 | Design framework for Saving trace | 2008-06-23 → 2008-02-13 (-131d) | 2008-06-26 → 2008-02-15 (-132d) |  |  | 26.1d → 173.53d |  |  |
| 362 | Design & implement screen to trigger saving mechanism | 2008-07-02 → 2008-02-18 (-135d) | 2008-07-08 → 2008-02-21 (-138d) |  |  | 36.7d → 173.53d | 361, 184 → 361 |  |
| 363 | unit testing | 2008-07-08 → 2008-02-21 (-138d) | 2008-07-11 → 2008-02-26 (-136d) |  |  | 36.7d → 168.85d |  |  |
| 364 | design review/unit test review/usability review | 2009-04-13 → 2008-11-27 (-137d) | 2009-04-13 → 2008-11-27 (-137d) |  |  | 37.39d → 173.23d |  |  |
| 365 | **Recall trace** | 2008-06-26 → 2008-02-18 (-129d) | 2009-04-13 → 2008-11-26 (-138d) | 207.63d? → 202.77d? |  | 26.1d → 169.23d |  |  |
| 366 | Design framework for Loading trace | 2008-06-26 → 2008-02-18 (-129d) | 2008-06-27 → 2008-02-18 (-130d) |  |  | 26.1d → 178.69d |  |  |
| 367 | Design & implement screen to trigger Loading mechanism | 2008-07-11 → 2008-02-26 (-136d) | 2008-07-14 → 2008-02-27 (-138d) |  |  | 36.7d → 169.53d |  |  |
| 368 | unit testing | 2008-07-14 → 2008-02-27 (-138d) | 2008-07-16 → 2008-02-29 (-138d) |  |  | 37.7d → 169.53d |  |  |
| 369 | design review/unit test review/usability review | 2009-04-13 → 2008-11-26 (-138d) | 2009-04-13 → 2008-11-26 (-138d) |  |  | 37.39d → 174.23d |  |  |
| 370 | **Configure Measurements : Frequency damping** | 2008-07-11 → 2008-02-04 (-158d) | 2009-04-10 → 2008-11-25 (-136d) | 195.4d? → 211.54d? |  | 27.1d → 170.46d |  |  |
| 371 | Design framework for Frequency dumping configuration | 2008-07-11 → 2008-02-04 (-158d) | 2008-07-15 → 2008-02-05 (-161d) |  |  | 27.1d → 188.54d | Implement Hooks for Manual Averaging (Accept /Reject) → none |  |
| 372 | Implement Framework for Temporary Measurement flow | 2008-07-16 → 2008-02-29 (-138d) | 2008-07-18 → 2008-03-04 (-136d) |  |  | 39.32d → 171.31d |  |  |
| 373 | Implement screen ( With Live Chart) | 2008-07-18 → 2008-03-04 (-136d) | 2008-07-22 → 2008-03-06 (-138d) |  |  | 39.32d → 172.31d |  |  |

| ID | Task | Start | Finish | Duration | Total float | Predecessors | Other |
| --- | --- | --- | --- | --- | --- | --- | --- |
| 374 | Hooks the value change on screen with Temporary Measurement flow | 2008-07-22 → 2008-03-06 (-138d) | 2008-07-23 → 2008-03-07 (-138d) |  | 39.32d → 172.31d |  |  |
| 375 | Display frequency dumping Value on Status bar | 2008-07-23 → 2008-03-07 (-138d) | 2008-07-25 → 2008-03-11 (-136d) |  | 39.32d → 172.31d |  |  |
| 376 | Unit test case | 2008-07-25 → 2008-03-11 (-136d) | 2008-07-28 → 2008-03-12 (-138d) |  | 39.32d → 172.31d |  |  |
| 377 | Code Review/ Unit test case review/Design screen/ Screen usability reviews with Jan Ryles | 2009-04-09 → 2008-11-24 (-136d) | 2009-04-10 → 2008-11-25 (-136d) |  | 37.62d → 175.46d |  |  |
| 378 | **Scope View Chart** | 2008-08-06 → 2008-02-12 (-176d) | 2009-03-09 → 2008-09-15 (-175d) | 153.71d? → 154.71d? | 58.79d → 221.29d |  |  |
| 379 | Implement Chart View Object | 2008-08-06 → 2008-02-12 (-176d) | 2008-08-08 → 2008-02-14 (-176d) |  | 58.79d → 221.29d | Unit test case → none |  |
| 380 | Support multiple X-Axis Type ( Lin, Log) & Y-Axis scaling | 2008-08-08 → 2008-02-14 (-176d) | 2008-08-12 → 2008-02-18 (-176d) |  | 59.79d → 221.29d |  |  |
| 381 | Support multiple Data point units | 2008-08-12 → 2008-02-18 (-176d) | 2008-08-13 → 2008-02-19 (-176d) |  | 59.79d → 221.29d |  |  |
| 382 | Multiple channels support\Marker support | 2008-08-20 → 2008-02-26 (-176d) | 2008-08-20 → 2008-02-26 (-176d) |  | 59.71d → 221.57d |  |  |
| 383 | Unit test case | 2008-08-21 → 2008-02-27 (-176d) | 2008-08-22 → 2008-02-28 (-176d) |  | 59.71d → 226.57d |  |  |
| 384 | Code Review/ Unit test case review/Design screen/ Screen usability reviews with Jan Ryles | 2009-03-09 → 2008-09-15 (-175d) | 2009-03-09 → 2008-09-15 (-175d) |  | 62.44d → 226.29d |  |  |
| 385 | **CSV Data Writer** | 2008-07-24 → 2008-02-04 (-171d) | 2009-04-27 → 2008-11-05 (-173d) | 197.13d? → 197.91d? | 27.1d → 184.09d |  |  |
| 386 | Design CSV Data Writer | 2008-07-24 → 2008-02-04 (-171d) | 2008-07-25 → 2008-02-04 (-172d) |  | 27.1d → 184.86d | Design & implement screen to trigger loading mechanism → none |  |
| 387 | Implement Data Writer | 2008-07-25 → 2008-02-05 (-171d) | 2008-07-30 → 2008-02-08 (-173d) |  | 26.87d → 189.09d | 386, 220 → 386 | resources 1ETW [65%] → Ravi [65%] |
| 388 | unit testing | 2008-07-30 → 2008-02-08 (-173d) | 2008-07-31 → 2008-02-12 (-170d) |  | 27.87d → 183.86d |  | resources 1ETW [65%] → Ravi [65%] |
| 389 | design review/unit test review | 2009-04-24 → 2008-11-05 (-170d) | 2009-04-27 → 2008-11-05 (-173d) |  | 27.89d → 184.09d |  | resources 1ETW [65%] → Ravi [65%] |
| 390 | **CSV Data Reader** | 2008-07-25 → 2008-02-05 (-171d) | 2009-04-24 → 2008-11-05 (-170d) | 195.38d? → 196.14d? | 28.64d → 184.86d |  |  |
| 391 | Design CSV Data Reader | 2008-07-25 → 2008-02-05 (-171d) | 2008-07-28 → 2008-02-05 (-174d) |  | 32.49d → 194.47d |  |  |
| 392 | Implement Data Reader | 2008-07-31 → 2008-02-12 (-170d) | 2008-08-06 → 2008-02-15 (-173d) |  | 28.64d → 183.86d |  | resources 1ETW [65%] → Ravi [65%] |
| 393 | unit testing | 2008-08-06 → 2008-02-15 (-173d) | 2008-08-07 → 2008-02-19 (-170d) |  | 28.64d → 184.86d |  | resources 1ETW [65%] → Ravi [65%] |
| 394 | design review/unit test review | 2009-04-23 → 2008-11-04 (-170d) | 2009-04-24 → 2008-11-05 (-170d) |  | 28.64d → 184.86d |  | resources 1ETW [65%] → Ravi [65%] |
| 395 | **Configure Analyzer Source** | 2008-08-07 → 2008-02-19 (-170d) | 2008-08-14 → 2008-02-26 (-170d) |  | 30.32d → 365.38d |  |  |
| 396 | Implementation | 2008-08-07 → 2008-02-19 (-170d) | 2008-08-13 → 2008-02-25 (-170d) |  | 30.32d → 365.38d |  | resources 1ETW [65%] → Ravi [65%] |
| 397 | Unit Testing/Code Review | 2008-08-13 → 2008-02-25 (-170d) | 2008-08-14 → 2008-02-26 (-170d) |  | 30.32d → 365.38d |  | resources 1ETW [65%] → Ravi [65%] |
| 398 | **Configure Measurements : Delay Time** | 2008-08-13 → 2008-02-04 (-191d) | 2009-04-07 → 2008-09-23 (-196d) | 168.93d? → 166.24d? | 41.08d → 215.76d |  |  |
| 399 | Design framework for Delay time configuration | 2008-08-13 → 2008-02-04 (-191d) | 2008-08-18 → 2008-02-05 (-195d) |  | 44.78d → 217.76d | Design → none |  |
| 400 | Implement Framework for Temporary Measurement flow | 2008-08-20 → 2008-02-06 (-196d) | 2008-08-22 → 2008-02-07 (-197d) |  | 42.08d → 223.31d | 399, unit testing → 399 |  |
| 401 | Implement screen ( With Live Chart) | 2008-08-22 → 2008-02-07 (-197d) | 2008-08-25 → 2008-02-12 (-195d) |  | 42.08d → 217.76d |  |  |
| 402 | Hooks the value change on screen with Temporary Measurement flow | 2008-08-25 → 2008-02-12 (-195d) | 2008-08-27 → 2008-02-13 (-196d) |  | 42.08d → 217.76d |  |  |
| 403 | Display Delay time Value on Status bar | 2008-08-27 → 2008-02-13 (-196d) | 2008-08-28 → 2008-02-15 (-195d) |  | 42.08d → 217.76d |  |  |
| 404 | Unit test case | 2008-08-28 → 2008-02-15 (-195d) | 2008-09-01 → 2008-02-18 (-196d) |  | 43.08d → 217.76d |  |  |
| 405 | Code Review/ Unit test case review/Design screen/ Screen usability reviews with Jan Ryles | 2009-04-03 → 2008-09-19 (-196d) | 2009-04-07 → 2008-09-23 (-196d) |  | 41.08d → 215.76d |  |  |
| 406 | **Configure Measurements : Maximum overshoot** | 2008-08-18 → 2008-02-06 (-194d) | 2009-03-31 → 2008-09-16 (-196d) | 161.4d? → 159.54d? | 46.62d → 220.46d |  |  |
| 407 | Design framework for maximum overshoot configuration | 2008-08-18 → 2008-02-06 (-194d) | 2008-08-20 → 2008-02-07 (-195d) |  | 50d → 228.14d |  |  |
| 408 | Implement Framework for Temporary Measurement flow | 2008-09-01 → 2008-02-18 (-196d) | 2008-09-04 → 2008-02-20 (-197d) |  | 45.78d → 219.84d |  |  |
| 409 | Implement screen | 2008-09-04 → 2008-02-20 (-197d) | 2008-09-05 → 2008-02-21 (-197d) |  | 45.78d → 219.84d |  |  |
| 410 | Hooks the value change on screen with Temporary Measurement flow | 2008-09-05 → 2008-02-21 (-197d) | 2008-09-09 → 2008-02-25 (-197d) |  | 45.78d → 220.84d |  |  |
| 411 | Display maximum overshoot Value on Status bar | 2008-09-09 → 2008-02-25 (-197d) | 2008-09-10 → 2008-02-26 (-197d) |  | 45.78d → 220.84d |  |  |
| 412 | Unit test case | 2008-09-10 → 2008-02-26 (-197d) | 2008-09-12 → 2008-02-28 (-197d) |  | 45.78d → 220.84d |  |  |
| 413 | Code Review/ Unit test case review/Design screen/ Screen usability reviews with Jan Ryles | 2009-03-30 → 2008-09-15 (-196d) | 2009-03-31 → 2008-09-16 (-196d) |  | 46.62d → 225.46d |  |  |
| 414 | **Configure Measurements : Rise time** | 2008-08-20 → 2008-02-08 (-194d) | 2009-03-31 → 2008-09-16 (-196d) | 159.85d? → 157.54d? | 46.16d → 220.46d |  |  |
| 415 | Design framework for Rise time configuration | 2008-08-20 → 2008-02-08 (-194d) | 2008-08-22 → 2008-02-12 (-192d) |  | 51d → 228.14d |  |  |
| 416 | Implement Framework for Temporary Measurement flow | 2008-09-12 → 2008-02-28 (-197d) | 2008-09-15 → 2008-02-29 (-199d) |  | 46.09d → 220.84d |  |  |
| 417 | Implement screen | 2008-09-15 → 2008-02-29 (-199d) | 2008-09-17 → 2008-03-04 (-197d) |  | 46.09d → 220.84d |  |  |
| 418 | Hooks the value change on screen with Temporary Measurement flow | 2008-09-17 → 2008-03-04 (-197d) | 2008-09-18 → 2008-03-06 (-196d) |  | 46.09d → 220.84d |  |  |
| 419 | Display rise time Value on Status bar | 2008-09-18 → 2008-03-06 (-196d) | 2008-09-22 → 2008-03-07 (-199d) |  | 46.09d → 220.84d |  |  |
| 420 | Unit test case | 2008-09-22 → 2008-03-07 (-199d) | 2008-09-23 → 2008-03-11 (-196d) |  | 46.09d → 220.84d |  |  |
| 421 | Code Review/ Unit test case review/Design screen/ Screen usability reviews with Jan Ryles | 2009-03-30 → 2008-09-15 (-196d) | 2009-03-31 → 2008-09-16 (-196d) |  | 46.16d → 225.46d |  |  |
| 422 | **Configure Measurements : Setting time** | 2008-08-22 → 2008-02-13 (-191d) | 2009-03-31 → 2008-09-11 (-201d) | 157.4d → 151.54d | 46.62d → 222.14d |  |  |
| 423 | Design screen for Setting time configuration | 2008-08-22 → 2008-02-13 (-191d) | 2008-08-26 → 2008-02-14 (-194d) |  | 51d → 228.14d |  |  |
| 424 | Implement Framework for Temporary Measurement flow | 2008-09-23 → 2008-03-11 (-196d) | 2008-09-25 → 2008-03-12 (-197d) |  | 47.7d → 223.25d |  |  |
| 425 | Implement screen | 2008-09-25 → 2008-03-12 (-197d) | 2008-09-26 → 2008-03-14 (-196d) |  | 47.7d → 223.25d |  |  |
| 426 | Hooks the value change on screen with Temporary Measurement flow | 2008-09-26 → 2008-03-14 (-196d) | 2008-09-30 → 2008-03-17 (-197d) |  | 47.7d → 223.25d |  |  |
| 427 | Display setting time Value on Status bar | 2008-09-30 → 2008-03-17 (-197d) | 2008-10-03 → 2008-03-19 (-198d) |  | 46.7d → 223.25d |  |  |
| 428 | Unit test case | 2008-10-03 → 2008-03-19 (-198d) | 2008-10-06 → 2008-03-20 (-200d) |  | 46.7d → 223.25d |  |  |
| 429 | Code Review/ Unit test case review/Design screen/ Screen usability reviews with Jan Ryles | 2009-03-30 → 2008-09-10 (-201d) | 2009-03-31 → 2008-09-11 (-201d) |  | 46.62d → 228.46d |  |  |
| 430 | **Configure Measurements : Decay Time** | 2008-08-26 → 2008-03-03 (-176d) | 2009-03-24 → 2008-09-09 (-196d) | 150.78d? → 136.54d? | 51d → 211.14d |  |  |
| 431 | Design screen for decay time configuration | 2008-08-26 → 2008-03-03 (-176d) | 2008-08-28 → 2008-03-05 (-176d) |  | 51d → 211.14d |  |  |
| 432 | Implement Framework for Temporary Measurement flow | 2008-10-06 → 2008-03-20 (-200d) | 2008-10-08 → 2008-03-25 (-197d) |  | 50.7d → 226.92d |  |  |
| 433 | Implement screen | 2008-10-08 → 2008-03-25 (-197d) | 2008-10-10 → 2008-03-26 (-198d) |  | 49.7d → 226.92d |  |  |
| 434 | Hooks the value change on screen with Temporary Measurement flow | 2008-10-10 → 2008-03-26 (-198d) | 2008-10-14 → 2008-03-28 (-200d) |  | 49.7d → 226.92d |  |  |
| 435 | Display decay time Value on Status bar | 2008-10-14 → 2008-03-28 (-200d) | 2008-10-15 → 2008-03-31 (-198d) |  | 49.7d → 226.92d |  |  |
| 436 | Unit test case | 2008-10-15 → 2008-03-31 (-198d) | 2008-10-17 → 2008-04-02 (-198d) |  | 49.7d → 226.92d |  |  |
| 437 | Code Review/ Unit test case review/Design screen/ Screen usability reviews with Jan Ryles | 2009-03-23 → 2008-09-08 (-196d) | 2009-03-24 → 2008-09-09 (-196d) |  | 51.24d → 230.46d |  |  |
| 438 | **Configure Measurements : Pulse width** | 2008-08-28 → 2008-03-05 (-176d) | 2009-03-25 → 2008-09-09 (-197d) | 148.38d? → 133.68d? | 49.78d → 212.14d |  |  |
| 439 | Design screen for pulse width configuration | 2008-08-28 → 2008-03-05 (-176d) | 2008-09-01 → 2008-03-07 (-178d) |  | 51d → 217.14d |  |  |
| 440 | Implement Framework for Temporary Measurement flow | 2008-10-17 → 2008-04-02 (-198d) | 2008-10-20 → 2008-04-04 (-199d) |  | 50.78d → 227.34d |  |  |
| 441 | Implement screen | 2008-10-20 → 2008-04-04 (-199d) | 2008-10-22 → 2008-04-07 (-198d) |  | 50.78d → 227.34d |  |  |
| 442 | Hooks the value change on screen with Temporary Measurement flow | 2008-10-22 → 2008-04-07 (-198d) | 2008-10-23 → 2008-04-09 (-197d) |  | 50.78d → 227.34d |  |  |
| 443 | Display pulse width Value on Status bar | 2008-10-23 → 2008-04-09 (-197d) | 2008-10-27 → 2008-04-10 (-200d) |  | 50.78d → 227.34d |  |  |

| ID | Task | Start | Finish | Duration | Total float | Predecessors | Other |
| --- | --- | --- | --- | --- | --- | --- | --- |
| 444 | Unit test case | 2008-10-27 → 2008-04-10 (-200d) | 2008-10-29 → 2008-04-15 (-197d) |  | 49.78d → 226.34d |  |  |
| 445 | Code Review/ Unit test case review/Design screen/ Screen usability reviews with Jan Ryles | 2009-03-23 → 2008-09-08 (-196d) | 2009-03-25 → 2008-09-09 (-197d) |  | 49.78d → 230.46d |  |  |
| 446 | **Configure Measurements : Voltage Max** | 2008-09-01 → 2008-03-07 (-178d) | 2009-03-24 → 2008-09-08 (-197d) | 145.54d? → 130.18d? | 50.62d → 212.14d |  |  |
| 447 | Design screen for voltage max configuration | 2008-09-01 → 2008-03-07 (-178d) | 2008-09-04 → 2008-03-11 (-177d) |  | 50d → 217.14d |  |  |
| 448 | Implement Framework for Temporary Measurement flow | 2008-10-29 → 2008-04-15 (-197d) | 2008-10-31 → 2008-04-16 (-198d) |  | 51.31d → 227.87d |  |  |
| 449 | Implement screen | 2008-10-31 → 2008-04-16 (-198d) | 2008-11-04 → 2008-04-21 (-197d) |  | 51.31d → 226.87d |  |  |
| 450 | Hooks the value change on screen with Temporary Measurement flow | 2008-11-04 → 2008-04-21 (-197d) | 2008-11-05 → 2008-04-22 (-197d) |  | 51.31d → 226.87d |  |  |
| 451 | Display voltage max value on Status bar | 2008-11-05 → 2008-04-22 (-197d) | 2008-11-07 → 2008-04-24 (-197d) |  | 51.31d → 226.87d |  |  |
| 452 | Unit test case | 2008-11-07 → 2008-04-24 (-197d) | 2008-11-10 → 2008-04-25 (-199d) |  | 51.31d → 226.87d |  |  |
| 453 | Code Review/ Unit test case review/Design screen/ Screen usability reviews with Jan Ryles | 2009-03-23 → 2008-09-04 (-200d) | 2009-03-24 → 2008-09-08 (-197d) |  | 50.62d → 231.96d |  |  |
| 454 | **Configure Measurements : Voltage Min** | 2008-09-04 → 2008-03-11 (-177d) | 2009-03-18 → 2008-09-04 (-195d) | 138.18d? → 126.61d? | 50d → 212.14d |  |  |
| 455 | Design screen for voltage max configuration | 2008-09-04 → 2008-03-11 (-177d) | 2008-09-08 → 2008-03-13 (-179d) |  | 50d → 212.14d |  |  |
| 456 | Implement Framework for Temporary Measurement flow | 2008-11-10 → 2008-04-25 (-199d) | 2008-11-12 → 2008-04-29 (-197d) |  | 54.98d → 230.07d |  |  |
| 457 | Implement screen | 2008-11-12 → 2008-04-29 (-197d) | 2008-11-13 → 2008-04-30 (-197d) |  | 54.98d → 230.07d |  |  |
| 458 | Hooks the value change on screen with Temporary Measurement flow | 2008-11-13 → 2008-04-30 (-197d) | 2008-11-17 → 2008-05-05 (-196d) |  | 54.98d → 229.07d |  |  |
| 459 | Display voltage min value on Status bar | 2008-11-17 → 2008-05-05 (-196d) | 2008-11-18 → 2008-05-07 (-195d) |  | 54.98d → 229.07d |  |  |
| 460 | Unit test case | 2008-11-18 → 2008-05-07 (-195d) | 2008-11-20 → 2008-05-08 (-196d) |  | 54.98d → 229.07d |  |  |
| 461 | Code Review/ Unit test case review/Design screen/ Screen usability reviews with Jan Ryles | 2009-03-16 → 2008-09-01 (-196d) | 2009-03-18 → 2008-09-04 (-195d) |  | 54.98d → 228.53d |  |  |
| 462 | **Orbit Chart** | 2008-08-25 → 2008-03-03 (-175d) | 2009-03-10 → 2008-09-16 (-175d) | 141.43d? → 141.71d? | 59.71d → 220.29d |  |  |
| 463 | Implement Chart View Object | 2008-08-25 → 2008-03-03 (-175d) | 2008-08-27 → 2008-03-05 (-175d) |  | 59.71d → 229.14d |  |  |
| 464 | Support multiple X-Axis Type ( Lin, Log) & Y-Axis scaling | 2008-08-28 → 2008-03-06 (-175d) | 2008-09-01 → 2008-03-07 (-178d) |  | 59.71d → 224.14d |  |  |
| 465 | Support multiple Data point units | 2008-09-04 → 2008-03-13 (-175d) | 2008-09-08 → 2008-03-14 (-178d) |  | 59.14d → 227.07d |  |  |
| 466 | Multiple channels support\Marker support | 2008-09-08 → 2008-03-14 (-178d) | 2008-09-08 → 2008-03-17 (-175d) |  | 59.14d → 222.07d |  |  |
| 467 | Unit test case | 2008-09-15 → 2008-03-24 (-175d) | 2008-09-16 → 2008-03-25 (-175d) |  | 59.57d → 225.57d |  |  |
| 468 | Code Review/ Unit test case review/Design screen/ Screen usability reviews with Jan Ryles | 2009-03-10 → 2008-09-16 (-175d) | 2009-03-10 → 2008-09-16 (-175d) |  | 60.44d → 225.29d |  |  |
| 469 | **Common Marker Development** | 2008-09-18 → 2008-03-27 (-175d) | 2009-03-10 → 2008-09-18 (-173d) | 123.02d? → 125.36d? | 60.43d → 218.64d |  |  |
| 470 | Design Marker Framework | 2008-09-18 → 2008-03-27 (-175d) | 2008-09-22 → 2008-03-31 (-175d) |  | 60.43d → 228.43d |  |  |
| 471 | Implementation | 2008-09-26 → 2008-04-04 (-175d) | 2008-10-03 → 2008-04-10 (-176d) |  | 60.43d → 221.43d |  |  |
| 472 | Support Different shape | 2008-10-06 → 2008-04-15 (-174d) | 2008-10-06 → 2008-04-15 (-174d) |  | 61.57d → 225.57d |  |  |
| 473 | Support XY Marker | 2008-10-10 → 2008-04-21 (-172d) | 2008-10-13 → 2008-04-22 (-174d) |  | 60.71d → 224.71d |  |  |
| 474 | Support Marker Format Phase | 2008-10-14 → 2008-04-23 (-174d) | 2008-10-16 → 2008-04-25 (-174d) |  | 60.71d → 219.71d |  |  |
| 475 | Support Marker Format Magnitude | 2008-10-20 → 2008-04-29 (-174d) | 2008-10-21 → 2008-04-30 (-174d) |  | 60.57d → 224.57d |  |  |
| 476 | Support Marker Format DB | 2008-10-23 → 2008-05-02 (-174d) | 2008-10-24 → 2008-05-05 (-172d) |  | 60.57d → 224.57d |  |  |
| 477 | Support Peak Trace Marker | 2008-10-29 → 2008-05-12 (-170d) | 2008-10-30 → 2008-05-13 (-170d) |  | 62.07d → 223.57d |  |  |
| 478 | Support Next Peak | 2008-10-31 → 2008-05-14 (-170d) | 2008-11-04 → 2008-05-16 (-172d) |  | 62.14d → 217.98d |  |  |
| 479 | Support Next Largest Peak | 2008-11-05 → 2008-05-19 (-170d) | 2008-11-07 → 2008-05-20 (-171d) |  | 62.14d → 223.57d |  |  |
| 480 | Code Review/ Unit test case review/Design screen/ Screen usability reviews with Jan Ryles | 2009-03-05 → 2008-09-15 (-171d) | 2009-03-10 → 2008-09-18 (-173d) |  | 62.14d → 223.64d |  |  |
| 481 | **Screen Capture** | 2008-09-08 → 2008-03-13 (-179d) | 2008-10-16 → 2008-04-04 (-195d) | 27.08d? → 15.37d? | 41.92d → 212.14d |  |  |
| 482 | Design | 2008-09-08 → 2008-03-13 (-179d) | 2008-09-12 → 2008-03-19 (-177d) |  | 50d → 212.14d |  |  |
| 483 | Implementation for JPEG format | 2008-09-30 → 2008-03-24 (-190d) | 2008-10-06 → 2008-03-27 (-193d) |  | 41.86d → 219d | 482, Implementation → 482 | resources 1ETW [65%] → Ravi [65%] |
| 484 | Implementation for BMP File format | 2008-10-13 → 2008-04-01 (-195d) | 2008-10-16 → 2008-04-04 (-195d) |  | 40.92d → 214d |  | resources 1ETW [65%] → Ravi [65%] |
| 485 | **Menu Map** | 2008-09-12 → 2008-03-19 (-177d) | 2008-11-10 → 2008-04-29 (-195d) | 40.58d? → 28.84d? | 42.97d → 213.15d |  |  |
| 486 | Design | 2008-09-12 → 2008-03-19 (-177d) | 2008-09-18 → 2008-03-26 (-176d) |  | 60d → 220.37d |  |  |
| 487 | Implement Traversing mechanism ( hook with FP events) | 2008-10-20 → 2008-04-08 (-195d) | 2008-10-29 → 2008-04-17 (-195d) |  | 42.88d → 213d |  | resources 1ETW [65%] → Ravi [65%] |
| 488 | Print Menu Map | 2008-11-05 → 2008-04-24 (-195d) | 2008-11-10 → 2008-04-29 (-195d) |  | 42.97d → 213.15d |  | resources 1ETW [65%] → Ravi [65%] |
| 489 | **HDF5 Data Writer** | 2008-09-18 → 2008-03-26 (-176d) | 2009-04-09 → 2008-09-24 (-197d) | 144.15d? → 129.41d? | 40d → 214.73d |  |  |
| 490 | Design HDF5 Data Writer | 2008-09-18 → 2008-03-26 (-176d) | 2008-09-25 → 2008-04-02 (-176d) |  | 67d → 229.14d |  |  |
| 491 | Implement Data Writer | 2008-11-10 → 2008-04-29 (-195d) | 2008-11-13 → 2008-05-05 (-192d) |  | 42.97d → 212.15d |  | resources 1ETW [65%] → Ravi [65%] |
| 492 | unit testing | 2008-11-13 → 2008-05-05 (-192d) | 2008-11-18 → 2008-05-08 (-194d) |  | 42.97d → 212.15d |  | resources 1ETW [65%] → Ravi [65%] |
| 493 | MathLab Compatbility test | 2008-12-08 → 2008-05-26 (-196d) | 2008-12-17 → 2008-06-03 (-197d) |  | 40d → 214.69d |  | resources 1ETW [65%] → Ravi [65%] |
| 494 | design review/unit test review | 2009-04-08 → 2008-09-23 (-197d) | 2009-04-09 → 2008-09-24 (-197d) |  | 40d → 219.73d |  | resources 1ETW [65%] → Ravi [65%] |
| 495 | **HDF5 Data Reader** | 2008-09-25 → 2008-04-02 (-176d) | 2009-04-08 → 2008-09-22 (-198d) | 138.38d? → 122.68d? | 40.77d → 216.46d |  |  |
| 496 | Design HDF5 Data Reader | 2008-09-25 → 2008-04-02 (-176d) | 2008-09-26 → 2008-04-03 (-176d) |  | 68d → 229.14d |  |  |
| 497 | Implement Data Reader | 2008-12-17 → 2008-06-03 (-197d) | 2008-12-22 → 2008-06-06 (-199d) |  | 41.77d → 216.46d |  | resources 1ETW [65%] → Ravi [65%] |
| 498 | unit testing | 2008-12-22 → 2008-06-06 (-199d) | 2008-12-23 → 2008-06-09 (-197d) |  | 41.77d → 216.46d |  | resources 1ETW [65%] → Ravi [65%] |
| 499 | Corrupt file handling | 2008-12-23 → 2008-06-09 (-197d) | 2008-12-29 → 2008-06-12 (-200d) |  | 40.77d → 216.46d |  | resources 1ETW [65%] → Ravi [65%] |
| 500 | design review/unit test review | 2009-04-06 → 2008-09-18 (-200d) | 2009-04-08 → 2008-09-22 (-198d) |  | 40.77d → 216.46d |  | resources 1ETW [65%] → Ravi [65%] |
| 501 | **Configure Measurements : Gain & Phase margin** | 2008-09-26 → 2008-04-03 (-176d) | 2009-03-18 → 2008-09-04 (-195d) | 122.54d? → 110.07d? | 55.62d → 228.07d |  |  |
| 502 | Design screen for band power configuration | 2008-09-26 → 2008-04-03 (-176d) | 2008-09-30 → 2008-04-07 (-176d) |  | 68d → 229.14d |  |  |
| 503 | Implement Framework for Temporary Measurement flow | 2008-11-20 → 2008-05-08 (-196d) | 2008-11-24 → 2008-05-12 (-196d) |  | 55.52d → 229.07d |  |  |
| 504 | Implement screen ( With Live Chart) | 2008-11-24 → 2008-05-12 (-196d) | 2008-11-26 → 2008-05-14 (-196d) |  | 55.52d → 229.07d |  |  |
| 505 | Hooks the value change on screen with Temporary Measurement flow | 2008-11-26 → 2008-05-14 (-196d) | 2008-11-27 → 2008-05-15 (-196d) |  | 55.52d → 229.07d |  |  |
| 506 | Display band power Measurement Value on Status bar | 2008-11-27 → 2008-05-15 (-196d) | 2008-12-01 → 2008-05-19 (-196d) |  | 55.52d → 229.07d |  |  |
| 507 | Unit test case | 2008-12-01 → 2008-05-19 (-196d) | 2008-12-02 → 2008-05-21 (-195d) |  | 55.52d → 229.07d |  |  |
| 508 | Code Review/ Unit test case review/Design screen/ Screen usability reviews with Jan Ryles | 2009-03-17 → 2008-09-02 (-196d) | 2009-03-18 → 2008-09-04 (-195d) |  | 55.62d → 228.07d |  |  |
| 509 | **Configure Analyzer Type: Swept Sine** | 2008-09-30 → 2008-04-07 (-176d) | 2009-04-06 → 2008-09-18 (-200d) | 133.85d? → 118.14d? | 42.31d → 218d |  |  |
| 510 | Design | 2008-09-30 → 2008-04-07 (-176d) | 2008-10-03 → 2008-04-09 (-177d) |  | 67d → 229.14d |  |  |
| 511 | Implementation | 2008-12-29 → 2008-06-12 (-200d) | 2009-01-02 → 2008-06-18 (-198d) |  | 42.31d → 218d |  | resources 1ETW [65%] → Ravi [65%] |
| 512 | Unit Testing/Code Review | 2009-04-03 → 2008-09-17 (-198d) | 2009-04-06 → 2008-09-18 (-200d) |  | 42.31d → 218d |  | resources 1ETW [65%] → Ravi [65%] |
| 513 | **LAN Configuration** |  | 2009-02-04 → 2008-07-21 (-198d) | 262.69d? → 120.92d? | 85.47d → 261.08d |  |  |

| ID | Task | Start | Finish | Duration | Total float | Other |
| --- | --- | --- | --- | --- | --- | --- |
| 514 | Design | 2008-10-03 → 2008-04-09 (-177d) | 2008-10-08 → 2008-04-15 (-176d) |  | 67d → 228.14d |  |
| 515 | Implementation | 2009-01-26 → 2008-07-10 (-200d) | 2009-01-30 → 2008-07-16 (-198d) |  | 45.31d → 219.08d | resources 1ETW [65%] → Ravi [65%] |
| 516 | Unit test case for Changing configuration | 2009-01-30 → 2008-07-16 (-198d) | 2009-02-04 → 2008-07-21 (-198d) |  | 45.31d → 219.08d | resources 1ETW [65%] → Ravi [65%] |
| 517 | Unit Testing review/Code Review |  |  |  | 346.62d → 380.46d | resources 1ETW [65%] → Ravi [65%] |
| 518 | **Display System Information** |  | 2009-02-26 → 2008-08-13 (-197d) | 276.54d? → 136.31d? | 70.08d → 244.15d |  |
| 519 | Design System information | 2008-10-08 → 2008-04-15 (-176d) | 2008-10-14 → 2008-04-21 (-176d) |  | 66d → 232.14d |  |
| 520 | Implementation | 2009-02-13 → 2008-07-30 (-198d) | 2009-02-19 → 2008-08-05 (-198d) |  | 45.54d → 219.46d | resources 1ETW [65%] → Ravi [65%] |
| 521 | Unit test case | 2009-02-23 → 2008-08-08 (-199d) | 2009-02-26 → 2008-08-13 (-197d) |  | 45.23d → 219.46d | resources 1ETW [65%] → Ravi [65%] |
| 522 | Unit Testing review/Code Review |  |  |  | 345.08d → 378.92d | resources 1ETW [65%] → Ravi [65%] |
| 523 | **Display Hardware information** |  | 2009-03-09 → 2008-09-29 (-161d) | 282.69d? → 167.77d? | 62.39d → 211.15d |  |
| 524 | design for Hardware information | 2008-10-14 → 2008-04-21 (-176d) | 2008-10-16 → 2008-04-23 (-176d) |  | 66d → 227.14d |  |
| 525 | Implementation | 2009-03-03 → 2008-08-18 (-197d) | 2009-03-06 → 2008-08-21 (-197d) |  | 45.23d → 219.46d | resources 1ETW [65%] → Ravi [65%] |
| 526 | Unit Test cases | 2009-03-06 → 2008-08-21 (-197d) | 2009-03-09 → 2008-08-25 (-196d) |  | 45.23d → 219.46d | resources 1ETW [65%] → Ravi [65%] |
| 527 | Unit Testing review/Code Review |  |  |  | 177.31d → 211.15d | resources 1ETW [65%] → Ravi [65%] |
| 528 | **Software Licensing** |  | 2009-01-01 → 2008-06-30 (-185d) | 237.3d? → 103.46d? | 109.32d → 277d |  |
| 529 | design | 2008-10-16 → 2008-04-23 (-176d) | 2008-10-22 → 2008-04-29 (-176d) |  | 66d → 227.14d |  |
| 530 | Implementation for Display License | 2008-12-02 → 2008-05-21 (-195d) | 2008-12-05 → 2008-05-26 (-193d) |  | 59.05d → 233.38d |  |
| 531 | Implementation for License Activation | 2008-12-05 → 2008-05-26 (-193d) | 2008-12-11 → 2008-05-29 (-196d) |  | 58.05d → 233.38d |  |
| 532 | Implementation for License De-Activation | 2008-12-11 → 2008-05-29 (-196d) | 2008-12-17 → 2008-06-03 (-197d) |  | 58.05d → 233.38d |  |
| 533 | Integrate Mirage Lic framework with CDF Licensing Capability | 2008-12-17 → 2008-06-03 (-197d) | 2008-12-23 → 2008-06-09 (-197d) |  | 58.05d → 233.38d |  |
| 534 | Unit test case for Lic verification (GUI, Measurement, SCPI etc) | 2008-12-23 → 2008-06-09 (-197d) | 2009-01-01 → 2008-06-30 (-185d) |  | 57.05d → 225.38d |  |
| 536 | **Self Test** | 2008-10-22 → 2008-04-29 (-176d) | 2009-03-17 → 2008-09-09 (-189d) | 103.1d? → 94.68d? | 57.06d → 225.46d |  |
| 537 | design | 2008-10-22 → 2008-04-29 (-176d) | 2008-10-24 → 2008-05-02 (-175d) |  | 66d → 226.14d |  |
| 538 | Implementation | 2009-01-01 → 2008-06-30 (-185d) | 2009-01-06 → 2008-07-03 (-187d) |  | 57.05d → 225.38d |  |
| 539 | Unit testing | 2009-01-06 → 2008-07-03 (-187d) | 2009-01-08 → 2008-07-04 (-188d) |  | 57.05d → 225.38d |  |
| 540 | Unit Testing review/Code Review | 2009-03-13 → 2008-09-08 (-186d) | 2009-03-17 → 2008-09-09 (-189d) |  | 57.06d → 230.46d |  |
| 541 | **Calibration** | 2008-10-24 → 2008-05-02 (-175d) | 2009-03-13 → 2008-09-08 (-186d) | 99.69d? → 90.99d? | 58.47d → 226.14d |  |
| 542 | design | 2008-10-24 → 2008-05-02 (-175d) | 2008-10-29 → 2008-05-06 (-176d) |  | 65d → 226.14d |  |
| 543 | Auto Calibration | 2009-01-08 → 2008-07-04 (-188d) | 2009-01-13 → 2008-07-09 (-188d) |  | 58.47d → 226.15d |  |
| 544 | Calibrate once | 2009-01-13 → 2008-07-09 (-188d) | 2009-01-15 → 2008-07-11 (-188d) |  | 58.47d → 226.15d |  |
| 545 | Unit Testing review/Code Review | 2009-03-12 → 2008-09-05 (-188d) | 2009-03-13 → 2008-09-08 (-186d) |  | 58.47d → 226.15d |  |
| 546 | **User Preference** | 2008-10-29 → 2008-05-06 (-176d) | 2009-03-12 → 2008-09-05 (-188d) | 95.04d? → 87.68d? | 60.12d → 226.14d |  |
| 547 | design | 2008-10-29 → 2008-05-06 (-176d) | 2008-10-31 → 2008-05-08 (-176d) |  | 65d → 226.14d |  |
| 548 | Warning Beap | 2009-01-15 → 2008-07-11 (-188d) | 2009-01-16 → 2008-07-14 (-186d) |  | 60.12d → 228.46d |  |
| 549 | Front Panel lock out | 2009-01-16 → 2008-07-14 (-186d) | 2009-01-20 → 2008-07-16 (-188d) |  | 60.12d → 228.46d |  |
| 550 | Date/Time Format | 2009-01-20 → 2008-07-16 (-188d) | 2009-01-21 → 2008-07-17 (-188d) |  | 60.12d → 228.46d |  |
| 551 | Color Schema | 2009-01-21 → 2008-07-17 (-188d) | 2009-01-26 → 2008-07-22 (-188d) |  | 60.12d → 228.46d |  |
| 552 | Power ON & Preset State | 2009-01-26 → 2008-07-22 (-188d) | 2009-02-02 → 2008-07-29 (-188d) |  | 60.12d → 228.46d |  |
| 553 | Unit Testing review/Code Review | 2009-03-10 → 2008-09-04 (-187d) | 2009-03-12 → 2008-09-05 (-188d) |  | 60.12d → 232.46d |  |
| 554 | **Normal Variance Chart** | 2008-11-10 → 2008-05-23 (-171d) | 2009-03-04 → 2008-09-17 (-168d) | 82.21d? → 82.86d? | 65.07d → 216.71d |  |
| 555 | Implement Chart View Object | 2008-11-10 → 2008-05-23 (-171d) | 2008-11-11 → 2008-05-27 (-168d) |  | 65.07d → 216.71d |  |
| 556 | Support multiple X-Axis Type ( Lin, Log) & Y-Axis scaling | 2008-11-12 → 2008-05-28 (-168d) | 2008-11-13 → 2008-05-29 (-168d) |  | 65.71d → 221.71d |  |
| 557 | Support multiple Data point units | 2008-11-17 → 2008-06-02 (-168d) | 2008-11-18 → 2008-06-03 (-168d) |  | 65.57d → 223.57d |  |
| 558 | Multiple channels support\Marker support | 2008-11-19 → 2008-06-04 (-168d) | 2008-11-20 → 2008-06-05 (-168d) |  | 65.57d → 217.57d |  |
| 559 | Unit test case | 2008-11-24 → 2008-06-09 (-168d) | 2008-11-25 → 2008-06-10 (-168d) |  | 65.57d → 224.57d |  |
| 560 | Code Review/ Unit test case review/Design screen/ Screen usability reviews with Jan Ryles | 2009-03-03 → 2008-09-16 (-168d) | 2009-03-04 → 2008-09-17 (-168d) |  | 65.44d → 219.29d |  |
| 561 | **Backward comptability** | 2008-11-26 → 2008-06-11 (-168d) | 2009-03-02 → 2008-09-15 (-168d) |  | 66.57d → 221.29d |  |
| 562 | SDF Data Reader | 2008-11-26 → 2008-06-11 (-168d) | 2008-11-27 → 2008-06-12 (-168d) |  | 66.57d → 226.57d |  |
| 563 | Design SDF Data Reader | 2008-12-02 → 2008-06-17 (-168d) | 2008-12-05 → 2008-06-20 (-168d) |  | 67.71d → 221.71d |  |
| 564 | Implement Data Reader | 2008-12-05 → 2008-06-20 (-168d) | 2008-12-10 → 2008-06-24 (-169d) |  | 66.71d → 221.71d |  |
| 565 | unit testing | 2008-12-16 → 2008-06-30 (-169d) | 2008-12-19 → 2008-07-03 (-169d) |  | 66.64d → 226.64d |  |
| 566 | design review/unit test review | 2009-03-02 → 2008-09-15 (-168d) | 2009-03-02 → 2008-09-15 (-168d) |  | 67.44d → 226.29d |  |
| 567 | **Refactor at Swept sine mode** | 2008-10-31 → 2008-05-08 (-176d) | 2008-11-26 → 2008-06-03 (-176d) |  | 65d → 226.14d |  |
| 568 | GUI | 2008-10-31 → 2008-05-08 (-176d) | 2008-11-10 → 2008-05-16 (-178d) |  | 65d → 226.14d |  |
| 569 | Automation Interface | 2008-11-10 → 2008-05-16 (-178d) | 2008-11-18 → 2008-05-26 (-176d) |  | 65d → 226.14d |  |
| 570 | Analysis and Measurement Layer | 2008-11-18 → 2008-05-26 (-176d) | 2008-11-26 → 2008-06-03 (-176d) |  | 65d → 226.14d |  |
| 571 | **Configure Analyzer Type: Octave** | 2008-11-26 → 2008-06-03 (-176d) | 2009-03-02 → 2008-09-09 (-174d) | 67.76d? → 69.53d? | 65d → 225.62d |  |
| 572 | Design | 2008-11-26 → 2008-06-03 (-176d) | 2008-11-28 → 2008-06-05 (-176d) |  | 65d → 226.14d |  |
| 573 | Implementation | 2009-02-23 → 2008-09-01 (-175d) | 2009-02-27 → 2008-09-05 (-175d) |  | 67.39d → 230.62d |  |
| 574 | Unit Testing/Code Review | 2009-02-27 → 2008-09-05 (-175d) | 2009-03-02 → 2008-09-09 (-174d) |  | 67.39d → 225.62d |  |
| 575 | **Configure Math Analysis** | 2008-11-28 → 2008-06-05 (-176d) | 2009-03-03 → 2008-09-15 (-169d) | 66.43d? → 71.21d? | 66.73d → 221.93d |  |
| 576 | Design | 2008-11-28 → 2008-06-05 (-176d) | 2008-12-02 → 2008-06-09 (-176d) |  | 81.07d → 239.43d |  |
| 577 | Implement Framework for Temporary Measurement flow to display Complex conjugate result | 2008-12-23 → 2008-07-07 (-169d) | 2008-12-29 → 2008-07-10 (-172d) |  | 67.71d → 223.93d |  |
| 578 | Implement screen | 2009-01-05 → 2008-07-15 (-174d) | 2009-01-07 → 2008-07-17 (-174d) |  | 66.36d → 223.93d |  |
| 579 | Hooks the value change on screen with Temporary Measurement flow | 2009-01-12 → 2008-07-22 (-174d) | 2009-01-14 → 2008-07-24 (-174d) |  | 66.43d → 223.93d |  |
| 580 | Unit test case | 2009-01-14 → 2008-07-24 (-174d) | 2009-01-15 → 2008-07-28 (-171d) |  | 66.43d → 223.93d |  |
| 581 | Code Review/ Unit test case review/Design screen/ Screen usability reviews with Jan Ryles | 2009-03-02 → 2008-09-11 (-172d) | 2009-03-03 → 2008-09-15 (-169d) |  | 66.73d → 221.93d |  |
| 582 | **Configure Limit line Analysis** | 2008-12-02 → 2008-06-09 (-176d) | 2009-02-17 → 2008-08-13 (-188d) | 54.15d? → 46.45d? | 77.01d → 244.69d |  |
| 583 | Design | 2008-12-02 → 2008-06-09 (-176d) | 2008-12-04 → 2008-06-11 (-176d) |  | 94d → 255.14d |  |
| 584 | Implement Framework for Temporary Measurement flow to display Complex conjugate result | 2009-02-02 → 2008-07-29 (-188d) | 2009-02-05 → 2008-08-01 (-188d) |  | 66.31d → 234.15d |  |

| ID | Task | Start | Finish | Duration | Complete | Total float | Predecessors | Other |
| --- | --- | --- | --- | --- | --- | --- | --- | --- |
| 585 | Implement screen | 2009-02-05 → 2008-08-01 (-188d) | 2009-02-09 → 2008-08-05 (-188d) |  |  | 66.31d → 234.15d |  |  |
| 586 | Hooks the value change on screen with Temporary Measurement flow | 2009-02-09 → 2008-08-05 (-188d) | 2009-02-12 → 2008-08-08 (-188d) |  |  | 66.31d → 234.15d |  |  |
| 587 | Unit test case | 2009-02-12 → 2008-08-08 (-188d) | 2009-02-13 → 2008-08-11 (-186d) |  |  | 66.31d → 234.15d |  |  |
| 588 | Code Review/ Unit test case review/Design screen/ Screen usability reviews with Jan Ryles | 2009-02-13 → 2008-08-11 (-186d) | 2009-02-17 → 2008-08-13 (-188d) |  |  | 77.01d → 244.69d |  |  |
| 589 | **Configure Complex Conjugate** | 2008-12-04 → 2008-06-11 (-176d) | 2009-03-02 → 2008-09-12 (-171d) | 61.43d? → 66.57d? |  | 67.73d → 222.57d |  |  |
| 590 | Design | 2008-12-04 → 2008-06-11 (-176d) | 2008-12-08 → 2008-06-13 (-178d) |  |  | 94d → 255.14d |  |  |
| 591 | Implement Framework for Temporary Measurement flow to display Complex conjugate result | 2009-01-20 → 2008-08-04 (-169d) | 2009-01-22 → 2008-08-06 (-169d) |  |  | 66d → 227d |  |  |
| 592 | Implement screen | 2009-01-22 → 2008-08-06 (-169d) | 2009-01-26 → 2008-08-08 (-171d) |  |  | 66d → 222d |  |  |
| 593 | Hooks the value change on screen with Temporary Measurement flow | 2009-02-04 → 2008-08-19 (-169d) | 2009-02-06 → 2008-08-21 (-169d) |  |  | 65.86d → 226.86d |  |  |
| 594 | Unit test case | 2009-02-10 → 2008-08-25 (-169d) | 2009-02-11 → 2008-08-26 (-169d) |  |  | 67.57d → 228.57d |  |  |
| 595 | Code Review/ Unit test case review/Design screen/ Screen usability reviews with Jan Ryles | 2009-02-27 → 2008-09-11 (-169d) | 2009-03-02 → 2008-09-12 (-171d) |  |  | 67.73d → 227.57d |  |  |
| 596 | **Software Version Display / Install update** | 2008-12-08 → 2008-06-13 (-178d) |  | 127.16d? → 253.3d? |  | 0d → 33.84d |  |  |
| 597 | Design | 2008-12-08 → 2008-06-13 (-178d) | 2008-12-11 → 2008-06-17 (-177d) |  |  | 106.16d → 268.14d |  |  |
| 598 | Design screen for Installing software update | 2009-03-16 → 2008-09-01 (-196d) | 2009-03-18 → 2008-09-04 (-195d) |  |  | 45.35d → 218.41d |  | resources 1ETW [65%] → Ravi [65%] |
| 599 | Implemenation ( Display Software version) | 2009-03-23 → 2008-09-09 (-195d) | 2009-03-26 → 2008-09-11 (-196d) |  |  | 45.35d → 218.41d |  | resources 1ETW [65%] → Ravi [65%] |
| 600 | Implementation ( Install updates) | 2009-03-26 → 2008-09-11 (-196d) | 2009-03-30 → 2008-09-16 (-195d) |  |  | 45.35d → 218.41d |  | resources 1ETW [65%] → Ravi [65%] |
| 601 | Unit test case | 2009-03-30 → 2008-09-16 (-195d) | 2009-04-01 → 2008-09-18 (-195d) |  |  | 45.35d → 218.41d |  | resources 1ETW [65%] → Ravi [65%] |
| 602 | Code Review/ Unit test case review/Design screen/ Screen usability reviews with Jan Ryles |  |  |  |  | 0d → 33.84d |  | resources 1ETW [65%] → Ravi [65%] |
| 603 | **Help** | 2009-02-17 → 2008-08-14 (-187d) | 2009-03-10 → 2008-09-05 (-186d) | 14.49d? → 16.49d? |  | 61.62d → 227.51d |  |  |
| 604 | Access online manual help & Display version | 2009-02-17 → 2008-08-14 (-187d) | 2009-02-20 → 2008-08-19 (-185d) |  |  | 61.62d → 233.62d |  |  |
| 605 | Installed localized help file | 2009-02-20 → 2008-08-19 (-185d) | 2009-02-23 → 2008-08-20 (-187d) |  |  | 61.62d → 228.62d |  |  |
| 606 | Print Help in different format | 2009-02-23 → 2008-08-20 (-187d) | 2009-02-25 → 2008-08-22 (-187d) |  |  | 61.62d → 228.62d |  |  |
| 607 | Link each help button with its page | 2009-03-04 → 2008-08-29 (-187d) | 2009-03-10 → 2008-09-05 (-186d) |  |  | 61.67d → 227.51d |  |  |
| 608 | **Analysis Measurement Layer** |  | 2008-05-22 → 2009-03-13 (+295d) | 78.8d? → 289.02d? | 39% → 34% | 269.36d → 97.98d |  |  |
| 612 | **Analyzer mode management :: FFT Analyzer** | 2008-04-04 A → 2008-02-04 A (-60d) | 2008-05-22 → 2008-03-04 A (-79d) | 34.39d? → 21.43d? | 79% → 100% | 269.36d → none |  |  |
| 613 | Design interface/Framework for mode change | 2008-04-09 A → 2008-02-04 A (-65d) | 2008-04-11 A → 2008-02-05 A (-66d) | 1.82d? → 1.43d? |  |  |  | resources Gowie [55%] → Gowie [70%] |
| 614 | Review with tech leads | 2008-04-16 A → 2008-02-05 A (-71d) | 2008-04-16 A → 2008-02-06 A (-70d) | 0.91d? → 0.71d? |  |  |  | resources Gowie [55%] → Gowie [70%] |
| 615 | Learn how to put stuff in Build system | 2008-04-16 A → 2008-02-06 A (-70d) | 2008-04-17 A → 2008-02-06 A (-71d) | 0.91d? → 0.71d? |  |  |  | resources Gowie [55%] → Gowie [70%] |
| 616 | Implement SET mode | 2008-04-04 A → 2008-02-04 A (-60d) | 2008-04-11 A → 2008-02-08 A (-63d) | 5.45d? → 4.29d? |  |  | none → 615 | resources Gowie [55%] → Gowie [70%] |
| 617 | implement trace types | 2008-04-11 A → 2008-02-08 A (-63d) | 2008-04-21 A → 2008-02-14 A (-67d) | 5.45d? → 4.29d? |  |  |  | resources Gowie [55%] → Gowie [70%] |
| 618 | Unit testing | 2008-04-21 A → 2008-02-14 A (-67d) | 2008-04-23 A → 2008-02-15 A (-68d) | 1.82d? → 1.43d? |  |  |  | resources Gowie [55%] → Gowie [70%] |
| 619 | Code **API **Review | 2008-04-23 → 2008-02-15 A (-68d) | 2008-04-24 → 2008-02-18 A (-66d) | 0.91d → 0.71d | 0% → 100% | 290.11d → none |  | was named Code Review; resources Gowie [55%] → Gowie [70%] |
| 620 | **State Management** | 2008-04-24 A → 2008-02-18 A (-66d) | 2008-05-19 → 2008-02-28 A (-81d) | 17.12d? → 7.86d? | 79% → 100% | 269.36d → none |  |  |
| 621 | Design framework for state change event | 2008-04-24 A → 2008-02-18 A (-66d) | 2008-04-25 A → 2008-02-20 A (-65d) | 1.82d? → 1.43d? |  |  |  | resources Gowie [55%] → Gowie [70%] |
| 622 | implement mode change event | 2008-04-25 A → 2008-02-20 A (-65d) | 2008-05-08 A → 2008-02-21 A (-77d) | 8.57d? → 1.43d? |  |  |  | resources Gowie [11.7%] → Gowie [70%] |
| 623 | implement state change event | 2008-05-08 A → 2008-02-21 A (-77d) | 2008-05-12 A → 2008-02-22 A (-80d) | 2d? → 1.43d? |  |  |  | resources Gowie [50%] → Gowie [70%] |
| 624 | implement data available event | 2008-05-12 → 2008-02-22 A (-80d) | 2008-05-14 → 2008-02-26 A (-78d) | 2d? → 1.43d? | 0% → 100% | 270.56d → none |  | resources Gowie [50%] → Gowie [70%] |
| 625 | Unit testing | 2008-05-14 A → 2008-02-26 A (-78d) | 2008-05-16 → 2008-02-27 A (-79d) | 1.82d? → 1.43d? | 66% → 100% | 269.36d → none |  | resources Gowie [55%] → Gowie [70%] |
| 626 | Code** API ** Review | 2008-05-16 → 2008-02-27 A (-79d) | 2008-05-19 → 2008-02-28 A (-81d) | 0.91d → 0.71d | 0% → 100% | 269.36d → none |  | was named Code Review; resources Gowie [55%] → Gowie [70%] |
| 627 | Available Status (Place Holder) | 2008-05-19 → 2008-02-28 A (-81d) | 2008-05-22 → 2008-03-04 A (-79d) | 3.64d? → 2.86d? | 0% → 100% | 269.36d → none |  | resources Gowie [55%] → Gowie [70%] |
| 628 | **Trace management** |  | 2008-05-15 → 2008-05-13 A (-2d) | 73.5d? → 71.74d? | 31% → 100% | 274.66d → none |  |  |
| 629 | Design Interface | 2008-04-22 A → 2008-03-04 A (-49d) | 2008-04-28 A → 2008-03-06 A (-53d) | 3.64d? → 2.86d? |  |  |  | resources Gowie [55%] → Gowie [70%] |
| 630 | Review interface design with Team leads | 2008-04-28 A → 2008-04-22 A (-6d) | 2008-04-30 A → 2008-04-25 A (-5d) | 1.82d? → 2.86d? |  |  |  | resources Gowie [55%] → Gowie [70%] |
| 631 | Implement Create Trace |  | 2008-05-05 A → 2008-05-01 A (-4d) | 7.27d? → 5.71d? |  |  |  | resources Gowie [55%] → Gowie [70%] |
| 632 | Implement Delete Trace |  | 2008-05-14 A → 2008-05-13 A (-1d) | 7.27d? → 5.71d? |  |  |  | resources Gowie [55%] → Gowie [70%] |
| 633 | Code **API** Review | 2008-05-14 → 2008-05-13 A (-1d) | 2008-05-15 → 2008-05-13 A (-2d) | 0.91d? → 0.71d? | 0% → 100% | 274.66d → none |  | was named Code Review; resources Gowie [55%] → Gowie [70%] |
| 634 | **Data Flow** |  | 2008-02-11 A | 6d? → 5.45d? | 23% → 100% | 342.16d → none |  |  |
| 635 | Understand Signal Flow/Design Data Types |  | 2008-02-11 A | 6d? → 5.45d? | 50% → 100% | 342.16d → none | none → 633 | resources Mike [50%] → Mike [55%] |
| 636 | design data flow through trace management | 2008-02-04 A | 2008-02-07 A | 4d? → 3.64d? | 0% → 100% | 344.16d → none | none → 635 | resources Mike [50%] → Mike [55%] |
| 637 | design state flow with data | 2008-02-04 A | 2008-02-04 A | 0.95d? → 0.83d? | 0% → 100% | 347.2d → none | none → 636 | resources Gowie [55%]; Mike [50%] → Gowie [70%]; Mike [55%] |
| 638 | implement data flow through trace management | 2008-02-04 A | 2008-02-04 A | 1d? → 0.91d? | 0% → 100% | 347.16d → none | none → 637 | resources Gowie [55%]; Mike [50%] → Gowie [70%]; Mike [55%] |
| 639 | implement state flow with data | 2008-02-04 A | 2008-02-04 A | 1d? → 0.91d? | 0% → 100% | 347.16d → none | none → 638 | resources Gowie [55%]; Mike [50%] → Gowie [70%]; Mike [55%] |
| 640 | implement enable trace | 2008-02-04 A | 2008-02-04 → 2008-02-05 A (+1d) | 1d? → 1.3d? | 0% → 100% | 347.16d → none | none → 639 | resources none → Gowie [70%]; Mike [55%] |
| 641 | **Phase 2 Traces** | 2008-02-04 A | 2008-02-06 → 2008-02-25 (+19d) | 3d? → 15.48d? | 0% → 91% | 345.16d → 366.52d |  |  |
| 642 | **Linear Spectrum Trace** | 2008-02-04 A | 2008-02-06 → 2008-02-08 A (+2d) | 3d? → 4.95d? | 0% → 100% | 345.16d → none |  |  |
| 643 | Implement Meas Data Transform | 2008-02-04 A | 2008-02-04 → 2008-02-05 A (+1d) | 0.5d? → 0.45d? | 0% → 100% | 347.66d → none | none → 640 | resources Gowie [50%]; Mike [50%] → Gowie [70%]; Mike [55%] |
| 644 | Implement Availablity Action | 2008-02-04 A | 2008-02-06 A | 3d? → 2.73d? | 0% → 100% | 345.16d → none | none → 643 | resources Gowie [50%]; Mike [50%] → Gowie [70%]; Mike [55%] |
| 645 | Unit testing | 2008-02-04 A | 2008-02-04 → 2008-02-07 A (+3d) | 0.5d? → 0.45d? | 0% → 100% | 347.66d → none | none → 644 | resources Gowie [50%]; Mike [50%] → Gowie [70%]; Mike [55%] |
| 646 | Enhance All Events for this data | 2008-02-04 → 2008-02-07 A (+3d) | 2008-02-05 → 2008-02-08 A (+3d) | 2d? → 1.82d? | 0% → 100% | 346.16d → none | none → 645 | resources Gowie [50%]; Mike [50%] → Gowie [70%]; Mike [55%] |
| 647 | **Cross Power Spectrum Trace** | 2008-02-04 A | 2008-02-04 → 2008-02-13 A (+9d) | 1d? → 7.66d? | 0% → 100% | 347.16d → none |  |  |
| 648 | Implement Meas Data Transform | 2008-02-04 A | 2008-02-04 → 2008-02-11 A (+7d) | 1d? → 1.82d? | 0% → 100% | 347.16d → none | none → 646 | resources none → Gowie [70%]; Mike [55%] |
| 649 | Implement Availablity Action | 2008-02-04 A | 2008-02-04 → 2008-02-12 A (+8d) | 1d? → 1.36d? | 0% → 100% | 347.16d → none | none → 648 | resources none → Gowie [70%]; Mike [55%] |
| 650 | Unit testing | 2008-02-04 A | 2008-02-04 → 2008-02-12 A (+8d) | 1d? → 0.23d? | 0% → 100% | 347.16d → none | none → 649 | resources none → Gowie [70%]; Mike [55%] |
| 651 | Enhance All Events for this data | 2008-02-04 → 2008-02-12 A (+8d) | 2008-02-04 → 2008-02-13 A (+9d) | 1d? → 0.91d? | 0% → 100% | 347.16d → none | none → 650 | resources none → Gowie [70%]; Mike [55%] |
| 652 | **Time Sample Trace** | 2008-02-04 A | 2008-02-04 → 2008-02-06 A (+2d) | 1d? → 2.39d? | 0% → 100% | 347.16d → none |  |  |
| 653 | Implement Meas Data Transform | 2008-02-04 A | 2008-02-04 A | 1d? → 0.91d? | 0% → 100% | 347.16d → none | none → 651 | resources none → Gowie [70%]; Mike [55%] |
| 654 | Implement Availablity Action | 2008-02-04 A | 2008-02-04 → 2008-02-05 A (+1d) | 1d? → 1.36d? | 0% → 100% | 347.16d → none | none → 653 | resources none → Gowie [70%]; Mike [55%] |
| 655 | Unit testing | 2008-02-04 A | 2008-02-04 → 2008-02-05 A (+1d) | 1d? → 0.23d? | 0% → 100% | 347.16d → none | none → 654 | resources none → Gowie [70%]; Mike [55%] |
| 656 | Enhance All Events for this data | 2008-02-04 → 2008-02-05 A (+1d) | 2008-02-04 → 2008-02-06 A (+2d) | 1d? → 0.91d? | 0% → 100% | 347.16d → none | none → 655 | resources none → Gowie [70%]; Mike [55%] |
| 657 | **THD Measurement Value** | 2008-02-04 A | 2008-02-04 → 2008-02-07 (+3d) | 1d? → 3.07d? | 0% → 99% | 347.16d → 378.93d |  |  |

| ID | Task | Start | Finish | Duration | Complete | Total float | Predecessors | Other |
| --- | --- | --- | --- | --- | --- | --- | --- | --- |
| 658 | Implement Measurement Value Transform | 2008-02-04 A | 2008-02-04 → 2008-02-07 A (+3d) | 1d? → 0.91d? | 0% → 100% | 347.16d → none | none → 656 | resources none → Gowie [70%]; Mike [55%] |
| 659 | Implement Availablity Action | 2008-02-04 A | 2008-02-04 → 2008-02-05 A (+1d) | 1d? → 1.36d? | 0% → 100% | 347.16d → none | none → 658 | resources none → Gowie [70%]; Mike [55%] |
| 661 | Enhance All Events for this data | 2008-02-04 → 2008-02-05 A (+1d) | 2008-02-04 → 2008-02-06 A (+2d) | 1d? → 0.91d? | 0% → 100% | 347.16d → none | none → 660 | resources none → Gowie [70%]; Mike [55%] |
| 662 | **Time Band Power Measurement Value** | 2008-02-04 → 2008-02-06 A (+2d) | 2008-02-04 → 2008-02-11 A (+7d) | 1d? → 3.41d? | 0% → 100% | 347.16d → none |  |  |
| 663 | Implement Measurement Value Transform | 2008-02-04 → 2008-02-06 A (+2d) | 2008-02-04 → 2008-02-07 A (+3d) | 1d? → 0.91d? | 0% → 100% | 347.16d → none | none → 661 | resources none → Gowie [70%]; Mike [55%] |
| 664 | Implement Availablity Action | 2008-02-04 → 2008-02-07 A (+3d) | 2008-02-04 → 2008-02-08 A (+4d) | 1d? → 1.36d? | 0% → 100% | 347.16d → none | none → 663 | resources none → Gowie [70%]; Mike [55%] |
| 665 | Unit testing | 2008-02-04 → 2008-02-08 A (+4d) | 2008-02-04 → 2008-02-08 A (+4d) | 1d? → 0.23d? | 0% → 100% | 347.16d → none | none → 664 | resources none → Gowie [70%]; Mike [55%] |
| 666 | Enhance All Events for this data | 2008-02-04 → 2008-02-08 A (+4d) | 2008-02-04 → 2008-02-11 A (+7d) | 1d? → 0.91d? | 0% → 100% | 347.16d → none | none → 665 | resources none → Gowie [70%]; Mike [55%] |
| 667 | **Testing** | 2008-02-04 A | 2008-02-04 → 2008-02-25 (+21d) | 1d? → 15.48d? | 0% → 75% | 347.16d → 366.52d |  |  |
| 669 | Test mode change event for all combinations | 2008-02-04 A | 2008-02-04 → 2008-02-05 A (+1d) | 1d? → 1.82d? | 0% → 100% | 347.16d → none | none → 668 | resources none → Gowie [70%]; Mike [55%] |
| 670 | Test state change event for all combinations | 2008-02-04 A | 2008-02-04 → 2008-02-05 A (+1d) | 1d? → 1.82d? | 0% → 100% | 347.16d → none | none → 669 | resources none → Gowie [70%]; Mike [55%] |
| 671 | Test data available event for all combinations | 2008-02-04 A | 2008-02-04 → 2008-02-05 A (+1d) | 1d? → 1.82d? | 0% → 100% | 347.16d → none | none → 670 | resources none → Gowie [70%]; Mike [55%] |
| 672 | Understand perfomance tools | 2008-02-04 → 2008-02-05 A (+1d) | 2008-02-04 → 2008-02-07 A (+3d) | 1d? → 1.43d? | 0% → 100% | 347.16d → none | none → 671 | resources none → Gowie [70%] |
| 673 | Collect baseline performace | 2008-02-04 → 2008-02-07 (+3d) | 2008-02-04 → 2008-02-12 (+8d) | 1d? → 2.86d? |  | 347.16d → 380.9d | none → 672 | resources none → Gowie [70%] |
| 674 | **Code Review** | 2008-02-04 → 2008-02-12 A (+8d) | 2008-02-04 → 2008-02-13 A (+9d) | 1d? → 1.82d? | 0% → 100% | 347.16d → none |  |  |
| 675 | Code review trace and meas values | 2008-02-04 → 2008-02-12 A (+8d) | 2008-02-04 → 2008-02-13 A (+9d) | 1d? → 0.91d? | 0% → 100% | 347.16d → none | none → 673 | resources none → Gowie [70%]; Mike [55%] |
| 676 | implement changes | 2008-02-04 → 2008-02-13 A (+9d) | 2008-02-04 → 2008-02-13 A (+9d) | 1d? → 0.91d? | 0% → 100% | 347.16d → none | none → 675 | resources none → Gowie [70%]; Mike [55%] |
| 678 | **Phase 3** | 2008-02-04 → 2008-05-27 A (+113d) | 2008-02-04 → 2008-09-10 (+219d) | 1d? → 76.31d? | 0% → 13% | 347.16d → 170.91d | none → 67 | was named Phase 3 traces |
| 687 | **Math** | 2008-02-08 → 2008-06-18 (+131d) | 2008-02-19 → 2008-06-19 (+121d) | 6.71d? → 0.69d? |  | 319.68d → 1.98d | none → 679 |  |
| 691 | Implement Measurement Value Transform | 2008-02-04 → 2008-06-19 (+136d) | 2008-02-04 → 2008-06-19 (+136d) | 1d? → 0.33d? |  | 347.16d → 1.98d |  | resources none → Gowie [75%]; Mike [80%] |
| 692 | Implement Availablity Action | 2008-02-04 → 2008-06-19 (+136d) | 2008-02-04 → 2008-06-23 (+140d) | 1d? → 2d? |  | 347.16d → 16.56d | none → 691 | resources none → Gowie [75%]; Mike [80%] |
| 693 | Unit testing | 2008-02-04 → 2008-06-23 (+140d) | 2008-02-04 → 2008-06-23 (+140d) | 1d? → 0.33d? |  | 347.16d → 16.56d | none → 692 | resources none → Gowie [75%]; Mike [80%] |
| 694 | Enhance All Events for this data | 2008-02-04 → 2008-06-23 (+140d) | 2008-02-04 → 2008-06-25 (+142d) | 1d? → 1.33d? |  | 347.16d → 16.56d | none → 693 | resources none → Gowie [75%]; Mike [80%] |
| 696 | Implement Measurement Value Transform | 2008-02-04 → 2008-06-25 (+142d) | 2008-02-04 → 2008-06-25 (+142d) | 1d? → 0.67d? |  | 347.16d → 16.56d | none → 694 | resources none → Gowie [75%]; Mike [80%] |
| 697 | Implement Availablity Action | 2008-02-04 → 2008-06-25 (+142d) | 2008-02-04 → 2008-06-26 (+143d) |  |  | 347.16d → 16.56d | none → 696 | resources none → Gowie [75%]; Mike [80%] |
| 698 | Unit testing | 2008-02-04 → 2008-06-26 (+143d) | 2008-02-04 → 2008-06-27 (+144d) | 1d? → 0.17d? |  | 347.16d → 16.56d | none → 697 | resources none → Gowie [75%]; Mike [80%] |
| 699 | Enhance All Events for this data | 2008-02-04 → 2008-06-27 (+144d) | 2008-02-04 → 2008-06-27 (+144d) | 1d? → 0.67d? |  | 347.16d → 16.56d | none → 698 | resources none → Gowie [75%]; Mike [80%] |
| 703 | Unit testing | 2008-02-04 → 2008-07-01 (+148d) | 2008-02-04 → 2008-07-01 (+148d) | 1d? → 0.17d? |  | 347.16d → 16.56d | none → 702 | resources none → Gowie [75%]; Mike [80%] |
| 708 | Unit testing | 2008-02-21 → 2008-07-03 (+133d) | 2008-02-28 → 2008-07-04 (+127d) | 4.29d? → 0.17d? |  | 293.29d → 16.56d | Implementation → 707 | resources Himanshu [70%] → Gowie [75%]; Mike [80%] |
| 714 | **Transforms** | 2008-02-06 A → 2008-07-15 A (+160d) | 2008-02-14 → 2008-08-12 (+180d) | 6d? → 20.3d? | 57% → 59% | 339.3d → 184.28d | none → 710 |  |
| 744 | **Unit Conversion** | 2008-02-04 → 2008-08-22 (+200d) | 2008-04-22 → 2008-09-02 (+133d) | 56.43d? → 7.09d? |  | 291.73d → 170.91d | none → 725 |  |
| 745 | Design interface for unit conversion | 2008-02-04 → 2008-08-22 (+200d) | 2008-02-12 → 2008-08-26 (+196d) | 5.71d? → 1.49d? |  | 293.29d → 170.91d |  | resources RKB1 [35%] → Gowie [75%]; Mike [80%] |
| 746 | Review with tech leads | 2008-02-12 → 2008-08-26 (+196d) | 2008-02-14 → 2008-08-26 (+194d) | 1.43d? → 0.37d? |  | 293.29d → 170.91d |  | resources RKB1 [35%] → Gowie [75%]; Mike [80%] |
| 747 | Implementation | 2008-04-24 → 2008-08-26 (+124d) | 2008-04-30 → 2008-08-28 (+120d) | 3.08d? → 1.49d? |  | 8.36d → 170.91d | 200, Design → 746 | resources 1ETW [65%] → Gowie [75%]; Mike [80%] |
| 749 | How unit will ripple down | 2008-02-28 → 2008-09-01 (+186d) | 2008-03-11 → 2008-09-02 (+175d) | 8.57d? → 1.49d? |  | 293.29d → 170.91d | 708 → 748 | resources Himanshu [70%] → Gowie [75%]; Mike [80%] |
| 751 | Test available status for all combinatioins of Meas Data, Meas Value, transducer units, trace coord | 2008-02-04 → 2008-09-02 (+211d) | 2008-02-04 → 2008-09-03 (+212d) | 1d? → 0.67d? |  | 347.16d → 170.91d |  | resources none → Gowie [75%]; Mike [80%] |
| 762 | **Transforms** | 2008-02-04 A → 2008-09-10 (+219d) | 2008-02-12 → 2008-09-17 (+218d) | 6d? → 5.45d? | 29% → 0% | 314.08d → 181.05d | none → 714 |  |
| 850 | **Signal Generation** | 2008-02-04 A → 2008-09-10 (+219d) | 2008-03-31 → 2008-09-15 (+168d) | 40.57d? → 3.08d? | 19% → 0% | 283.19d → 183.43d |  |  |
| 851 | **Noise** | 2008-02-04 → 2008-09-10 (+219d) | 2008-02-07 → 2008-09-15 (+221d) |  |  | 320.68d → 183.43d |  |  |
| 852 | Random | 2008-02-04 → 2008-09-10 (+219d) | 2008-02-04 → 2008-09-11 (+220d) |  |  | 320.68d → 183.43d |  | resources Ramkumar [65%] → Gowie [70%]; Mike [55%] |
| 853 | Pink | 2008-02-04 → 2008-09-11 (+220d) | 2008-02-05 → 2008-09-11 (+219d) |  |  | 320.68d → 183.43d |  | resources Ramkumar [65%] → Gowie [70%]; Mike [55%] |
| 854 | White | 2008-02-05 → 2008-09-11 (+219d) | 2008-02-06 → 2008-09-12 (+219d) |  |  | 320.68d → 183.43d |  | resources Ramkumar [65%] → Gowie [70%]; Mike [55%] |
| 855 | Gaussian | 2008-02-06 → 2008-09-12 (+219d) | 2008-02-07 → 2008-09-15 (+221d) |  |  | 320.68d → 183.43d |  | resources Ramkumar [65%] → Gowie [70%]; Mike [55%] |
| 875 | **Marker Functions** | 2008-02-27 → 2009-01-19 (+327d) | 2008-03-05 → 2009-01-26 (+327d) |  |  | 319.68d → 94.15d | none → 1333 |  |
| 876 | Peak Search | 2008-02-27 → 2009-01-19 (+327d) | 2008-02-28 → 2009-01-20 (+327d) |  |  | 319.68d → 94.15d | 1007 → none |  |
| 877 | Next Largest Peak | 2008-02-28 → 2009-01-20 (+327d) | 2008-02-29 → 2009-01-21 (+327d) |  |  | 319.68d → 94.15d |  |  |
| 878 | Next Peak Right | 2008-02-29 → 2009-01-21 (+327d) | 2008-02-29 → 2009-01-21 (+327d) |  |  | 319.68d → 99.15d |  |  |
| 879 | Next Peak Left | 2008-02-29 → 2009-01-21 (+327d) | 2008-03-03 → 2009-01-22 (+325d) |  |  | 319.68d → 99.15d |  |  |
| 880 | Peak Tracking | 2008-03-03 → 2009-01-22 (+325d) | 2008-03-04 → 2009-01-23 (+325d) |  |  | 319.68d → 99.15d |  |  |
| 881 | Marker to Center | 2008-03-04 → 2009-01-23 (+325d) | 2008-03-05 → 2009-01-26 (+327d) |  |  | 319.68d → 94.15d |  |  |
| 902 | **Filters** | 2008-03-04 → 2009-02-11 (+344d) | 2008-03-13 → 2009-02-19 (+343d) | 7.14d? → 6d? |  | 309.3d → 97.89d |  |  |
| 913 | **Math** | 2008-02-08 → 2009-02-11 (+369d) | 2008-02-20 → 2009-02-16 (+362d) | 8.14d? → 3.2d? |  | 312.4d → 99.89d | none → 687, 1428 |  |
| 914 | Cepstrum | 2008-02-08 → 2009-02-11 (+369d) | 2008-02-12 → 2009-02-11 (+365d) | 0.71d? → 0.4d? |  | 319.68d → 99.89d | 991 → none | resources Kapil [70%] → Gowie [70%]; Mike [55%] |
| 915 | Basic Complex math | 2008-02-12 → 2009-02-11 (+365d) | 2008-02-13 → 2009-02-11 (+364d) | 0.71d? → 0.4d? |  | 319.68d → 99.89d |  | resources Kapil [70%] → Gowie [70%]; Mike [55%] |
| 916 | Hilbert | 2008-02-13 → 2009-02-11 (+364d) | 2008-02-14 → 2009-02-12 (+364d) | 1.43d? → 0.8d? |  | 319.68d → 99.89d |  | resources Kapil [70%] → Gowie [70%]; Mike [55%] |
| 917 | Conversions | 2008-02-14 → 2009-02-12 (+364d) | 2008-02-15 → 2009-02-13 (+364d) | 1.43d? → 0.8d? |  | 319.68d → 99.89d |  | resources Kapil [70%] → Gowie [70%]; Mike [55%] |
| 918 | Differentiation/Integration | 2008-02-15 → 2009-02-13 (+364d) | 2008-02-18 → 2009-02-13 (+361d) | 0.71d? → 0.4d? |  | 319.68d → 99.89d |  | resources Kapil [70%] → Gowie [70%]; Mike [55%] |
| 919 | Statistical (mean,mode…) | 2008-02-18 → 2009-02-13 (+361d) | 2008-02-19 → 2009-02-16 (+363d) | 0.71d? → 0.4d? |  | 319.68d → 104.89d |  | resources Kapil [70%] → Gowie [70%]; Mike [55%] |
| 920 | **Limit lines** | 2008-02-19 → 2009-02-16 (+363d) | 2008-02-20 → 2009-02-17 (+363d) | 1.43d? → 0.8d? |  | 319.68d → 99.89d |  |  |
| 921 | Upper limit | 2008-02-19 → 2009-02-16 (+363d) | 2008-02-20 → 2009-02-16 (+362d) | 0.71d? → 0.4d? |  | 319.68d → 104.89d |  | resources Kapil [70%] → Gowie [70%]; Mike [55%] |
| 922 | Lower limit | 2008-02-20 → 2009-02-16 (+362d) | 2008-02-20 → 2009-02-17 (+363d) | 0.71d? → 0.4d? |  | 319.68d → 99.89d |  | resources Kapil [70%] → Gowie [70%]; Mike [55%] |
| 946 | **Measurement Layer** |  | 2009-04-21 → 2009-07-21 (+91d) | 316.43d? → 382d? | 12% → 21% | 31.73d → 0d |  |  |
| 948 | Review the current design/implementation |  |  |  |  |  | 1024 → none |  |
| 958 | **Unmanaged interface definition** |  | 2008-03-24 → 2008-06-19 (+87d) | 35.85d? → 99d? | 13% → 30% | 312.31d → 283d |  |  |
| 961 | FFT | 2008-02-06 A → 2008-02-04 A (-2d) | 2008-02-07 A → 2008-02-05 A (-2d) | 0.71d? → 1.43d? |  |  | Review with team & Incorporate Review decisions → none |  |
| 962 | STFT | 2008-02-07 → 2008-02-04 (-3d) | 2008-02-08 → 2008-02-05 (-3d) | 0.71d? → 1.43d? |  | 343.87d → 380.57d | 961 → none |  |
| 963 | Windowing | 2008-02-08 A → 2008-02-06 A (-2d) | 2008-02-12 A → 2008-02-07 A (-5d) | 0.71d → 0.71d? |  |  | 962 → 961 |  |
| 964 | Resampling | 2008-02-13 → 2008-02-04 (-9d) | 2008-02-14 → 2008-02-04 (-10d) | 0.71d → 0.71d? |  | 339.3d → 380.57d | Window coeff for IE needs, Managed & Unmanaged → none |  |
| 965 | ZoomFFT | 2008-02-14 → 2008-02-04 (-10d) | 2008-02-14 → 2008-02-05 (-9d) | 0.71d → 0.71d? |  | 339.3d → 380.57d |  |  |
| 966 | **Spectrums** | 2008-02-28 → 2008-02-12 A (-16d) | 2008-03-04 → 2008-02-15 A (-18d) | 2.86d? → 3.08d? | 0% → 100% | 309.3d → none |  |  |

| ID | Task | Start | Finish | Duration | Complete | Total float | Predecessors | Other |
| --- | --- | --- | --- | --- | --- | --- | --- | --- |
| 967 | Linear | 2008-02-28 → 2008-02-12 A (-16d) | 2008-02-29 → 2008-02-12 A (-17d) | 0.71d → 0.77d? | 0% → 100% | 309.3d → none | 1626 → 965 | resources Kapil [70%] → ShashiP [65%] |
| 968 | Power | 2008-02-29 → 2008-02-12 A (-17d) | 2008-03-03 → 2008-02-13 A (-19d) | 0.71d? → 0.77d? | 0% → 100% | 308.58d → none |  | resources Kapil [70%] → ShashiP [65%] |
| 969 | Phase | 2008-03-03 → 2008-02-13 A (-19d) | 2008-03-04 → 2008-02-14 A (-19d) | 0.71d? → 0.77d? | 0% → 100% | 308.58d → none |  | resources Kapil [70%] → ShashiP [65%] |
| 970 | Cross power | 2008-03-04 → 2008-02-14 A (-19d) | 2008-03-04 → 2008-02-15 A (-18d) | 0.71d? → 0.77d? | 0% → 100% | 309.3d → none |  | resources Kapil [70%] → ShashiP [65%] |
| 972 | Weighting filters | 2008-03-04 → 2008-02-15 (-18d) | 2008-03-07 → 2008-02-22 (-14d) | 2.86d? → 5.71d? |  | 309.3d → 361.49d |  |  |
| 973 | CCIR | 2008-03-07 → 2008-02-22 (-14d) | 2008-03-11 → 2008-02-27 (-13d) | 2.14d? → 2.86d? |  | 309.3d → 361.49d |  |  |
| 974 | Low Pass, high pass, band pass, notch | 2008-03-11 → 2008-02-27 (-13d) | 2008-03-13 → 2008-03-03 (-10d) | 2.14d? → 2.86d? |  | 309.3d → 361.49d |  |  |
| 975 | **Distortion** | 2008-03-13 → 2008-03-03 A (-10d) | 2008-03-20 → 2008-06-04 (+76d) | 4.29d? → 67.35d? | 0% → 14% | 309.3d → 291.29d |  |  |
| 976 | THD | 2008-03-13 → 2008-03-03 A (-10d) | 2008-03-14 → 2008-03-04 A (-10d) |  | 0% → 100% | 309.3d → none |  |  |
| 977 | THD + Noise | 2008-03-14 → 2008-06-02 (+80d) | 2008-03-17 → 2008-06-03 (+78d) | 0.71d? → 1.43d? |  | 309.3d → 262.25d | 976 → none | constraint none → start no earlier than 2008-06-02; resources Kapil [70%] → Ramkumar [70%] |
| 978 | SINAD | 2008-03-17 → 2008-06-02 (+77d) | 2008-03-18 → 2008-06-02 (+76d) |  |  | 309.3d → 295.57d | 977 → none | constraint none → start no earlier than 2008-06-02 |
| 979 | ENOB | 2008-03-18 → 2008-06-03 (+77d) | 2008-03-18 → 2008-06-04 (+78d) |  |  | 309.3d → 262.25d | 978 → 977 | resources Kapil [70%] → Ramkumar [70%] |
| 980 | SNR | 2008-03-18 → 2008-06-04 (+78d) | 2008-03-19 → 2008-06-04 (+77d) |  |  | 309.3d → 262.25d |  | resources Kapil [70%] → Ramkumar [70%] |
| 981 | SFDR | 2008-03-19 → 2008-06-02 (+75d) | 2008-03-20 → 2008-06-03 (+75d) |  |  | 309.3d → 284.43d | 980 → 978 |  |
| 982 | Averaging | 2008-03-20 → 2008-03-10 A (-10d) | 2008-03-27 → 2008-03-19 A (-8d) | 4.29d? → 7.14d? | 0% → 100% | 308.3d → none | 981 → none |  |
| 983 | Coherence | 2008-03-27 → 2008-06-03 (+68d) | 2008-03-28 → 2008-06-04 (+68d) |  |  | 308.3d → 284.43d | 982 → 981 |  |
| 984 | **Signal Generation** | 2008-02-04 A → 2008-03-24 A (+49d) | 2008-04-08 → 2008-06-09 (+62d) | 46.61d? → 55.64d? | 8% → 21% | 301.54d → 261.28d |  |  |
| 985 | Sine | 2008-03-28 A → 2008-03-24 A (-4d) | 2008-03-31 A → 2008-03-24 A (-7d) | 0.71d? → 0.77d? |  |  |  | resources Kapil [70%] → Ramkumar [70%] |
| 986 | **Noise** | 2008-02-04 → 2008-06-04 (+121d) | 2008-02-07 → 2008-06-09 (+123d) | 3.08d? → 2.86d? |  | 313.4d → 261.28d |  |  |
| 987 | Random | 2008-02-04 → 2008-06-04 (+121d) | 2008-02-04 → 2008-06-05 (+122d) | 0.77d? → 0.71d? |  | 313.4d → 262.25d | none → 980 | resources Ramkumar [65%] → Ramkumar [70%] |
| 988 | Pink | 2008-02-04 → 2008-06-05 (+122d) | 2008-02-05 → 2008-06-06 (+122d) | 0.77d? → 0.71d? |  | 313.4d → 262.25d |  | resources Ramkumar [65%] → Ramkumar [70%] |
| 989 | White | 2008-02-05 → 2008-06-06 (+122d) | 2008-02-06 → 2008-06-09 (+124d) | 0.77d? → 0.71d? |  | 313.4d → 262.25d |  | resources Ramkumar [65%] → Ramkumar [70%] |
| 990 | Gaussian | 2008-02-06 → 2008-06-09 (+124d) | 2008-02-07 → 2008-06-09 (+123d) | 0.77d? → 0.71d? |  | 313.4d → 261.28d |  | resources Ramkumar [65%] → Ramkumar [70%] |
| 991 | Octave | 2008-02-07 → 2008-02-04 (-3d) | 2008-02-08 → 2008-02-05 (-3d) | 1.54d? → 1.43d? |  | 320.68d → 362.68d | 855 → none | resources Ramkumar [65%] → Ramkumar [70%] |
| 993 | Cepstrum | 2008-02-08 → 2008-02-05 (-3d) | 2008-02-13 → 2008-02-06 (-7d) |  |  | 312.4d → 362.68d | Octave → 991 |  |
| 994 | Basic Complex math | 2008-02-13 → 2008-02-06 (-7d) | 2008-02-14 → 2008-02-08 (-6d) |  |  | 312.4d → 362.68d |  |  |
| 995 | Hilbert | 2008-02-14 → 2008-02-08 (-6d) | 2008-02-15 → 2008-02-12 (-3d) |  |  | 312.4d → 361.68d |  |  |
| 996 | Conversions | 2008-02-15 → 2008-02-12 (-3d) | 2008-02-19 → 2008-02-14 (-5d) |  |  | 312.4d → 361.68d |  |  |
| 997 | Differentiation/Integration | 2008-02-19 → 2008-02-14 (-5d) | 2008-02-20 → 2008-02-14 (-6d) |  |  | 312.4d → 361.68d |  |  |
| 998 | Statistical (mean,mode…) | 2008-02-20 → 2008-02-14 (-6d) | 2008-02-20 → 2008-02-15 (-5d) |  |  | 312.4d → 361.68d |  |  |
| 999 | **Limit lines** | 2008-02-20 → 2008-02-15 (-5d) | 2008-02-22 → 2008-02-19 (-3d) |  |  | 312.4d → 361.68d |  |  |
| 1000 | Upper limit | 2008-02-20 → 2008-02-15 (-5d) | 2008-02-21 → 2008-02-18 (-3d) |  |  | 312.4d → 361.68d |  |  |
| 1001 | Lower limit | 2008-02-21 → 2008-02-18 (-3d) | 2008-02-22 → 2008-02-19 (-3d) |  |  | 312.4d → 361.68d |  |  |
| 1002 | **Swept Sine** | 2008-02-20 → 2008-02-19 (-1d) | 2008-02-27 → 2008-02-26 (-1d) | 5d? → 4.46d? |  | 319.68d → 361.68d |  |  |
| 1003 | Gain, Phase margins | 2008-02-20 → 2008-02-19 (-1d) | 2008-02-21 → 2008-02-20 (-1d) | 0.71d? → 1d? |  | 319.68d → 361.68d | 922 → 1001 | resources Kapil [70%] → Mike [50%] |
| 1004 | Frequency, Damping | 2008-02-21 → 2008-02-20 (-1d) | 2008-02-22 → 2008-02-21 (-1d) | 0.71d? → 1d? |  | 319.68d → 361.68d |  | resources Kapil [70%] → Mike [50%] |
| 1005 | Frequency Response | 2008-02-22 → 2008-02-21 (-1d) | 2008-02-25 → 2008-02-22 (-3d) | 1.43d? → 0.51d? |  | 319.68d → 361.68d |  | resources Kapil [70%] → Kapil [50%]; ShashiP [65%] |
| 1006 | Variance | 2008-02-25 → 2008-02-22 (-3d) | 2008-02-26 → 2008-02-25 (-1d) | 0.71d? → 1d? |  | 319.68d → 361.68d |  | resources Kapil [70%] → Mike [50%] |
| 1007 | Group Delay | 2008-02-26 → 2008-02-25 (-1d) | 2008-02-27 → 2008-02-26 (-1d) | 1.43d? → 0.77d? |  | 319.68d → 361.68d |  | resources Kapil [70%] → Ramkumar [65%] |
| 1008 | **Marker Functions** | 2008-02-29 → 2008-02-26 (-3d) | 2008-03-10 → 2008-03-03 (-7d) | 6d? → 4.29d? |  | 312.4d → 361.68d |  |  |
| 1009 | Peak Search | 2008-02-29 → 2008-02-26 (-3d) | 2008-03-03 → 2008-02-26 (-6d) | 1d? → 0.71d? |  | 312.4d → 361.68d | Group Delay → 1007 | resources Mike [50%] → Kapil [70%] |
| 1010 | Next Largest Peak | 2008-03-03 → 2008-02-26 (-6d) | 2008-03-04 → 2008-02-27 (-6d) | 1d? → 0.71d? |  | 312.4d → 361.68d |  | resources Mike [50%] → Kapil [70%] |
| 1011 | Next Peak Right | 2008-03-04 → 2008-02-27 (-6d) | 2008-03-05 → 2008-02-28 (-6d) | 1d? → 0.71d? |  | 312.4d → 361.68d |  | resources Mike [50%] → Kapil [70%] |
| 1012 | Next Peak Left | 2008-03-05 → 2008-02-28 (-6d) | 2008-03-06 → 2008-02-28 (-7d) | 1d? → 0.71d? |  | 312.4d → 361.68d |  | resources Mike [50%] → Kapil [70%] |
| 1013 | Peak Tracking | 2008-03-06 → 2008-02-28 (-7d) | 2008-03-07 → 2008-02-29 (-7d) | 1d? → 0.71d? |  | 312.4d → 361.68d |  | resources Mike [50%] → Kapil [70%] |
| 1014 | Marker to Center | 2008-03-07 → 2008-02-29 (-7d) | 2008-03-10 → 2008-03-03 (-7d) | 1d? → 0.71d? |  | 312.4d → 361.68d |  | resources Mike [50%] → Kapil [70%] |
| 1015 | Orbit | 2008-03-05 → 2008-06-04 (+91d) | 2008-03-05 → 2008-06-05 (+92d) |  |  | 319.68d → 284.43d | 881 → 983 |  |
| 1016 | **Time measurements** | 2008-03-05 → 2008-06-09 (+96d) | 2008-03-13 → 2008-06-19 (+98d) | 5.71d? → 9d? |  | 319.68d → 283d |  |  |
| 1017 | Delay time function | 2008-03-05 → 2008-06-09 (+96d) | 2008-03-06 → 2008-06-09 (+95d) | 0.71d? → 1d? |  | 319.68d → 283d |  | resources Kapil [70%] → Mike [50%] |
| 1018 | Maximum overshoot | 2008-03-06 → 2008-06-10 (+96d) | 2008-03-07 → 2008-06-10 (+95d) | 0.71d? → 1d? |  | 319.68d → 283d |  | resources Kapil [70%] → Mike [50%] |
| 1019 | Rise time | 2008-03-07 → 2008-06-11 (+96d) | 2008-03-07 → 2008-06-11 (+96d) | 0.71d? → 1d? |  | 319.68d → 283d |  | resources Kapil [70%] → Mike [50%] |
| 1020 | Decay Time | 2008-03-07 → 2008-06-12 (+97d) | 2008-03-10 → 2008-06-13 (+95d) | 0.71d? → 2d? |  | 319.68d → 283d |  | resources Kapil [70%] → Mike [50%] |
| 1021 | Pulse Width | 2008-03-10 → 2008-06-16 (+98d) | 2008-03-11 → 2008-06-16 (+97d) | 0.71d? → 1d? |  | 319.68d → 283d |  | resources Kapil [70%] → Mike [50%] |
| 1022 | Voltage Max | 2008-03-11 → 2008-06-17 (+98d) | 2008-03-12 → 2008-06-17 (+97d) | 0.71d? → 1d? |  | 319.68d → 283d |  | resources Kapil [70%] → Mike [50%] |
| 1023 | Voltage Min | 2008-03-12 → 2008-06-18 (+98d) | 2008-03-12 → 2008-06-18 (+98d) | 0.71d? → 1d? |  | 319.68d → 283d |  | resources Kapil [70%] → Mike [50%] |
| 1024 | Settling time | 2008-03-12 → 2008-06-19 (+99d) | 2008-03-13 → 2008-06-19 (+98d) | 0.71d? → 1d? |  | 319.68d → 283d |  | resources Kapil [70%] → Mike [50%] |
| 1025 | **Research/Implementation** |  | 2009-04-21 → 2009-01-13 (-98d) | 316.43d? → 246.83d? | 2% → 12% | 31.73d → 135.17d |  |  |
| 1048 | **Windowing** |  | 2008-07-16 A |  | 10% → 100% | 189.74d → none |  |  |
| 1050 | Review managed & Native interface definitions | 2008-07-07 A | 2008-07-08 A |  | 0% → 100% | 189.74d → none |  |  |
| 1051 | Write code | 2008-07-08 A | 2008-07-10 A |  | 0% → 100% | 189.74d → none |  |  |
| 1052 | Unit test the code | 2008-07-10 A | 2008-07-10 A |  | 0% → 100% | 189.74d → none |  |  |
| 1053 | **Verifcation** | 2008-07-10 A | 2008-07-15 A |  | 0% → 100% | 189.74d → none |  |  |
| 1054 | Develop the verification code in Matlab | 2008-07-10 A | 2008-07-11 A |  | 0% → 100% | 189.74d → none |  |  |
| 1055 | Define the test input data & pass to ML & MATLAB | 2008-07-11 A | 2008-07-14 A |  | 0% → 100% | 189.74d → none |  |  |
| 1056 | Compare the outputs | 2008-07-14 A | 2008-07-15 A |  | 0% → 100% | 189.74d → none |  |  |
| 1057 | Measure performance & document mesaurements | 2008-07-15 A | 2008-07-15 A |  | 0% → 100% | 189.74d → none |  |  |
| 1058 | Interface definition, code, Nunit , Result & Doc review | 2008-07-15 A | 2008-07-16 A |  | 0% → 100% | 189.74d → none |  |  |
| 1081 | **Spectrums** | 2008-08-13 A → 2008-03-03 A (-163d) | 2008-09-25 → 2008-09-15 (-10d) | 31.18d? → 140.41d? | 3% → 73% | 179.28d → 221.59d |  |  |
| 1082 | **Linear** | 2008-08-13 A | 2008-08-25 A |  | 0% → 100% | 188.74d → none |  |  |
| 1083 | Review meas catalog & update | 2008-08-13 A | 2008-08-14 A |  | 0% → 100% | 189.74d → none |  |  |

| ID | Task | Start | Finish | Duration | Complete | Total float | Predecessors | Other |
| --- | --- | --- | --- | --- | --- | --- | --- | --- |
| 1084 | Review managed & Native interface definitions | 2008-08-14 A | 2008-08-18 A |  | 0% → 100% | 188.74d → none |  |  |
| 1085 | Write code | 2008-08-18 A | 2008-08-18 A |  | 0% → 100% | 188.74d → none |  |  |
| 1086 | Unit test the code | 2008-08-18 A | 2008-08-19 A |  | 0% → 100% | 188.74d → none |  |  |
| 1087 | **Verifcation** | 2008-08-19 A | 2008-08-21 A |  | 0% → 100% | 188.74d → none |  |  |
| 1088 | Develop the verification code in Matlab | 2008-08-19 A | 2008-08-20 A |  | 0% → 100% | 188.74d → none |  |  |
| 1089 | Define the test input data & pass to ML & MATLAB | 2008-08-20 A | 2008-08-20 A |  | 0% → 100% | 188.74d → none |  |  |
| 1090 | Compare the outputs | 2008-08-20 A | 2008-08-21 A |  | 0% → 100% | 188.74d → none |  |  |
| 1091 | Measure performance & document mesaurements | 2008-08-21 A | 2008-08-22 A |  | 0% → 100% | 188.74d → none |  |  |
| 1092 | Interface definition, code, Nunit , Result & Doc review | 2008-08-22 A | 2008-08-25 A |  | 0% → 100% | 188.74d → none |  |  |
| 1093 | **Power** | 2008-08-25 A | 2008-09-02 A |  | 0% → 100% | 188.74d → none |  |  |
| 1094 | Review meas catalog & update | 2008-08-25 A | 2008-08-25 A |  | 0% → 100% | 188.74d → none |  |  |
| 1095 | Review managed & Native interface definitions | 2008-08-25 A | 2008-08-26 A |  | 0% → 100% | 188.74d → none |  |  |
| 1096 | Write code | 2008-08-26 A | 2008-08-27 A |  | 0% → 100% | 188.74d → none |  |  |
| 1097 | Unit test the code | 2008-08-27 A | 2008-08-27 A |  | 0% → 100% | 188.74d → none |  |  |
| 1098 | **Verifcation** | 2008-08-27 A | 2008-09-01 A |  | 0% → 100% | 188.74d → none |  |  |
| 1099 | Develop the verification code in Matlab | 2008-08-27 A | 2008-08-28 A |  | 0% → 100% | 188.74d → none |  |  |
| 1100 | Define the test input data & pass to ML & MATLAB | 2008-08-28 A | 2008-08-29 A |  | 0% → 100% | 188.74d → none |  |  |
| 1101 | Compare the outputs | 2008-08-29 A | 2008-09-01 A |  | 0% → 100% | 188.74d → none |  |  |
| 1102 | Measure performance & document mesaurements | 2008-09-01 A | 2008-09-01 A |  | 0% → 100% | 188.74d → none |  |  |
| 1103 | Interface definition, code, Nunit , Result & Doc review | 2008-09-01 A | 2008-09-02 A |  | 0% → 100% | 188.74d → none |  |  |
| 1115 | **Cross power** | 2008-09-15 A → 2008-03-03 A (-196d) | 2008-09-25 → 2008-03-13 A (-196d) |  | 9% → 100% | 34.12d → none |  |  |
| 1116 | Review meas catalog & update | 2008-09-15 A → 2008-03-03 A (-196d) | 2008-09-16 A → 2008-03-03 A (-197d) |  |  |  | 1114 → none | resources Ramkumar [65%] → ShashiP [70%] |
| 1117 | Review managed & Native interface definitions | 2008-09-16 → 2008-03-03 A (-197d) | 2008-09-16 → 2008-03-04 A (-196d) |  | 0% → 100% | 34.12d → none |  | resources Ramkumar [65%] → ShashiP [70%] |
| 1118 | Write code | 2008-09-16 → 2008-03-04 A (-196d) | 2008-09-18 → 2008-03-06 A (-196d) |  | 0% → 100% | 34.12d → none |  | resources Ramkumar [65%] → ShashiP [70%] |
| 1119 | Unit test the code | 2008-09-18 → 2008-03-06 A (-196d) | 2008-09-19 → 2008-03-06 A (-197d) |  | 0% → 100% | 34.12d → none |  | resources Ramkumar [65%] → ShashiP [70%] |
| 1120 | **Verifcation** | 2008-09-19 → 2008-03-06 A (-197d) | 2008-09-24 → 2008-03-11 A (-197d) |  | 0% → 100% | 34.12d → none |  |  |
| 1121 | Develop the verification code in Matlab | 2008-09-19 → 2008-03-06 A (-197d) | 2008-09-22 → 2008-03-10 A (-196d) |  | 0% → 100% | 34.12d → none |  | resources Ramkumar [65%] → ShashiP [70%] |
| 1122 | Define the test input data & pass to ML & MATLAB | 2008-09-22 → 2008-03-10 A (-196d) | 2008-09-23 → 2008-03-11 A (-196d) |  | 0% → 100% | 34.12d → none |  | resources Ramkumar [65%] → ShashiP [70%] |
| 1123 | Compare the outputs | 2008-09-23 → 2008-03-11 A (-196d) | 2008-09-24 → 2008-03-11 A (-197d) |  | 0% → 100% | 34.12d → none |  | resources Ramkumar [65%] → ShashiP [70%] |
| 1124 | Measure performance & document mesaurements | 2008-09-24 → 2008-03-11 A (-197d) | 2008-09-25 → 2008-03-12 A (-197d) |  | 0% → 100% | 34.12d → none |  | resources Ramkumar [65%] → ShashiP [70%] |
| 1125 | Interface definition, code, Nunit , Result & Doc review | 2008-09-25 → 2008-03-12 A (-197d) | 2008-09-25 → 2008-03-13 A (-196d) |  | 0% → 100% | 34.12d → none |  | resources Ramkumar [65%] → ShashiP [70%] |
| 1126 | **Limit lines** | 2008-09-25 → 2008-03-13 (-196d) | 2008-10-23 → 2008-04-09 (-197d) | 19.86d? → 18.86d? |  | 32.12d → 238.04d |  |  |
| 1127 | Review meas catalog & update | 2008-09-25 → 2008-03-13 (-196d) | 2008-09-26 → 2008-03-14 (-196d) |  |  | 34.12d → 244.04d |  |  |
| 1128 | Review managed & Native interface definitions | 2008-09-26 → 2008-03-14 (-196d) | 2008-09-29 → 2008-03-14 (-199d) |  |  | 34.12d → 239.04d |  |  |
| 1129 | Write code | 2008-09-29 → 2008-03-14 (-199d) | 2008-10-07 → 2008-03-24 (-197d) |  |  | 33.12d → 238.04d |  |  |
| 1130 | Unit test the code | 2008-10-07 → 2008-03-24 (-197d) | 2008-10-10 → 2008-03-27 (-197d) |  |  | 32.12d → 238.04d |  |  |
| 1131 | **Verifcation** | 2008-10-10 → 2008-03-27 (-197d) | 2008-10-16 → 2008-04-01 (-198d) |  |  | 32.12d → 238.04d |  |  |
| 1132 | Develop the verification code in Matlab | 2008-10-10 → 2008-03-27 (-197d) | 2008-10-13 → 2008-03-28 (-199d) |  |  | 32.12d → 238.04d |  |  |
| 1133 | Define the test input data & pass to ML & MATLAB | 2008-10-13 → 2008-03-28 (-199d) | 2008-10-15 → 2008-03-31 (-198d) |  |  | 32.12d → 238.04d |  |  |
| 1134 | Compare the outputs | 2008-10-15 → 2008-03-31 (-198d) | 2008-10-16 → 2008-04-01 (-198d) |  |  | 32.12d → 238.04d |  |  |
| 1135 | Measure performance & document mesaurements | 2008-10-16 → 2008-04-01 (-198d) | 2008-10-16 → 2008-04-02 (-197d) |  |  | 32.12d → 238.04d |  |  |
| 1136 | Interface definition, code, Nunit , Result & Doc review | 2008-10-16 → 2008-04-02 (-197d) | 2008-10-17 → 2008-04-03 (-197d) |  |  | 32.12d → 243.04d |  |  |
| 1137 | Upper limit | 2008-10-17 → 2008-04-03 (-197d) | 2008-10-21 → 2008-04-07 (-197d) |  |  | 32.12d → 238.04d |  |  |
| 1138 | Lower limit | 2008-10-21 → 2008-04-07 (-197d) | 2008-10-23 → 2008-04-09 (-197d) |  |  | 32.12d → 238.04d |  |  |
| 1139 | **Swept Sine** | 2008-10-23 → 2008-04-09 (-197d) | 2008-11-14 → 2008-05-02 (-196d) | 15.29d? → 17.29d? |  | 32.12d → 235.04d |  |  |
| 1140 | Review meas catalog & update | 2008-10-23 → 2008-04-09 (-197d) | 2008-10-24 → 2008-04-10 (-197d) |  |  | 32.12d → 238.04d |  |  |
| 1141 | Review managed & Native interface definitions | 2008-10-24 → 2008-04-10 (-197d) | 2008-10-27 → 2008-04-11 (-199d) |  |  | 33.12d → 238.04d |  |  |
| 1142 | Write code | 2008-10-27 → 2008-04-11 (-199d) | 2008-11-04 → 2008-04-22 (-196d) |  |  | 32.12d → 236.04d |  |  |
| 1143 | Unit test the code | 2008-11-04 → 2008-04-22 (-196d) | 2008-11-07 → 2008-04-24 (-197d) |  |  | 32.12d → 236.04d |  |  |
| 1144 | **Verifcation** | 2008-11-07 → 2008-04-24 (-197d) | 2008-11-12 → 2008-04-30 (-196d) |  |  | 32.12d → 236.04d |  |  |
| 1145 | Develop the verification code in Matlab | 2008-11-07 → 2008-04-24 (-197d) | 2008-11-10 → 2008-04-28 (-196d) |  |  | 32.12d → 236.04d |  |  |
| 1146 | Define the test input data & pass to ML & MATLAB | 2008-11-10 → 2008-04-28 (-196d) | 2008-11-11 → 2008-04-29 (-196d) |  |  | 32.12d → 236.04d |  |  |
| 1147 | Compare the outputs | 2008-11-11 → 2008-04-29 (-196d) | 2008-11-12 → 2008-04-30 (-196d) |  |  | 33.12d → 236.04d |  |  |
| 1148 | Measure performance & document mesaurements | 2008-11-12 → 2008-04-30 (-196d) | 2008-11-13 → 2008-04-30 (-197d) |  |  | 33.12d → 236.04d |  |  |
| 1149 | Interface definition, code, Nunit , Result & Doc review | 2008-11-13 → 2008-04-30 (-197d) | 2008-11-14 → 2008-05-02 (-196d) |  |  | 33.12d → 240.04d |  |  |
| 1150 | **Gain, Phase margins** | 2008-11-14 → 2008-05-02 (-196d) | 2008-12-04 → 2008-05-22 (-196d) |  |  | 33.12d → 235.04d |  |  |
| 1151 | Review meas catalog & update | 2008-11-14 → 2008-05-02 (-196d) | 2008-11-14 → 2008-05-05 (-193d) |  |  | 33.12d → 240.04d |  |  |
| 1152 | Review managed & Native interface definitions | 2008-11-14 → 2008-05-05 (-193d) | 2008-11-18 → 2008-05-06 (-196d) |  |  | 33.12d → 235.04d |  |  |
| 1153 | Write code | 2008-11-18 → 2008-05-06 (-196d) | 2008-11-25 → 2008-05-13 (-196d) |  |  | 33.12d → 235.04d |  |  |
| 1154 | Unit test the code | 2008-11-25 → 2008-05-13 (-196d) | 2008-11-27 → 2008-05-15 (-196d) |  |  | 33.12d → 235.04d |  |  |
| 1155 | **Verifcation** | 2008-11-27 → 2008-05-15 (-196d) | 2008-12-02 → 2008-05-21 (-195d) |  |  | 33.12d → 235.04d |  |  |
| 1156 | Develop the verification code in Matlab | 2008-11-27 → 2008-05-15 (-196d) | 2008-11-28 → 2008-05-19 (-193d) |  |  | 33.12d → 235.04d |  |  |
| 1157 | Define the test input data & pass to ML & MATLAB | 2008-11-28 → 2008-05-19 (-193d) | 2008-12-02 → 2008-05-20 (-196d) |  |  | 33.12d → 235.04d |  |  |
| 1158 | Compare the outputs | 2008-12-02 → 2008-05-20 (-196d) | 2008-12-02 → 2008-05-21 (-195d) |  |  | 33.12d → 235.04d |  |  |
| 1159 | Measure performance & document mesaurements | 2008-12-02 → 2008-05-21 (-195d) | 2008-12-03 → 2008-05-22 (-195d) |  |  | 33.12d → 235.04d |  |  |
| 1160 | Interface definition, code, Nunit , Result & Doc review | 2008-12-03 → 2008-05-22 (-195d) | 2008-12-04 → 2008-05-22 (-196d) |  |  | 33.12d → 240.04d |  |  |
| 1161 | **Frequency, Damping** | 2008-12-04 → 2008-05-22 (-196d) | 2008-12-26 → 2008-06-12 (-197d) | 16.29d? → 14.29d? |  | 31.12d → 235.04d |  |  |
| 1162 | Review meas catalog & update | 2008-12-04 → 2008-05-22 (-196d) | 2008-12-05 → 2008-05-23 (-196d) |  |  | 33.12d → 240.04d |  |  |
| 1163 | Review managed & Native interface definitions | 2008-12-05 → 2008-05-23 (-196d) | 2008-12-08 → 2008-05-27 (-195d) |  |  | 33.12d → 235.04d |  |  |
| 1164 | Write code | 2008-12-08 → 2008-05-27 (-195d) | 2008-12-16 → 2008-06-03 (-196d) |  |  | 32.12d → 235.04d |  |  |

| ID | Task | Start | Finish | Duration | Complete | Total float | Predecessors | Other |
| --- | --- | --- | --- | --- | --- | --- | --- | --- |
| 1165 | Unit test the code | 2008-12-16 → 2008-06-03 (-196d) | 2008-12-18 → 2008-06-05 (-196d) |  |  | 32.12d → 235.04d |  |  |
| 1166 | **Verifcation** | 2008-12-18 → 2008-06-05 (-196d) | 2008-12-24 → 2008-06-10 (-197d) |  |  | 32.12d → 235.04d |  |  |
| 1167 | Develop the verification code in Matlab | 2008-12-18 → 2008-06-05 (-196d) | 2008-12-22 → 2008-06-06 (-199d) |  |  | 32.12d → 235.04d |  |  |
| 1168 | Define the test input data & pass to ML & MATLAB | 2008-12-22 → 2008-06-06 (-199d) | 2008-12-23 → 2008-06-10 (-196d) |  |  | 32.12d → 235.04d |  |  |
| 1169 | Compare the outputs | 2008-12-23 → 2008-06-10 (-196d) | 2008-12-24 → 2008-06-10 (-197d) |  |  | 32.12d → 235.04d |  |  |
| 1170 | Measure performance & document mesaurements | 2008-12-24 → 2008-06-10 (-197d) | 2008-12-24 → 2008-06-11 (-196d) |  |  | 32.12d → 235.04d |  |  |
| 1171 | Interface definition, code, Nunit , Result & Doc review | 2008-12-24 → 2008-06-11 (-196d) | 2008-12-26 → 2008-06-12 (-197d) |  |  | 31.12d → 235.04d |  |  |
| 1172 | **Frequency Response** | 2008-12-26 → 2008-06-02 A (-207d) | 2009-01-23 → 2008-07-08 (-199d) | 20d? → 26.43d? | 0% → 5% | 31.12d → 199.31d |  |  |
| 1173 | Review meas catalog & update | 2008-12-26 → 2008-06-02 A (-207d) | 2008-12-29 → 2008-06-02 (-210d) |  | 0% → 80% | 31.12d → 200.17d | 1171 → none | constraint none → start no earlier than 2008-06-02; resources Kapil [70%] → ShashiP [70%] |
| 1174 | Write code | 2008-12-31 → 2008-06-02 (-212d) | 2009-01-08 → 2008-06-20 (-202d) | 5.71d? → 14.29d? |  | 31.12d → 200.17d | Review managed & Native interface definitions → 1173 | resources Kapil [70%] → ShashiP [70%] |
| 1175 | Unit test the code | 2009-01-08 → 2008-06-23 (-199d) | 2009-01-13 → 2008-06-26 (-201d) |  |  | 31.12d → 205.17d |  | resources Kapil [70%] → ShashiP [70%] |
| 1176 | **Verifcation** | 2009-01-13 → 2008-06-26 A (-201d) | 2009-01-21 → 2008-07-04 (-201d) |  | 0% → 15% | 31.12d → 199.31d |  |  |
| 1177 | Develop the verification code in Matlab | 2009-01-13 → 2008-06-26 A (-201d) | 2009-01-15 → 2008-06-30 (-199d) |  | 0% → 40% | 31.12d → 199.31d |  | resources Kapil [70%] → ShashiP [70%] |
| 1178 | Define the test input data & pass to ML & MATLAB | 2009-01-15 → 2008-06-30 (-199d) | 2009-01-20 → 2008-07-02 (-202d) |  |  | 31.12d → 199.31d |  | resources Kapil [70%] → ShashiP [70%] |
| 1179 | Compare the outputs | 2009-01-20 → 2008-07-02 (-202d) | 2009-01-21 → 2008-07-04 (-201d) |  |  | 31.12d → 199.31d |  | resources Kapil [70%] → ShashiP [70%] |
| 1180 | Measure performance & document mesaurements | 2009-01-21 → 2008-07-04 (-201d) | 2009-01-22 → 2008-07-07 (-199d) |  |  | 31.12d → 199.31d |  | resources Kapil [70%] → ShashiP [70%] |
| 1181 | Interface definition, code, Nunit , Result & Doc review | 2009-01-22 → 2008-07-07 (-199d) | 2009-01-23 → 2008-07-08 (-199d) |  |  | 31.12d → 199.31d |  | resources Kapil [70%] → ShashiP [70%] |
| 1182 | **Variance** | 2009-01-23 → 2008-07-08 (-199d) | 2009-02-10 → 2008-07-23 (-202d) |  |  | 31.12d → 199.31d |  |  |
| 1183 | Review meas catalog & update | 2009-01-23 → 2008-07-08 (-199d) | 2009-01-26 → 2008-07-09 (-201d) |  |  | 31.12d → 204.31d |  |  |
| 1184 | Review managed & Native interface definitions | 2009-01-26 → 2008-07-09 (-201d) | 2009-01-27 → 2008-07-10 (-201d) |  |  | 31.12d → 199.31d |  |  |
| 1185 | Write code | 2009-01-27 → 2008-07-10 (-201d) | 2009-01-29 → 2008-07-14 (-199d) |  |  | 31.12d → 199.31d |  |  |
| 1186 | Unit test the code | 2009-01-29 → 2008-07-14 (-199d) | 2009-02-02 → 2008-07-16 (-201d) |  |  | 31.12d → 199.31d |  |  |
| 1187 | **Verifcation** | 2009-02-02 → 2008-07-16 (-201d) | 2009-02-05 → 2008-07-21 (-199d) |  |  | 31.12d → 199.31d |  |  |
| 1188 | Develop the verification code in Matlab | 2009-02-02 → 2008-07-16 (-201d) | 2009-02-03 → 2008-07-17 (-201d) |  |  | 31.12d → 199.31d |  |  |
| 1189 | Define the test input data & pass to ML & MATLAB | 2009-02-03 → 2008-07-17 (-201d) | 2009-02-05 → 2008-07-21 (-199d) |  |  | 31.12d → 199.31d |  |  |
| 1190 | Compare the outputs | 2009-02-05 → 2008-07-21 (-199d) | 2009-02-05 → 2008-07-21 (-199d) |  |  | 31.12d → 199.31d |  |  |
| 1191 | Measure performance & document mesaurements | 2009-02-05 → 2008-07-21 (-199d) | 2009-02-06 → 2008-07-22 (-199d) |  |  | 31.12d → 199.31d |  |  |
| 1192 | Interface definition, code, Nunit , Result & Doc review | 2009-02-06 → 2008-07-22 (-199d) | 2009-02-10 → 2008-07-23 (-202d) |  |  | 31.12d → 199.31d |  |  |
| 1193 | **Group Delay** | 2009-02-10 → 2008-07-23 (-202d) | 2009-04-21 → 2008-08-13 (-251d) | 50.41d? → 14.29d? |  | 31.12d → 199.31d |  |  |
| 1194 | Review meas catalog & update | 2009-02-10 → 2008-07-23 (-202d) | 2009-02-10 → 2008-07-24 (-201d) |  |  | 31.12d → 199.31d |  |  |
| 1195 | Review managed & Native interface definitions | 2009-02-10 → 2008-07-24 (-201d) | 2009-02-12 → 2008-07-28 (-199d) |  |  | 31.12d → 199.31d |  |  |
| 1196 | Write code | 2009-02-12 → 2008-07-28 (-199d) | 2009-02-18 → 2008-08-01 (-201d) |  |  | 31.12d → 199.31d |  |  |
| 1197 | Unit test the code | 2009-02-18 → 2008-08-01 (-201d) | 2009-02-20 → 2008-08-05 (-199d) |  |  | 31.12d → 199.31d |  |  |
| 1198 | **Verifcation** | 2009-02-20 → 2008-08-05 (-199d) | 2009-02-26 → 2008-08-11 (-199d) |  |  | 31.12d → 199.31d |  |  |
| 1199 | Develop the verification code in Matlab | 2009-02-20 → 2008-08-05 (-199d) | 2009-02-24 → 2008-08-06 (-202d) |  |  | 31.12d → 199.31d |  |  |
| 1200 | Define the test input data & pass to ML & MATLAB | 2009-02-24 → 2008-08-06 (-202d) | 2009-02-25 → 2008-08-08 (-201d) |  |  | 31.12d → 199.31d |  |  |
| 1201 | Compare the outputs | 2009-02-25 → 2008-08-08 (-201d) | 2009-02-26 → 2008-08-11 (-199d) |  |  | 31.12d → 199.31d |  |  |
| 1202 | Measure performance & document mesaurements | 2009-02-26 → 2008-08-11 (-199d) | 2009-02-26 → 2008-08-11 (-199d) |  |  | 31.12d → 199.31d |  |  |
| 1203 | Interface definition, code, Nunit , Result & Doc review | 2009-04-20 → 2008-08-11 (-252d) | 2009-04-21 → 2008-08-13 (-251d) |  |  | 31.73d → 199.31d |  |  |
| 1204 | **Distortion** | 2008-02-27 → 2008-03-03 A (+5d) | 2009-03-20 → 2008-07-21 (-242d) | 277d? → 100.72d? | 0% → 19% | 53.23d → 261.28d |  |  |
| 1205 | **THD** | 2008-08-04 → 2008-03-03 A (-154d) | 2008-08-19 → 2008-03-19 A (-153d) | 11.44d? → 12.44d? | 0% → 100% | 53.42d → none |  |  |
| 1206 | Review meas catalog & update | 2008-08-04 → 2008-03-03 A (-154d) | 2008-08-04 → 2008-03-03 A (-154d) |  | 0% → 100% | 53.42d → none | 1637 → none | resources Kapil [70%] → Kapil70 [70%] |
| 1207 | Review managed & Native interface definitions | 2008-08-04 → 2008-03-03 A (-154d) | 2008-08-04 → 2008-03-03 A (-154d) |  | 0% → 100% | 53.42d → none |  | resources Kapil [70%] → Kapil70 [70%] |
| 1208 | Write code | 2008-08-04 → 2008-03-03 A (-154d) | 2008-08-06 → 2008-03-05 A (-154d) |  | 0% → 100% | 53.42d → none |  | resources Kapil [70%] → Kapil70 [70%] |
| 1209 | Unit test the code | 2008-08-06 → 2008-03-05 A (-154d) | 2008-08-08 → 2008-03-07 A (-154d) |  | 0% → 100% | 53.42d → none |  | resources Kapil [70%] → Kapil70 [70%] |
| 1210 | **Verifcation** | 2008-08-08 → 2008-03-07 A (-154d) | 2008-08-18 → 2008-03-17 A (-154d) | 5.62d? → 6.62d? | 0% → 100% | 53.42d → none |  |  |
| 1211 | Develop the verification code in Matlab | 2008-08-08 → 2008-03-07 A (-154d) | 2008-08-13 → 2008-03-12 A (-154d) |  | 0% → 100% | 53.42d → none |  | resources Ramkumar [65%] → Kapil70 [70%] |
| 1212 | Define the test input data & pass to ML & MATLAB | 2008-08-13 → 2008-03-12 A (-154d) | 2008-08-14 → 2008-03-13 A (-154d) |  | 0% → 100% | 53.42d → none |  | resources Ramkumar [65%] → Kapil70 [70%] |
| 1213 | Compare the outputs | 2008-08-14 → 2008-03-13 A (-154d) | 2008-08-18 → 2008-03-17 A (-154d) | 0.77d? → 2.77d? | 0% → 100% | 53.42d → none |  | resources Ramkumar [65%] → Kapil70 [70%] |
| 1214 | Measure performance & document mesaurements | 2008-08-18 → 2008-03-17 A (-154d) | 2008-08-18 → 2008-03-18 A (-153d) |  | 0% → 100% | 53.42d → none |  | resources Ramkumar [65%] → Kapil70 [70%] |
| 1215 | Interface definition, code, Nunit , Result & Doc review | 2008-08-18 → 2008-03-18 A (-153d) | 2008-08-19 → 2008-03-19 A (-153d) |  | 0% → 100% | 53.42d → none |  | resources Ramkumar [65%] → Kapil70 [70%] |
| 1216 | **THD + Noise** | 2009-02-02 → 2008-06-09 A (-238d) | 2009-03-20 → 2008-06-27 (-266d) | 34.92d? → 13.57d? | 0% → 3% | 52.77d → 261.28d |  |  |
| 1217 | Review meas catalog & update | 2009-02-02 → 2008-06-09 A (-238d) | 2009-02-02 → 2008-06-10 (-237d) | 0.77d? → 0.71d? | 0% → 50% | 52.77d → 261.28d | 1215 → 990 | constraint none → start no earlier than 2008-06-02; resources ShashiP [65%] → Ramkumar [70%] |
| 1218 | Write code | 2009-02-16 → 2008-06-10 (-251d) | 2009-02-23 → 2008-06-17 (-251d) | 5.38d? → 5d? |  | 52.31d → 261.28d | Review managed & Native interface definitions → 1217 | resources ShashiP [65%] → Ramkumar [70%] |
| 1219 | Unit test the code | 2009-02-25 → 2008-06-17 (-253d) | 2009-02-26 → 2008-06-18 (-253d) | 1.54d? → 1.43d? |  | 52.31d → 261.28d |  | resources ShashiP [65%] → Ramkumar [70%] |
| 1220 | **Verifcation** | 2009-03-02 → 2008-06-18 (-257d) | 2009-03-12 → 2008-06-25 (-260d) | 8.62d? → 4.29d? |  | 53.23d → 261.28d |  |  |
| 1221 | Develop the verification code in Matlab | 2009-03-02 → 2008-06-18 (-257d) | 2009-03-05 → 2008-06-23 (-255d) | 3.08d? → 2.86d? |  | 53.23d → 261.28d |  | resources ShashiP [65%] → Ramkumar [70%] |
| 1222 | Define the test input data & pass to ML & MATLAB | 2009-03-05 → 2008-06-23 (-255d) | 2009-03-05 → 2008-06-24 (-254d) | 0.77d? → 0.71d? |  | 53.23d → 261.28d |  | resources ShashiP [65%] → Ramkumar [70%] |
| 1223 | Compare the outputs | 2009-03-11 → 2008-06-24 (-260d) | 2009-03-12 → 2008-06-25 (-260d) | 0.77d? → 0.71d? |  | 53.23d → 261.28d |  | resources ShashiP [65%] → Ramkumar [70%] |
| 1224 | Measure performance & document mesaurements | 2009-03-12 → 2008-06-25 (-260d) | 2009-03-13 → 2008-06-25 (-261d) | 0.77d? → 0.71d? |  | 53.23d → 261.28d |  | resources ShashiP [65%] → Ramkumar [70%] |
| 1225 | Interface definition, code, Nunit , Result & Doc review | 2009-03-19 → 2008-06-25 (-267d) | 2009-03-20 → 2008-06-27 (-266d) | 1.54d? → 1.43d? |  | 53.23d → 261.28d |  | resources ShashiP [65%] → Ramkumar [70%] |
| 1226 | **SINAD** | 2008-02-27 → 2008-06-27 (+121d) | 2008-03-13 → 2008-07-10 (+119d) | 10.77d? → 9.29d? |  | 197.54d → 268.43d |  |  |
| 1227 | Review meas catalog & update | 2008-02-27 → 2008-06-27 (+121d) | 2008-02-28 → 2008-06-30 (+123d) | 0.77d? → 0.71d? |  | 197.54d → 268.43d | 1275 → 1225 | resources ShashiP [65%] → Kapil70 [70%] |
| 1228 | Write code | 2008-02-29 → 2008-06-30 (+122d) | 2008-03-05 → 2008-07-02 (+119d) | 3.08d? → 2.86d? |  | 197.54d → 268.43d | Review managed & Native interface definitions → 1227 | resources ShashiP [65%] → Kapil70 [70%] |
| 1229 | Unit test the code | 2008-03-05 → 2008-07-02 (+119d) | 2008-03-07 → 2008-07-04 (+119d) | 1.54d? → 1.43d? |  | 197.54d → 268.43d |  | resources ShashiP [65%] → Kapil70 [70%] |
| 1230 | **Verifcation** | 2008-03-07 → 2008-07-04 (+119d) | 2008-03-12 → 2008-07-09 (+119d) | 3.08d? → 2.86d? |  | 198.54d → 268.43d |  |  |
| 1231 | Develop the verification code in Matlab | 2008-03-07 → 2008-07-04 (+119d) | 2008-03-10 → 2008-07-07 (+119d) | 1.54d? → 1.43d? |  | 198.54d → 268.43d |  | resources ShashiP [65%] → Kapil70 [70%] |
| 1232 | Define the test input data & pass to ML & MATLAB | 2008-03-10 → 2008-07-07 (+119d) | 2008-03-11 → 2008-07-08 (+119d) | 0.77d? → 0.71d? |  | 198.54d → 268.43d |  | resources ShashiP [65%] → Kapil70 [70%] |
| 1233 | Compare the outputs | 2008-03-11 → 2008-07-08 (+119d) | 2008-03-12 → 2008-07-09 (+119d) | 0.77d? → 0.71d? |  | 198.54d → 268.43d |  | resources ShashiP [65%] → Kapil70 [70%] |
| 1234 | Measure performance & document mesaurements | 2008-03-12 → 2008-07-09 (+119d) | 2008-03-12 → 2008-07-09 (+119d) | 0.77d? → 0.71d? |  | 198.54d → 268.43d |  | resources ShashiP [65%] → Kapil70 [70%] |

| ID | Task | Start | Finish | Duration | Complete | Total float | Predecessors | Other |
| --- | --- | --- | --- | --- | --- | --- | --- | --- |
| 1235 | Interface definition, code, Nunit , Result & Doc review | 2008-03-12 → 2008-07-09 (+119d) | 2008-03-13 → 2008-07-10 (+119d) | 0.77d? → 0.71d? |  | 198.54d → 268.43d |  | resources ShashiP [65%] → Kapil70 [70%] |
| 1236 | **ENOB** | 2008-03-13 → 2008-06-27 (+106d) | 2008-03-28 → 2008-07-09 (+103d) | 11d? → 8.57d? |  | 198.54d → 261.28d |  |  |
| 1237 | Review meas catalog & update | 2008-03-13 → 2008-06-27 (+106d) | 2008-03-14 → 2008-06-30 (+108d) | 0.77d? → 0.71d? |  | 198.54d → 261.28d | 1235 → 1225 | constraint none → start no earlier than 2008-06-09; resources ShashiP [65%] → Ramkumar [70%] |
| 1238 | Write code | 2008-03-17 → 2008-06-30 (+105d) | 2008-03-18 → 2008-07-01 (+105d) | 1.54d? → 1.43d? |  | 198.54d → 261.28d | Review managed & Native interface definitions → 1237 | resources ShashiP [65%] → Ramkumar [70%] |
| 1239 | Unit test the code | 2008-03-18 → 2008-07-01 (+105d) | 2008-03-20 → 2008-07-02 (+104d) | 1.54d? → 1.43d? |  | 198.54d → 261.28d |  | resources ShashiP [65%] → Ramkumar [70%] |
| 1240 | **Verifcation** | 2008-03-20 → 2008-07-02 (+104d) | 2008-03-26 → 2008-07-07 (+103d) | 4.08d? → 2.86d? |  | 198.54d → 261.28d |  |  |
| 1241 | Develop the verification code in Matlab | 2008-03-20 → 2008-07-02 (+104d) | 2008-03-24 → 2008-07-04 (+102d) | 1.54d? → 1.43d? |  | 198.54d → 261.28d |  | resources ShashiP [65%] → Ramkumar [70%] |
| 1242 | Define the test input data & pass to ML & MATLAB | 2008-03-24 → 2008-07-04 (+102d) | 2008-03-25 → 2008-07-07 (+104d) | 0.77d? → 0.71d? |  | 198.54d → 261.28d |  | resources ShashiP [65%] → Ramkumar [70%] |
| 1243 | Compare the outputs | 2008-03-25 → 2008-07-07 (+104d) | 2008-03-26 → 2008-07-07 (+103d) | 0.77d? → 0.71d? |  | 198.54d → 261.28d |  | resources ShashiP [65%] → Ramkumar [70%] |
| 1244 | Measure performance & document mesaurements | 2008-03-26 → 2008-07-07 (+103d) | 2008-03-27 → 2008-07-08 (+103d) | 0.77d? → 0.71d? |  | 198.54d → 261.28d |  | resources ShashiP [65%] → Ramkumar [70%] |
| 1245 | Interface definition, code, Nunit , Result & Doc review | 2008-03-27 → 2008-07-08 (+103d) | 2008-03-28 → 2008-07-09 (+103d) | 1.54d? → 1.43d? |  | 198.54d → 261.28d |  | resources ShashiP [65%] → Ramkumar [70%] |
| 1246 | **SNR** | 2008-03-28 → 2008-07-09 (+103d) | 2008-04-10 → 2008-07-21 (+102d) | 9.23d? → 7.86d? |  | 198.54d → 261.28d |  |  |
| 1247 | Review meas catalog & update | 2008-03-28 → 2008-07-09 (+103d) | 2008-03-31 → 2008-07-10 (+101d) | 0.77d? → 0.71d? |  | 198.54d → 261.28d |  | resources ShashiP [65%] → Ramkumar [70%] |
| 1248 | Write code | 2008-04-01 → 2008-07-10 (+100d) | 2008-04-02 → 2008-07-14 (+103d) | 1.54d? → 1.43d? |  | 198.54d → 261.28d | Review managed & Native interface definitions → 1247 | resources ShashiP [65%] → Ramkumar [70%] |
| 1249 | Unit test the code | 2008-04-02 → 2008-07-14 (+103d) | 2008-04-04 → 2008-07-15 (+102d) | 1.54d? → 1.43d? |  | 198.54d → 261.28d |  | resources ShashiP [65%] → Ramkumar [70%] |
| 1250 | **Verifcation** | 2008-04-04 → 2008-07-15 (+102d) | 2008-04-09 → 2008-07-18 (+100d) | 3.08d? → 2.86d? |  | 198.54d → 261.28d |  |  |
| 1251 | Develop the verification code in Matlab | 2008-04-04 → 2008-07-15 (+102d) | 2008-04-07 → 2008-07-16 (+100d) | 1.54d? → 1.43d? |  | 198.54d → 261.28d |  | resources ShashiP [65%] → Ramkumar [70%] |
| 1252 | Define the test input data & pass to ML & MATLAB | 2008-04-07 → 2008-07-16 (+100d) | 2008-04-08 → 2008-07-17 (+100d) | 0.77d? → 0.71d? |  | 198.54d → 261.28d |  | resources ShashiP [65%] → Ramkumar [70%] |
| 1253 | Compare the outputs | 2008-04-08 → 2008-07-17 (+100d) | 2008-04-09 → 2008-07-18 (+100d) | 0.77d? → 0.71d? |  | 198.54d → 261.28d |  | resources ShashiP [65%] → Ramkumar [70%] |
| 1254 | Measure performance & document mesaurements | 2008-04-09 → 2008-07-18 (+100d) | 2008-04-10 → 2008-07-21 (+102d) | 0.77d? → 0.71d? |  | 198.54d → 261.28d |  | resources ShashiP [65%] → Ramkumar [70%] |
| 1255 | Interface definition, code, Nunit , Result & Doc review | 2008-04-10 → 2008-07-21 (+102d) | 2008-04-10 → 2008-07-21 (+102d) | 0.77d? → 0.71d? |  | 198.54d → 261.28d |  | resources ShashiP [65%] → Ramkumar [70%] |
| 1256 | **SFDR** | 2008-04-10 → 2008-06-13 (+64d) | 2008-04-29 → 2008-07-07 (+69d) | 12.77d? → 16.25d? |  | 196.54d → 181.18d |  |  |
| 1257 | Review meas catalog & update | 2008-04-10 → 2008-06-13 (+64d) | 2008-04-11 → 2008-06-16 (+66d) | 0.77d? → 1.25d? |  | 198.54d → 181.18d | 1255 → 1275 | constraint none → start no earlier than 2008-06-10; resources ShashiP [65%] → Kapil [40%] |
| 1258 | Write code | 2008-04-15 → 2008-06-16 (+62d) | 2008-04-21 → 2008-06-23 (+63d) | 3.08d? → 5d? |  | 196.54d → 181.18d | Review managed & Native interface definitions → 1257 | resources ShashiP [65%] → Kapil [40%] |
| 1259 | Unit test the code | 2008-04-21 → 2008-06-23 (+63d) | 2008-04-23 → 2008-06-26 (+64d) | 1.54d? → 2.5d? |  | 196.54d → 181.18d |  | resources ShashiP [65%] → Kapil [40%] |
| 1260 | **Verifcation** | 2008-04-23 → 2008-06-26 (+64d) | 2008-04-28 → 2008-07-03 (+66d) | 3.08d? → 5d? |  | 196.54d → 181.18d |  |  |
| 1261 | Develop the verification code in Matlab | 2008-04-23 → 2008-06-26 (+64d) | 2008-04-24 → 2008-06-30 (+67d) | 1.54d? → 2.5d? |  | 196.54d → 181.18d |  | resources ShashiP [65%] → Kapil [40%] |
| 1262 | Define the test input data & pass to ML & MATLAB | 2008-04-24 → 2008-06-30 (+67d) | 2008-04-25 → 2008-07-02 (+68d) | 0.77d? → 1.25d? |  | 196.54d → 181.18d |  | resources ShashiP [65%] → Kapil [40%] |
| 1263 | Compare the outputs | 2008-04-25 → 2008-07-02 (+68d) | 2008-04-28 → 2008-07-03 (+66d) | 0.77d? → 1.25d? |  | 196.54d → 181.18d |  | resources ShashiP [65%] → Kapil [40%] |
| 1264 | Measure performance & document mesaurements | 2008-04-28 → 2008-07-03 (+66d) | 2008-04-28 → 2008-07-04 (+67d) | 0.77d? → 1.25d? |  | 196.54d → 181.18d |  | resources ShashiP [65%] → Kapil [40%] |
| 1265 | Interface definition, code, Nunit , Result & Doc review | 2008-04-28 → 2008-07-04 (+67d) | 2008-04-29 → 2008-07-07 (+69d) | 0.77d? → 1.25d? |  | 196.54d → 181.18d |  | resources ShashiP [65%] → Kapil [40%] |
| 1266 | **Averaging** | 2008-02-04 → 2008-06-02 (+119d) | 2008-02-27 → 2008-06-13 (+107d) | 17.92d? → 9.64d? |  | 44.08d → 0d |  |  |
| 1267 | Review meas catalog & update | 2008-02-04 → 2008-06-02 (+119d) | 2008-02-05 → 2008-06-02 (+118d) | 1.54d? → 0.36d? |  | 44.08d → 0d |  | constraint none → start no earlier than 2008-06-02; resources ShashiP [65%] → Kapil70 [70%] |
| 1268 | Write code | 2008-02-06 → 2008-06-02 (+117d) | 2008-02-13 → 2008-06-04 (+112d) | 4.62d? → 2.14d? |  | 44.08d → 0d | Review managed & Native interface definitions → 1267 | resources ShashiP [65%] → Kapil70 [70%] |
| 1269 | Unit test the code | 2008-02-13 → 2008-06-04 (+112d) | 2008-02-15 → 2008-06-05 (+111d) | 1.54d? → 1.43d? |  | 44.08d → 0d |  | resources ShashiP [65%] → Kapil70 [70%] |
| 1270 | **Verifcation** | 2008-02-15 → 2008-06-05 (+111d) | 2008-02-25 → 2008-06-11 (+107d) | 6.15d? → 3.57d? |  | 44.08d → 0d |  |  |
| 1271 | Develop the verification code in Matlab | 2008-02-15 → 2008-06-05 (+111d) | 2008-02-22 → 2008-06-10 (+109d) | 4.62d? → 2.14d? |  | 44.08d → 0d |  | resources ShashiP [65%] → Kapil70 [70%] |
| 1272 | Define the test input data & pass to ML & MATLAB | 2008-02-22 → 2008-06-10 (+109d) | 2008-02-22 → 2008-06-10 (+109d) | 0.77d? → 0.71d? |  | 45.08d → 0d |  | resources ShashiP [65%] → Kapil70 [70%] |
| 1273 | Compare the outputs | 2008-02-22 → 2008-06-10 (+109d) | 2008-02-25 → 2008-06-11 (+107d) | 0.77d? → 0.71d? |  | 45.08d → 0d |  | resources ShashiP [65%] → Kapil70 [70%] |
| 1274 | Measure performance & document mesaurements | 2008-02-25 → 2008-06-11 (+107d) | 2008-02-26 → 2008-06-12 (+107d) | 0.77d? → 0.71d? |  | 45.08d → 0d |  | resources ShashiP [65%] → Kapil70 [70%] |
| 1275 | Interface definition, code, Nunit , Result & Doc review | 2008-02-26 → 2008-06-12 (+107d) | 2008-02-27 → 2008-06-13 (+107d) | 1.54d? → 1.43d? |  | 45.08d → 0d |  | resources ShashiP [65%] → Kapil70 [70%] |
| 1277 | **Sine** |  | 2008-02-14 A |  | 45% → 100% | 339.47d → none |  |  |
| 1282 | **Verifcation** | 2008-02-07 A | 2008-02-13 A |  | 0% → 100% | 339.85d → none |  |  |
| 1283 | Develop the verification code in Matlab | 2008-02-07 A | 2008-02-08 A |  | 0% → 100% | 340.85d → none |  |  |
| 1284 | Define the test input data & pass to ML & MATLAB | 2008-02-08 A | 2008-02-12 A |  | 0% → 100% | 339.85d → none |  |  |
| 1285 | Compare the outputs | 2008-02-12 A | 2008-02-13 A |  | 0% → 100% | 339.85d → none |  |  |
| 1286 | Measure performance & document mesaurements | 2008-02-13 A | 2008-02-13 A |  | 0% → 100% | 339.85d → none |  |  |
| 1287 | Interface definition, code, Nunit , Result & Doc review |  | 2008-02-14 A |  | 50% → 100% | 339.47d → none |  |  |
| 1288 | **Noise** |  | 2008-04-08 → 2008-05-02 (+24d) | 46.61d? → 64d? | 2% → 33% | 57.62d → 317.23d |  |  |
| 1289 | **Random** |  | 2008-02-18 → 2008-05-02 (+74d) | 10.23d? → 64d? | 8% → 59% | 58.62d → 317.23d |  |  |
| 1290 | Review meas catalog & update | 2008-02-04 A → 2008-05-01 A (+87d) | 2008-02-04 A → 2008-05-02 A (+88d) |  |  |  |  | resources Ramkumar [65%] → Ramkumar [70%] |
| 1291 | Review managed & Native interface definitions | 2008-02-04 A | 2008-02-05 A |  | 0% → 100% | 58.62d → none |  | resources Ramkumar [65%] → Ramkumar [70%] |
| 1292 | Write code | 2008-02-05 A | 2008-02-06 A | 0.77d? → 0.71d? | 0% → 100% | 58.62d → none |  | resources Ramkumar [65%] → Ramkumar [70%] |
| 1293 | Unit test the code |  | 2008-02-07 → 2008-02-06 (-1d) | 0.77d? → 0.71d? |  | 58.62d → 379.03d |  | resources Ramkumar [65%] → Ramkumar [70%] |
| 1294 | **Verifcation** | 2008-02-07 → 2008-02-06 A (-1d) |  | 5.62d? → 5.29d? | 0% → 67% | 58.62d → 372.32d |  |  |
| 1295 | Develop the verification code in Matlab | 2008-02-07 → 2008-02-06 A (-1d) | 2008-02-13 → 2008-02-12 A (-1d) | 3.08d? → 2.86d? | 0% → 100% | 58.62d → none |  | resources Ramkumar [65%] → Ramkumar [70%] |
| 1296 | Define the test input data & pass to ML & MATLAB | 2008-02-13 → 2008-02-12 (-1d) |  | 0.77d? → 0.71d? |  | 58.62d → 372.32d |  | resources Ramkumar [65%] → Ramkumar [70%] |
| 1297 | Compare the outputs |  |  | 0.77d? → 0.71d? |  | 58.62d → 372.32d |  | resources Ramkumar [65%] → Ramkumar [70%] |
| 1298 | Measure performance & document mesaurements |  | 2008-02-15 → 2008-02-14 (-1d) | 0.77d? → 0.71d? |  | 58.62d → 372.32d |  | resources Ramkumar [65%] → Ramkumar [70%] |
| 1299 | Interface definition, code, Nunit , Result & Doc review | 2008-02-15 → 2008-02-14 (-1d) | 2008-02-18 → 2008-02-15 (-3d) | 0.77d? → 0.71d? |  | 58.62d → 372.32d |  | resources Ramkumar [65%] → Ramkumar [70%] |
| 1300 | **Pink** | 2008-02-18 → 2008-02-15 A (-3d) | 2008-03-06 → 2008-03-05 (-1d) |  | 0% → 12% | 58.62d → 359.24d |  |  |
| 1301 | Review meas catalog & update | 2008-02-18 → 2008-02-15 A (-3d) | 2008-02-18 A |  | 0% → 100% | 58.62d → none |  |  |
| 1302 | Review managed & Native interface definitions | 2008-02-18 A | 2008-02-19 A |  | 0% → 100% | 58.62d → none |  |  |
| 1304 | Unit test the code |  | 2008-02-26 → 2008-02-25 (-1d) |  |  | 58.62d → 359.24d |  |  |
| 1305 | **Verifcation** | 2008-02-26 → 2008-02-25 (-1d) |  |  |  | 58.62d → 359.24d |  |  |
| 1306 | Develop the verification code in Matlab | 2008-02-26 → 2008-02-25 (-1d) | 2008-02-29 → 2008-02-28 (-1d) |  |  | 58.62d → 359.24d |  |  |
| 1307 | Define the test input data & pass to ML & MATLAB | 2008-02-29 → 2008-02-28 (-1d) | 2008-03-03 → 2008-02-29 (-3d) |  |  | 58.62d → 359.24d |  |  |
| 1308 | Compare the outputs | 2008-03-03 → 2008-02-29 (-3d) |  |  |  | 58.62d → 359.24d |  |  |
| 1310 | Interface definition, code, Nunit , Result & Doc review |  | 2008-03-06 → 2008-03-05 (-1d) |  |  | 58.62d → 359.24d |  |  |
| 1311 | **White** | 2008-03-06 → 2008-03-05 A (-1d) | 2008-03-24 → 2008-03-20 (-4d) | 11.77d? → 10.77d? | 0% → 29% | 57.62d → 348.47d |  |  |

| ID | Task | Start | Finish | Duration | Complete | Total float |
| --- | --- | --- | --- | --- | --- | --- |
| 1312 | Review meas catalog & update | 2008-03-06 → 2008-03-05 A (-1d) | 2008-03-07 → 2008-03-06 A (-1d) |  | 0% → 100% | 58.62d → none |
| 1313 | Review managed & Native interface definitions | 2008-03-07 → 2008-03-06 A (-1d) | 2008-03-07 A |  | 0% → 100% | 58.62d → none |
| 1314 | Write code | 2008-03-07 A | 2008-03-11 → 2008-03-10 A (-1d) |  | 0% → 100% | 58.62d → none |
| 1315 | Unit test the code | 2008-03-11 → 2008-03-10 (-1d) |  |  |  | 58.62d → 348.47d |
| 1316 | **Verifcation** |  | 2008-03-19 → 2008-03-18 (-1d) |  |  | 58.62d → 348.47d |
| 1319 | Compare the outputs |  | 2008-03-19 → 2008-03-18 (-1d) |  |  | 58.62d → 348.47d |
| 1320 | Measure performance & document mesaurements | 2008-03-19 → 2008-03-18 (-1d) | 2008-03-20 → 2008-03-19 (-1d) |  |  | 58.62d → 348.47d |
| 1321 | Interface definition, code, Nunit , Result & Doc review | 2008-03-20 → 2008-03-19 (-1d) | 2008-03-24 → 2008-03-20 (-4d) |  |  | 57.62d → 348.47d |
| 1322 | **Gaussian** | 2008-03-24 → 2008-03-20 A (-4d) |  | 11.54d? → 12.54d? | 0% → 40% | 57.62d → 98.01d |
| 1323 | Review meas catalog & update | 2008-03-24 → 2008-03-20 A (-4d) | 2008-03-24 A |  | 0% → 100% | 57.62d → none |
| 1324 | Review managed & Native interface definitions | 2008-03-24 A | 2008-03-25 A |  | 0% → 100% | 57.62d → none |
| 1325 | Write code | 2008-03-25 A | 2008-03-28 A |  | 0% → 100% | 57.62d → none |
| 1326 | Unit test the code |  | 2008-03-31 → 2008-03-28 (-3d) |  |  | 57.62d → 97.01d |
| 1327 | **Verifcation** | 2008-03-31 → 2008-03-28 (-3d) | 2008-04-07 → 2008-04-04 (-3d) |  |  | 57.62d → 92.01d |
| 1328 | Develop the verification code in Matlab | 2008-03-31 → 2008-03-28 (-3d) | 2008-04-03 → 2008-04-02 (-1d) |  |  | 57.62d → 97.01d |
| 1329 | Define the test input data & pass to ML & MATLAB | 2008-04-03 → 2008-04-02 (-1d) | 2008-04-04 → 2008-04-03 (-1d) |  |  | 57.62d → 98.01d |
| 1330 | Compare the outputs | 2008-04-04 → 2008-04-03 (-1d) | 2008-04-07 → 2008-04-04 (-3d) |  |  | 57.62d → 98.01d |
| 1331 | Measure performance & document mesaurements | 2008-04-07 → 2008-04-04 (-3d) |  |  |  | 57.62d → 98.01d |
| 1333 | **Marker Functions** | 2008-08-28 → 2008-08-27 (-1d) |  |  |  | 57.62d → 94.01d |
| 1334 | Review meas catalog & update | 2008-08-28 → 2008-08-27 (-1d) | 2008-08-29 → 2008-08-28 (-1d) |  |  | 58.62d → 95.01d |
| 1335 | Review managed & Native interface definitions | 2008-08-29 → 2008-08-28 (-1d) |  |  |  | 58.62d → 95.01d |
| 1338 | **Verifcation** |  | 2008-09-15 → 2008-09-12 (-3d) |  |  | 57.62d → 94.01d |
| 1339 | Develop the verification code in Matlab |  | 2008-09-11 → 2008-09-10 (-1d) |  |  | 57.62d → 94.01d |
| 1340 | Define the test input data & pass to ML & MATLAB | 2008-09-11 → 2008-09-10 (-1d) | 2008-09-12 → 2008-09-11 (-1d) |  |  | 57.62d → 94.01d |
| 1341 | Compare the outputs | 2008-09-12 → 2008-09-11 (-1d) | 2008-09-15 → 2008-09-12 (-3d) |  |  | 57.62d → 94.01d |
| 1342 | Measure performance & document mesaurements | 2008-09-15 → 2008-09-12 (-3d) |  |  |  | 57.62d → 94.01d |
| 1345 | Research & Investigation |  | 2008-09-26 → 2008-09-25 (-1d) |  |  | 57.62d → 99.01d |
| 1346 | Review meas catalog & update | 2008-09-26 → 2008-09-25 (-1d) |  |  |  | 58.62d → 94.01d |
| 1347 | Review managed & Native interface definitions |  | 2008-10-01 → 2008-09-30 (-1d) |  |  | 58.62d → 94.01d |
| 1348 | Overall interface structure for Octave | 2008-10-01 → 2008-09-30 (-1d) | 2008-10-08 → 2008-10-07 (-1d) |  |  | 58.62d → 93.01d |
| 1349 | Octave band filter Design | 2008-10-08 → 2008-10-07 (-1d) | 2008-10-22 → 2008-10-21 (-1d) |  |  | 57.62d → 92.01d |
| 1350 | Filtering Operation | 2008-10-22 → 2008-10-21 (-1d) |  |  |  | 56.62d → 91.01d |
| 1351 | Averaging Operation and Octave band power estimation |  | 2008-11-20 → 2008-11-19 (-1d) |  |  | 56.62d → 91.01d |
| 1352 | Weighting Filter Operation | 2008-11-20 → 2008-11-19 (-1d) | 2008-11-25 → 2008-11-24 (-1d) |  |  | 56.62d → 91.01d |
| 1353 | Write code | 2008-11-25 → 2008-11-24 (-1d) | 2008-12-05 → 2008-12-04 (-1d) |  |  | 56.62d → 91.01d |
| 1354 | Unit test the code | 2008-12-05 → 2008-12-04 (-1d) | 2008-12-12 → 2008-12-11 (-1d) |  |  | 55.62d → 90.01d |
| 1355 | **Verifcation** | 2008-12-12 → 2008-12-11 (-1d) |  |  |  | 55.62d → 90.01d |
| 1356 | Develop the verification code in Matlab | 2008-12-12 → 2008-12-11 (-1d) |  |  |  | 55.62d → 90.01d |
| 1357 | Define the test input data & pass to ML & MATLAB |  | 2008-12-17 → 2008-12-16 (-1d) |  |  | 55.62d → 90.01d |
| 1358 | Compare the outputs | 2008-12-17 → 2008-12-16 (-1d) |  |  |  | 55.62d → 90.01d |
| 1359 | Measure performance & document mesaurements |  | 2008-12-22 → 2008-12-19 (-3d) |  |  | 55.62d → 90.01d |
| 1360 | Interface definition, code, Nunit , Result & Doc review | 2008-12-22 → 2008-12-19 (-3d) |  |  |  | 55.62d → 90.01d |
| 1361 | **Orbit** |  | 2009-01-14 → 2009-01-13 (-1d) |  |  | 54.62d → 89.01d |
| 1362 | Review meas catalog & update |  | 2008-12-24 → 2008-12-23 (-1d) |  |  | 55.62d → 90.01d |
| 1363 | Review managed & Native interface definitions | 2008-12-24 → 2008-12-23 (-1d) | 2008-12-26 → 2008-12-24 (-2d) |  |  | 54.62d → 90.01d |
| 1364 | Write code | 2008-12-26 → 2008-12-24 (-2d) |  |  |  | 54.62d → 89.01d |
| 1366 | **Verifcation** |  | 2009-01-09 → 2009-01-08 (-1d) |  |  | 54.62d → 89.01d |
| 1368 | Define the test input data & pass to ML & MATLAB |  | 2009-01-08 → 2009-01-07 (-1d) |  |  | 54.62d → 89.01d |
| 1369 | Compare the outputs | 2009-01-08 → 2009-01-07 (-1d) | 2009-01-09 → 2009-01-08 (-1d) |  |  | 54.62d → 89.01d |
| 1370 | Measure performance & document mesaurements | 2009-01-09 → 2009-01-08 (-1d) |  |  |  | 54.62d → 89.01d |
| 1371 | Interface definition, code, Nunit , Result & Doc review |  | 2009-01-14 → 2009-01-13 (-1d) |  |  | 54.62d → 89.01d |
| 1372 | **Filters** | 2008-04-29 → 2008-07-07 (+69d) | 2008-09-05 → 2008-11-17 (+73d) | 92.92d? → 94.92d? |  | 193.54d → 176.18d |
| 1373 | **Weighting filters for octave analysis A- weighting filter + B-weigghting filter +C- weighting filter** | 2008-04-29 → 2008-07-07 (+69d) | 2008-05-23 → 2008-07-30 (+68d) | 17.92d? → 16.92d? |  | 195.54d → 181.18d |
| 1374 | Review meas catalog & update | 2008-04-29 → 2008-07-07 (+69d) | 2008-04-30 → 2008-07-08 (+69d) |  |  | 196.54d → 181.18d |
| 1375 | Review managed & Native interface definitions | 2008-04-30 → 2008-07-08 (+69d) | 2008-05-02 → 2008-07-10 (+69d) |  |  | 195.54d → 181.18d |
| 1376 | Write code | 2008-05-02 → 2008-07-10 (+69d) | 2008-05-13 → 2008-07-21 (+69d) |  |  | 195.54d → 181.18d |
| 1377 | Unit test the code | 2008-05-13 → 2008-07-21 (+69d) | 2008-05-15 → 2008-07-22 (+68d) |  |  | 195.54d → 181.18d |
| 1378 | **Verifcation** | 2008-05-15 → 2008-07-22 (+68d) | 2008-05-21 → 2008-07-28 (+68d) |  |  | 195.54d → 181.18d |
| 1379 | Develop the verification code in Matlab | 2008-05-15 → 2008-07-22 (+68d) | 2008-05-16 → 2008-07-24 (+69d) |  |  | 195.54d → 181.18d |
| 1380 | Define the test input data & pass to ML & MATLAB | 2008-05-16 → 2008-07-24 (+69d) | 2008-05-20 → 2008-07-25 (+66d) |  |  | 195.54d → 181.18d |
| 1381 | Compare the outputs | 2008-05-20 → 2008-07-25 (+66d) | 2008-05-21 → 2008-07-28 (+68d) |  |  | 195.54d → 181.18d |
| 1382 | Measure performance & document mesaurements | 2008-05-21 → 2008-07-28 (+68d) | 2008-05-22 → 2008-07-29 (+68d) |  |  | 195.54d → 181.18d |
| 1383 | Interface definition, code, Nunit , Result & Doc review | 2008-05-22 → 2008-07-29 (+68d) | 2008-05-23 → 2008-07-30 (+68d) |  |  | 195.54d → 181.18d |
| 1384 | **General Weighting filters (A+B+C-weighting filter)** | 2008-05-23 → 2008-07-30 (+68d) | 2008-06-18 → 2008-08-26 (+69d) | 17.92d? → 18.92d? |  | 195.54d → 180.18d |
| 1385 | Review meas catalog & update | 2008-05-23 → 2008-07-30 (+68d) | 2008-05-27 → 2008-08-01 (+66d) |  |  | 195.54d → 181.18d |
| 1386 | Review managed & Native interface definitions | 2008-05-27 → 2008-08-01 (+66d) | 2008-05-28 → 2008-08-04 (+68d) |  |  | 195.54d → 181.18d |
| 1387 | Write code | 2008-05-28 → 2008-08-04 (+68d) | 2008-06-09 → 2008-08-14 (+66d) |  |  | 195.54d → 181.18d |
| 1388 | Unit test the code | 2008-06-09 → 2008-08-14 (+66d) | 2008-06-10 → 2008-08-19 (+70d) |  |  | 195.54d → 180.18d |
| 1389 | **Verifcation** | 2008-06-10 → 2008-08-19 (+70d) | 2008-06-13 → 2008-08-22 (+70d) |  |  | 195.54d → 180.18d |
| 1390 | Develop the verification code in Matlab | 2008-06-10 → 2008-08-19 (+70d) | 2008-06-12 → 2008-08-20 (+69d) |  |  | 195.54d → 180.18d |

| ID | Task | Start | Finish | Duration | Total float |
| --- | --- | --- | --- | --- | --- |
| 1391 | Define the test input data & pass to ML & MATLAB | 2008-06-12 → 2008-08-20 (+69d) | 2008-06-13 → 2008-08-21 (+69d) |  | 195.54d → 180.18d |
| 1392 | Compare the outputs | 2008-06-13 → 2008-08-21 (+69d) | 2008-06-13 → 2008-08-22 (+70d) |  | 195.54d → 180.18d |
| 1393 | Measure performance & document mesaurements | 2008-06-13 → 2008-08-22 (+70d) | 2008-06-17 → 2008-08-25 (+69d) |  | 195.54d → 180.18d |
| 1394 | Interface definition, code, Nunit , Result & Doc review | 2008-06-17 → 2008-08-25 (+69d) | 2008-06-18 → 2008-08-26 (+69d) |  | 195.54d → 180.18d |
| 1395 | **CCIR filters** | 2008-06-18 → 2008-08-26 (+69d) | 2008-07-21 → 2008-09-29 (+70d) | 22.77d? → 23.77d? | 195.54d → 179.18d |
| 1396 | Review meas catalog & update | 2008-06-18 → 2008-08-26 (+69d) | 2008-06-20 → 2008-08-28 (+69d) |  | 195.54d → 180.18d |
| 1397 | Review managed & Native interface definitions | 2008-06-20 → 2008-08-28 (+69d) | 2008-06-23 → 2008-08-29 (+67d) |  | 195.54d → 180.18d |
| 1398 | Write code | 2008-06-23 → 2008-08-29 (+67d) | 2008-07-04 → 2008-09-15 (+73d) |  | 195.54d → 179.18d |
| 1399 | Unit test the code | 2008-07-04 → 2008-09-15 (+73d) | 2008-07-09 → 2008-09-18 (+71d) |  | 195.54d → 179.18d |
| 1400 | **Verifcation** | 2008-07-09 → 2008-09-18 (+71d) | 2008-07-16 → 2008-09-24 (+70d) |  | 195.54d → 179.18d |
| 1401 | Develop the verification code in Matlab | 2008-07-09 → 2008-09-18 (+71d) | 2008-07-14 → 2008-09-23 (+71d) |  | 195.54d → 179.18d |
| 1402 | Define the test input data & pass to ML & MATLAB | 2008-07-15 → 2008-09-23 (+70d) | 2008-07-15 → 2008-09-23 (+70d) |  | 195.54d → 179.18d |
| 1403 | Compare the outputs | 2008-07-15 → 2008-09-23 (+70d) | 2008-07-16 → 2008-09-24 (+70d) |  | 195.54d → 179.18d |
| 1404 | Measure performance & document mesaurements | 2008-07-16 → 2008-09-24 (+70d) | 2008-07-17 → 2008-09-25 (+70d) |  | 195.54d → 179.18d |
| 1405 | Interface definition, code, Nunit , Result & Doc review | 2008-07-17 → 2008-09-25 (+70d) | 2008-07-21 → 2008-09-29 (+70d) |  | 195.54d → 179.18d |
| 1406 | **Low Pass, high pass, band pass, notch** | 2008-07-21 → 2008-09-29 (+70d) | 2008-08-14 → 2008-10-27 (+74d) | 18.46d? → 20.46d? | 195.54d → 177.18d |
| 1407 | Review meas catalog & update | 2008-07-21 → 2008-09-29 (+70d) | 2008-07-22 → 2008-10-01 (+71d) |  | 195.54d → 179.18d |
| 1408 | Review managed & Native interface definitions | 2008-07-22 → 2008-10-01 (+71d) | 2008-07-24 → 2008-10-03 (+71d) |  | 195.54d → 178.18d |
| 1409 | Write code | 2008-07-24 → 2008-10-03 (+71d) | 2008-08-05 → 2008-10-16 (+72d) |  | 195.54d → 177.18d |
| 1410 | Unit test the code | 2008-08-05 → 2008-10-16 (+72d) | 2008-08-06 → 2008-10-17 (+72d) |  | 195.54d → 177.18d |
| 1411 | **Verifcation** | 2008-08-06 → 2008-10-17 (+72d) | 2008-08-12 → 2008-10-23 (+72d) |  | 195.54d → 177.18d |
| 1412 | Develop the verification code in Matlab | 2008-08-06 → 2008-10-17 (+72d) | 2008-08-08 → 2008-10-22 (+75d) |  | 195.54d → 177.18d |
| 1413 | Define the test input data & pass to ML & MATLAB | 2008-08-08 → 2008-10-22 (+75d) | 2008-08-11 → 2008-10-22 (+72d) |  | 195.54d → 177.18d |
| 1414 | Compare the outputs | 2008-08-11 → 2008-10-22 (+72d) | 2008-08-12 → 2008-10-23 (+72d) |  | 195.54d → 177.18d |
| 1415 | Measure performance & document mesaurements | 2008-08-12 → 2008-10-23 (+72d) | 2008-08-13 → 2008-10-27 (+75d) |  | 195.54d → 177.18d |
| 1416 | Interface definition, code, Nunit , Result & Doc review | 2008-08-14 → 2008-10-27 (+74d) | 2008-08-14 → 2008-10-27 (+74d) |  | 195.54d → 177.18d |
| 1417 | **Coherence** | 2008-08-14 → 2008-10-27 (+74d) | 2008-09-05 → 2008-11-17 (+73d) | 15.85d? → 14.85d? | 193.54d → 176.18d |
| 1418 | Review meas catalog & update | 2008-08-14 → 2008-10-27 (+74d) | 2008-08-18 → 2008-10-29 (+72d) |  | 194.54d → 176.18d |
| 1419 | Review managed & Native interface definitions | 2008-08-18 → 2008-10-29 (+72d) | 2008-08-19 → 2008-10-30 (+72d) |  | 194.54d → 176.18d |
| 1420 | Write code | 2008-08-19 → 2008-10-30 (+72d) | 2008-08-25 → 2008-11-06 (+73d) |  | 194.54d → 176.18d |
| 1421 | Unit test the code | 2008-08-25 → 2008-11-06 (+73d) | 2008-08-27 → 2008-11-07 (+72d) |  | 194.54d → 176.18d |
| 1422 | **Verifcation** | 2008-08-27 → 2008-11-07 (+72d) | 2008-09-01 → 2008-11-12 (+72d) |  | 194.54d → 176.18d |
| 1423 | Develop the verification code in Matlab | 2008-08-27 → 2008-11-07 (+72d) | 2008-08-28 → 2008-11-11 (+75d) |  | 194.54d → 176.18d |
| 1424 | Define the test input data & pass to ML & MATLAB | 2008-08-29 → 2008-11-11 (+74d) | 2008-08-29 → 2008-11-11 (+74d) |  | 194.54d → 176.18d |
| 1425 | Compare the outputs | 2008-08-29 → 2008-11-11 (+74d) | 2008-09-01 → 2008-11-12 (+72d) |  | 194.54d → 176.18d |
| 1426 | Measure performance & document mesaurements | 2008-09-01 → 2008-11-12 (+72d) | 2008-09-04 → 2008-11-14 (+71d) |  | 193.54d → 176.18d |
| 1427 | Interface definition, code, Nunit , Result & Doc review | 2008-09-04 → 2008-11-14 (+71d) | 2008-09-05 → 2008-11-17 (+73d) |  | 193.54d → 176.18d |
| 1428 | **Math** |  | 2008-08-28 → 2008-08-27 (-1d) |  | 57.62d → 92.01d |
| 1430 | Review meas catalog & update |  | 2008-04-09 → 2008-04-08 (-1d) |  | 57.62d → 92.01d |
| 1431 | Review managed & Native interface definitions | 2008-04-09 → 2008-04-08 (-1d) | 2008-04-10 → 2008-04-09 (-1d) |  | 57.62d → 92.01d |
| 1432 | Write code | 2008-04-10 → 2008-04-09 (-1d) |  |  | 56.62d → 92.01d |
| 1433 | Unit test the code |  | 2008-04-22 → 2008-04-21 (-1d) |  | 55.62d → 91.01d |
| 1434 | **Verifcation** | 2008-04-22 → 2008-04-21 (-1d) | 2008-04-25 → 2008-04-24 (-1d) |  | 55.62d → 91.01d |
| 1435 | Develop the verification code in Matlab | 2008-04-22 → 2008-04-21 (-1d) |  |  | 55.62d → 91.01d |
| 1437 | Compare the outputs |  | 2008-04-25 → 2008-04-24 (-1d) |  | 55.62d → 91.01d |
| 1438 | Measure performance & document mesaurements | 2008-04-25 → 2008-04-24 (-1d) | 2008-04-28 → 2008-04-25 (-3d) |  | 55.62d → 91.01d |
| 1439 | Interface definition, code, Nunit , Result & Doc review | 2008-04-28 → 2008-04-25 (-3d) |  |  | 55.62d → 91.01d |
| 1440 | **Basic Complex math** |  | 2008-05-22 → 2008-05-21 (-1d) |  | 54.62d → 91.01d |
| 1441 | Review meas catalog & update |  | 2008-04-30 → 2008-04-29 (-1d) |  | 55.62d → 92.01d |
| 1442 | Review managed & Native interface definitions | 2008-04-30 → 2008-04-29 (-1d) | 2008-05-02 → 2008-04-30 (-2d) |  | 54.62d → 92.01d |
| 1443 | Write code | 2008-05-02 → 2008-04-30 (-2d) | 2008-05-12 → 2008-05-09 (-3d) |  | 54.62d → 91.01d |
| 1444 | Unit test the code | 2008-05-12 → 2008-05-09 (-3d) |  |  | 54.62d → 91.01d |
| 1446 | Develop the verification code in Matlab |  | 2008-05-15 → 2008-05-14 (-1d) |  | 54.62d → 91.01d |
| 1447 | Define the test input data & pass to ML & MATLAB | 2008-05-15 → 2008-05-14 (-1d) | 2008-05-16 → 2008-05-15 (-1d) |  | 54.62d → 91.01d |
| 1448 | Compare the outputs | 2008-05-16 → 2008-05-15 (-1d) |  |  | 54.62d → 91.01d |
| 1449 | Measure performance & document mesaurements |  | 2008-05-20 → 2008-05-19 (-1d) |  | 54.62d → 91.01d |
| 1450 | Interface definition, code, Nunit , Result & Doc review | 2008-05-20 → 2008-05-19 (-1d) | 2008-05-22 → 2008-05-21 (-1d) |  | 54.62d → 91.01d |
| 1451 | **Hilbert** | 2008-05-22 → 2008-05-21 (-1d) | 2008-06-12 → 2008-06-11 (-1d) |  | 54.62d → 91.01d |
| 1452 | Review meas catalog & update | 2008-05-22 → 2008-05-21 (-1d) |  |  | 54.62d → 91.01d |
| 1455 | Unit test the code |  | 2008-06-04 → 2008-06-03 (-1d) |  | 55.62d → 92.01d |
| 1456 | **Verifcation** | 2008-06-04 → 2008-06-03 (-1d) | 2008-06-09 → 2008-06-06 (-3d) |  | 55.62d → 93.01d |
| 1457 | Develop the verification code in Matlab | 2008-06-04 → 2008-06-03 (-1d) |  |  | 55.62d → 93.01d |
| 1459 | Compare the outputs |  | 2008-06-09 → 2008-06-06 (-3d) |  | 55.62d → 93.01d |
| 1460 | Measure performance & document mesaurements | 2008-06-09 → 2008-06-06 (-3d) |  |  | 55.62d → 93.01d |
| 1461 | Interface definition, code, Nunit , Result & Doc review |  | 2008-06-12 → 2008-06-11 (-1d) |  | 55.62d → 93.01d |
| 1462 | **Conversions** | 2008-06-12 → 2008-06-11 (-1d) |  |  | 55.62d → 93.01d |
| 1463 | Review meas catalog & update | 2008-06-12 → 2008-06-11 (-1d) | 2008-06-13 → 2008-06-12 (-1d) |  | 55.62d → 93.01d |
| 1464 | Review managed & Native interface definitions | 2008-06-13 → 2008-06-12 (-1d) |  |  | 55.62d → 93.01d |
| 1465 | Write code |  | 2008-06-27 → 2008-06-26 (-1d) |  | 55.62d → 93.01d |
| 1466 | Unit test the code | 2008-06-27 → 2008-06-26 (-1d) | 2008-07-02 → 2008-07-01 (-1d) |  | 56.62d → 94.01d |

| ID | Task | Start | Finish | Duration | Complete | Total float | Other |
| --- | --- | --- | --- | --- | --- | --- | --- |
| 1467 | **Verifcation** | 2008-07-02 → 2008-07-01 (-1d) |  |  |  | 56.62d → 94.01d |  |
| 1468 | Develop the verification code in Matlab | 2008-07-02 → 2008-07-01 (-1d) | 2008-07-07 → 2008-07-04 (-3d) |  |  | 56.62d → 94.01d |  |
| 1469 | Define the test input data & pass to ML & MATLAB | 2008-07-07 → 2008-07-04 (-3d) | 2008-07-08 → 2008-07-07 (-1d) |  |  | 56.62d → 94.01d |  |
| 1470 | Compare the outputs | 2008-07-08 → 2008-07-07 (-1d) |  |  |  | 56.62d → 94.01d |  |
| 1471 | Measure performance & document mesaurements |  | 2008-07-10 → 2008-07-09 (-1d) |  |  | 56.62d → 94.01d |  |
| 1472 | Interface definition, code, Nunit , Result & Doc review | 2008-07-10 → 2008-07-09 (-1d) |  |  |  | 56.62d → 94.01d |  |
| 1475 | Review managed & Native interface definitions |  | 2008-07-15 → 2008-07-14 (-1d) |  |  | 56.62d → 94.01d |  |
| 1476 | Write code | 2008-07-15 → 2008-07-14 (-1d) |  |  |  | 57.62d → 94.01d |  |
| 1477 | Unit test the code |  | 2008-07-25 → 2008-07-24 (-1d) |  |  | 58.62d → 94.01d |  |
| 1478 | **Verifcation** | 2008-07-25 → 2008-07-24 (-1d) | 2008-07-30 → 2008-07-29 (-1d) |  |  | 58.62d → 94.01d |  |
| 1479 | Develop the verification code in Matlab | 2008-07-25 → 2008-07-24 (-1d) |  |  |  | 58.62d → 94.01d |  |
| 1480 | Define the test input data & pass to ML & MATLAB |  | 2008-07-29 → 2008-07-28 (-1d) |  |  | 58.62d → 94.01d |  |
| 1481 | Compare the outputs | 2008-07-29 → 2008-07-28 (-1d) | 2008-07-30 → 2008-07-29 (-1d) |  |  | 58.62d → 94.01d |  |
| 1482 | Measure performance & document mesaurements | 2008-07-30 → 2008-07-29 (-1d) | 2008-07-31 → 2008-07-30 (-1d) |  |  | 58.62d → 94.01d |  |
| 1483 | Interface definition, code, Nunit , Result & Doc review | 2008-07-31 → 2008-07-30 (-1d) |  |  |  | 58.62d → 95.01d |  |
| 1484 | **Statistical (mean,mode…)** |  | 2008-08-28 → 2008-08-27 (-1d) |  |  | 58.62d → 95.01d |  |
| 1485 | Review meas catalog & update |  | 2008-08-04 → 2008-08-01 (-3d) |  |  | 58.62d → 95.01d |  |
| 1486 | Review managed & Native interface definitions | 2008-08-04 → 2008-08-01 (-3d) |  |  |  | 58.62d → 95.01d |  |
| 1487 | Write code |  | 2008-08-14 → 2008-08-13 (-1d) |  |  | 58.62d → 95.01d |  |
| 1488 | Unit test the code | 2008-08-14 → 2008-08-13 (-1d) |  |  |  | 58.62d → 95.01d |  |
| 1489 | **Verifcation** |  | 2008-08-25 → 2008-08-22 (-3d) |  |  | 58.62d → 95.01d |  |
| 1491 | Define the test input data & pass to ML & MATLAB |  | 2008-08-22 → 2008-08-21 (-1d) |  |  | 58.62d → 95.01d |  |
| 1492 | Compare the outputs | 2008-08-22 → 2008-08-21 (-1d) | 2008-08-25 → 2008-08-22 (-3d) |  |  | 58.62d → 95.01d |  |
| 1493 | Measure performance & document mesaurements | 2008-08-25 → 2008-08-22 (-3d) |  |  |  | 58.62d → 95.01d |  |
| 1494 | Interface definition, code, Nunit , Result & Doc review |  | 2008-08-28 → 2008-08-27 (-1d) |  |  | 58.62d → 95.01d |  |
| 1495 | Research & Investigation on MVP filters |  |  |  |  |  | resources ShashiP [65%] → ShashiP [70%] |
| 1496 | Averaging-MATLAB simulation for MVP |  |  |  |  |  | resources ShashiP [65%] → ShashiP [70%] |
| 1497 | Research & invesitgation on Octave with MATLAB simulation |  | 2008-03-07 A → 2008-03-10 A (+3d) | 23.08d? → 24.08d? |  |  | resources Ramkumar [65%] → ShashiP [70%] |
| 1498 | **Testing and Result Verification** | 2008-08-28 A |  | 168.02d? → 167.71d? | 0% → 14% | 32.14d → 65.98d |  |
| 1499 | Verify THD | 2009-02-26 A | 2009-03-05 A |  | 0% → 100% | 32.14d → none |  |
| 1508 | Verify Octave | 2008-08-28 → 2008-12-15 (+109d) | 2008-09-10 → 2008-12-26 (+107d) |  |  | 45.16d → 0d |  |
| 1509 | Verify Orbit | 2008-09-11 → 2008-12-29 (+109d) | 2008-09-22 → 2009-01-07 (+107d) |  |  | 45.16d → 0d |  |
| 1510 | Verify FFT | 2008-08-28 A | 2008-09-04 A |  | 0% → 100% | 97.31d → none |  |
| 1512 | Verify Windowing | 2008-09-15 A | 2008-09-23 A |  | 0% → 100% | 97.31d → none |  |
| 1515 | Verify Linear Spectrum | 2008-10-13 A | 2008-10-20 A |  | 0% → 100% | 95.31d → none |  |
| 1516 | Verify Power Spectrum | 2008-10-20 A | 2008-10-24 A |  | 0% → 100% | 95.31d → none |  |
| 1518 | Verify Cross Power | 2008-11-03 A | 2008-11-07 A |  | 0% → 100% | 94.31d → none |  |
| 1526 | Verify Weighting filters for octave analysis A- weighting filter + B-weigghting filter +C- weighting filter | 2009-01-14 → 2009-01-13 (-1d) | 2009-01-26 → 2009-01-23 (-3d) |  |  | 54.62d → 89.01d |  |
| 1527 | Verify General Weighting filters (A+B+C-weighting filter) | 2009-01-26 → 2009-01-23 (-3d) |  |  |  | 54.62d → 89.01d |  |
| 1528 | Verify CCIR filters |  | 2009-02-16 → 2009-02-13 (-3d) |  |  | 54.62d → 89.01d |  |
| 1529 | Verify Low Pass, high pass, band pass, notch | 2009-02-16 → 2009-02-13 (-3d) | 2009-02-26 → 2009-02-25 (-1d) |  |  | 54.62d → 89.01d |  |
| 1530 | Verify Coherence | 2009-02-26 → 2009-02-25 (-1d) |  |  |  | 54.62d → 89.01d |  |
| 1531 | Verify all Math |  | 2009-03-19 → 2009-03-18 (-1d) |  |  | 54.62d → 89.01d |  |
| 1532 | **Tests With Hardware** | 2008-09-23 → 2009-01-08 (+107d) | 2009-04-01 → 2009-07-21 (+111d) | 137d? → 139d? |  | 45.16d → 0d |  |
| 1533 | **Transforms** | 2008-09-23 → 2009-01-08 (+107d) | 2008-10-07 → 2009-01-22 (+107d) |  |  | 45.16d → 0d |  |
| 1534 | FFT | 2008-09-23 → 2009-01-08 (+107d) | 2008-09-24 → 2009-01-09 (+107d) |  |  | 45.16d → 0d |  |
| 1535 | Identify/Create actual input signals to match verification cases above | 2008-09-25 → 2009-01-12 (+109d) | 2008-09-26 → 2009-01-13 (+109d) |  |  | 45.16d → 0d |  |
| 1536 | Inject signals into hardware and capture the results. | 2008-09-29 → 2009-01-14 (+107d) | 2008-10-02 → 2009-01-19 (+109d) |  |  | 45.16d → 0d |  |
| 1537 | Compare results through hardware with software verfification | 2008-10-03 → 2009-01-20 (+109d) | 2008-10-06 → 2009-01-21 (+107d) |  |  | 45.16d → 0d |  |
| 1538 | Review Results | 2008-10-07 → 2009-01-22 (+107d) | 2008-10-07 → 2009-01-22 (+107d) |  |  | 45.16d → 0d |  |
| 1539 | **STFT** | 2008-10-08 → 2009-01-23 (+107d) | 2008-10-20 → 2009-02-04 (+107d) |  |  | 45.16d → 0d |  |
| 1540 | Identify/Create actual input signals to match verification cases above | 2008-10-08 → 2009-01-23 (+107d) | 2008-10-09 → 2009-01-26 (+109d) |  |  | 45.16d → 0d |  |
| 1541 | Inject signals into hardware and capture the results. | 2008-10-10 → 2009-01-27 (+109d) | 2008-10-15 → 2009-01-30 (+107d) |  |  | 45.16d → 0d |  |
| 1542 | Compare results through hardware with software verfification | 2008-10-16 → 2009-02-02 (+109d) | 2008-10-17 → 2009-02-03 (+109d) |  |  | 45.16d → 0d |  |
| 1543 | Review Results | 2008-10-20 → 2009-02-04 (+107d) | 2008-10-20 → 2009-02-04 (+107d) |  |  | 45.16d → 0d |  |
| 1544 | **Windowing** | 2008-10-21 → 2009-02-05 (+107d) | 2008-10-28 → 2009-02-12 (+107d) |  |  | 45.16d → 0d |  |
| 1545 | Identify/Create actual input signals to match verification cases above | 2008-10-21 → 2009-02-05 (+107d) | 2008-10-21 → 2009-02-05 (+107d) |  |  | 45.16d → 0d |  |
| 1546 | Inject signals into hardware and capture the results. | 2008-10-22 → 2009-02-06 (+107d) | 2008-10-23 → 2009-02-09 (+109d) |  |  | 45.16d → 0d |  |
| 1547 | Compare results through hardware with software verfification | 2008-10-24 → 2009-02-10 (+109d) | 2008-10-27 → 2009-02-11 (+107d) |  |  | 45.16d → 0d |  |
| 1548 | Review Results | 2008-10-28 → 2009-02-12 (+107d) | 2008-10-28 → 2009-02-12 (+107d) |  |  | 45.16d → 0d |  |
| 1549 | **Resampling** | 2008-10-29 → 2009-02-13 (+107d) | 2008-11-14 → 2009-03-03 (+109d) |  |  | 45.16d → 0d |  |
| 1550 | Identify/Create actual input signals to match verification cases above | 2008-10-29 → 2009-02-13 (+107d) | 2008-11-03 → 2009-02-18 (+107d) |  |  | 45.16d → 0d |  |
| 1551 | Inject signals into hardware and capture the results. | 2008-11-04 → 2009-02-19 (+107d) | 2008-11-07 → 2009-02-24 (+109d) |  |  | 45.16d → 0d |  |
| 1552 | Compare results through hardware with software verfification | 2008-11-10 → 2009-02-25 (+107d) | 2008-11-13 → 2009-03-02 (+109d) |  |  | 45.16d → 0d |  |
| 1553 | Review Results | 2008-11-14 → 2009-03-03 (+109d) | 2008-11-14 → 2009-03-03 (+109d) |  |  | 45.16d → 0d |  |
| 1554 | **ZoomFFT** | 2008-11-17 → 2009-03-04 (+107d) | 2008-11-25 → 2009-03-12 (+107d) |  |  | 45.16d → 0d |  |
| 1555 | Identify/Create actual input signals to match verification cases above | 2008-11-17 → 2009-03-04 (+107d) | 2008-11-18 → 2009-03-05 (+107d) |  |  | 45.16d → 0d |  |
| 1556 | Inject signals into hardware and capture the results. | 2008-11-19 → 2009-03-06 (+107d) | 2008-11-20 → 2009-03-09 (+109d) |  |  | 45.16d → 0d |  |
| 1557 | Compare results through hardware with software verfification | 2008-11-21 → 2009-03-10 (+109d) | 2008-11-24 → 2009-03-11 (+107d) |  |  | 45.16d → 0d |  |
| 1558 | Review Results | 2008-11-25 → 2009-03-12 (+107d) | 2008-11-25 → 2009-03-12 (+107d) |  |  | 45.16d → 0d |  |

| ID | Task | Start | Finish | Duration | Total float | Predecessors |
| --- | --- | --- | --- | --- | --- | --- |
| 1559 | **Spectrums** | 2008-11-26 → 2009-03-13 (+107d) | 2008-12-30 → 2009-04-16 (+107d) |  | 45.16d → 0d |  |
| 1560 | **Linear** | 2008-11-26 → 2009-03-13 (+107d) | 2008-12-02 → 2009-03-19 (+107d) |  | 45.16d → 0d |  |
| 1561 | Identify/Create actual input signals to match verification cases above | 2008-11-26 → 2009-03-13 (+107d) | 2008-11-26 → 2009-03-13 (+107d) |  | 45.16d → 0d |  |
| 1562 | Inject signals into hardware and capture the results. | 2008-11-27 → 2009-03-16 (+109d) | 2008-11-28 → 2009-03-17 (+109d) |  | 45.16d → 0d |  |
| 1563 | Compare results through hardware with software verfification | 2008-12-01 → 2009-03-18 (+107d) | 2008-12-01 → 2009-03-18 (+107d) |  | 45.16d → 0d |  |
| 1564 | Review Results | 2008-12-02 → 2009-03-19 (+107d) | 2008-12-02 → 2009-03-19 (+107d) |  | 45.16d → 0d |  |
| 1565 | **Power** | 2008-12-03 → 2009-03-20 (+107d) | 2008-12-09 → 2009-03-26 (+107d) |  | 45.16d → 0d |  |
| 1566 | Identify/Create actual input signals to match verification cases above | 2008-12-03 → 2009-03-20 (+107d) | 2008-12-03 → 2009-03-20 (+107d) |  | 45.16d → 0d |  |
| 1567 | Inject signals into hardware and capture the results. | 2008-12-04 → 2009-03-23 (+109d) | 2008-12-05 → 2009-03-24 (+109d) |  | 45.16d → 0d |  |
| 1568 | Compare results through hardware with software verfification | 2008-12-08 → 2009-03-25 (+107d) | 2008-12-08 → 2009-03-25 (+107d) |  | 45.16d → 0d |  |
| 1569 | Review Results | 2008-12-09 → 2009-03-26 (+107d) | 2008-12-09 → 2009-03-26 (+107d) |  | 45.16d → 0d |  |
| 1570 | **Phase** | 2008-12-10 → 2009-03-27 (+107d) | 2008-12-16 → 2009-04-02 (+107d) |  | 45.16d → 0d |  |
| 1571 | Identify/Create actual input signals to match verification cases above | 2008-12-10 → 2009-03-27 (+107d) | 2008-12-10 → 2009-03-27 (+107d) |  | 45.16d → 0d |  |
| 1572 | Inject signals into hardware and capture the results. | 2008-12-11 → 2009-03-30 (+109d) | 2008-12-12 → 2009-03-31 (+109d) |  | 45.16d → 0d |  |
| 1573 | Compare results through hardware with software verfification | 2008-12-15 → 2009-04-01 (+107d) | 2008-12-15 → 2009-04-01 (+107d) |  | 45.16d → 0d |  |
| 1574 | Review Results | 2008-12-16 → 2009-04-02 (+107d) | 2008-12-16 → 2009-04-02 (+107d) |  | 45.16d → 0d |  |
| 1575 | **Auto power** | 2008-12-17 → 2009-04-03 (+107d) | 2008-12-23 → 2009-04-09 (+107d) |  | 45.16d → 0d |  |
| 1576 | Identify/Create actual input signals to match verification cases above | 2008-12-17 → 2009-04-03 (+107d) | 2008-12-17 → 2009-04-03 (+107d) |  | 45.16d → 0d |  |
| 1577 | Inject signals into hardware and capture the results. | 2008-12-18 → 2009-04-06 (+109d) | 2008-12-19 → 2009-04-07 (+109d) |  | 45.16d → 0d |  |
| 1578 | Compare results through hardware with software verfification | 2008-12-22 → 2009-04-08 (+107d) | 2008-12-22 → 2009-04-08 (+107d) |  | 45.16d → 0d |  |
| 1579 | Review Results | 2008-12-23 → 2009-04-09 (+107d) | 2008-12-23 → 2009-04-09 (+107d) |  | 45.16d → 0d |  |
| 1580 | **Cross power** | 2008-12-24 → 2009-04-10 (+107d) | 2008-12-30 → 2009-04-16 (+107d) |  | 45.16d → 0d |  |
| 1581 | Identify/Create actual input signals to match verification cases above | 2008-12-24 → 2009-04-10 (+107d) | 2008-12-24 → 2009-04-10 (+107d) |  | 45.16d → 0d |  |
| 1582 | Inject signals into hardware and capture the results. | 2008-12-25 → 2009-04-13 (+109d) | 2008-12-26 → 2009-04-14 (+109d) |  | 45.16d → 0d |  |
| 1583 | Compare results through hardware with software verfification | 2008-12-29 → 2009-04-15 (+107d) | 2008-12-29 → 2009-04-15 (+107d) |  | 45.16d → 0d |  |
| 1584 | Review Results | 2008-12-30 → 2009-04-16 (+107d) | 2008-12-30 → 2009-04-16 (+107d) |  | 45.16d → 0d |  |
| 1585 | **Limit lines** | 2008-12-31 → 2009-04-17 (+107d) | 2009-01-13 → 2009-04-30 (+107d) |  | 45.16d → 0d |  |
| 1586 | **Upper limit** | 2008-12-31 → 2009-04-17 (+107d) | 2009-01-06 → 2009-04-23 (+107d) |  | 45.16d → 0d |  |
| 1587 | Identify/Create actual input signals to match verification cases above | 2008-12-31 → 2009-04-17 (+107d) | 2008-12-31 → 2009-04-17 (+107d) |  | 45.16d → 0d |  |
| 1588 | Inject signals into hardware and capture the results. | 2009-01-01 → 2009-04-20 (+109d) | 2009-01-02 → 2009-04-21 (+109d) |  | 45.16d → 0d |  |
| 1589 | Compare results through hardware with software verfification | 2009-01-05 → 2009-04-22 (+107d) | 2009-01-05 → 2009-04-22 (+107d) |  | 45.16d → 0d |  |
| 1590 | Review Results | 2009-01-06 → 2009-04-23 (+107d) | 2009-01-06 → 2009-04-23 (+107d) |  | 45.16d → 0d |  |
| 1591 | **Lower limit** | 2009-01-07 → 2009-04-24 (+107d) | 2009-01-13 → 2009-04-30 (+107d) |  | 45.16d → 0d |  |
| 1592 | Identify/Create actual input signals to match verification cases above | 2009-01-07 → 2009-04-24 (+107d) | 2009-01-07 → 2009-04-24 (+107d) |  | 45.16d → 0d |  |
| 1593 | Inject signals into hardware and capture the results. | 2009-01-08 → 2009-04-27 (+109d) | 2009-01-09 → 2009-04-28 (+109d) |  | 45.16d → 0d |  |
| 1594 | Compare results through hardware with software verfification | 2009-01-12 → 2009-04-29 (+107d) | 2009-01-12 → 2009-04-29 (+107d) |  | 45.16d → 0d |  |
| 1595 | Review Results | 2009-01-13 → 2009-04-30 (+107d) | 2009-01-13 → 2009-04-30 (+107d) |  | 45.16d → 0d |  |
| 1596 | **Swept Sine** | 2009-01-14 → 2009-05-01 (+107d) | 2009-04-01 → 2009-07-21 (+111d) | 56d? → 58d? | 45.16d → 0d |  |
| 1597 | **Gain, Phase margins** | 2009-01-14 → 2009-05-01 (+107d) | 2009-01-23 → 2009-05-12 (+109d) |  | 45.16d → 0d |  |
| 1598 | Identify/Create actual input signals to match verification cases above | 2009-01-14 → 2009-05-01 (+107d) | 2009-01-19 → 2009-05-06 (+107d) |  | 45.16d → 0d |  |
| 1599 | Inject signals into hardware and capture the results. | 2009-01-20 → 2009-05-07 (+107d) | 2009-01-21 → 2009-05-08 (+107d) |  | 45.16d → 0d |  |
| 1600 | Compare results through hardware with software verfification | 2009-01-22 → 2009-05-11 (+109d) | 2009-01-22 → 2009-05-11 (+109d) |  | 45.16d → 0d |  |
| 1601 | Review Results | 2009-01-23 → 2009-05-12 (+109d) | 2009-01-23 → 2009-05-12 (+109d) |  | 45.16d → 0d |  |
| 1602 | **Frequency, Damping** | 2009-01-26 → 2009-05-13 (+107d) | 2009-02-04 → 2009-05-22 (+107d) |  | 45.16d → 0d |  |
| 1603 | Identify/Create actual input signals to match verification cases above | 2009-01-26 → 2009-05-13 (+107d) | 2009-01-29 → 2009-05-18 (+109d) |  | 45.16d → 0d |  |
| 1604 | Inject signals into hardware and capture the results. | 2009-01-30 → 2009-05-19 (+109d) | 2009-02-02 → 2009-05-20 (+107d) |  | 45.16d → 0d |  |
| 1605 | Compare results through hardware with software verfification | 2009-02-03 → 2009-05-21 (+107d) | 2009-02-03 → 2009-05-21 (+107d) |  | 45.16d → 0d |  |
| 1606 | Review Results | 2009-02-04 → 2009-05-22 (+107d) | 2009-02-04 → 2009-05-22 (+107d) |  | 45.16d → 0d |  |
| 1607 | **Frequency Response** | 2009-02-05 → 2009-05-25 (+109d) | 2009-02-16 → 2009-06-03 (+107d) |  | 45.16d → 0d |  |
| 1608 | Identify/Create actual input signals to match verification cases above | 2009-02-05 → 2009-05-25 (+109d) | 2009-02-06 → 2009-05-26 (+109d) |  | 45.16d → 0d |  |
| 1609 | Inject signals into hardware and capture the results. | 2009-02-11 → 2009-05-29 (+107d) | 2009-02-12 → 2009-06-01 (+109d) |  | 45.16d → 0d |  |
| 1610 | Compare results through hardware with software verfification | 2009-02-13 → 2009-06-02 (+109d) | 2009-02-13 → 2009-06-02 (+109d) |  | 45.16d → 0d |  |
| 1611 | Review Results | 2009-02-16 → 2009-06-03 (+107d) | 2009-02-16 → 2009-06-03 (+107d) |  | 45.16d → 0d |  |
| 1612 | **Variance** | 2009-02-17 → 2009-06-04 (+107d) | 2009-03-11 → 2009-06-30 (+111d) | 17d? → 19d? | 45.16d → 0d |  |
| 1613 | Identify/Create actual input signals to match verification cases above | 2009-02-17 → 2009-06-04 (+107d) | 2009-02-20 → 2009-06-09 (+109d) |  | 45.16d → 0d |  |
| 1614 | Inject signals into hardware and capture the results. | 2009-03-04 → 2009-06-19 (+107d) | 2009-03-05 → 2009-06-22 (+109d) |  | 45.16d → 0d |  |
| 1615 | Compare results through hardware with software verfification | 2009-03-10 → 2009-06-29 (+111d) | 2009-03-10 → 2009-06-29 (+111d) |  | 45.16d → 0d |  |
| 1616 | Review Results | 2009-03-11 → 2009-06-30 (+111d) | 2009-03-11 → 2009-06-30 (+111d) |  | 45.16d → 0d |  |
| 1617 | **Group Delay** | 2009-03-19 → 2009-07-08 (+111d) | 2009-04-01 → 2009-07-21 (+111d) |  | 45.16d → 0d |  |
| 1618 | Identify/Create actual input signals to match verification cases above | 2009-03-19 → 2009-07-08 (+111d) | 2009-03-24 → 2009-07-13 (+111d) |  | 45.16d → 0d |  |
| 1619 | Inject signals into hardware and capture the results. | 2009-03-27 → 2009-07-16 (+111d) | 2009-03-30 → 2009-07-17 (+109d) |  | 45.16d → 0d |  |
| 1620 | Compare results through hardware with software verfification | 2009-03-31 → 2009-07-20 (+111d) | 2009-03-31 → 2009-07-20 (+111d) |  | 45.16d → 0d |  |
| 1621 | Review Results | 2009-04-01 → 2009-07-21 (+111d) | 2009-04-01 → 2009-07-21 (+111d) |  | 45.16d → 0d |  |
| 1623 | Categorize errors |  |  |  |  | 965 → none |
| 1627 | **Define meas to be implemented in MVP** | 2008-07-11 A → 2008-02-04 A (-158d) | 2008-07-29 A → 2008-02-19 A (-161d) |  |  |  |
| 1628 | List the meas for MVP | 2008-07-11 A → 2008-02-04 A (-158d) | 2008-07-15 A → 2008-02-05 A (-161d) |  |  | Settling time → none |
| 1629 | Identify dependecies on other meas | 2008-07-15 A → 2008-02-06 A (-160d) | 2008-07-21 A → 2008-02-11 A (-161d) |  |  |  |
| 1630 | Review with team | 2008-07-21 A → 2008-02-12 A (-160d) | 2008-07-23 A → 2008-02-13 A (-161d) |  |  |  |
| 1631 | Incorporate review decisions | 2008-07-23 A → 2008-02-14 A (-160d) | 2008-07-25 A → 2008-02-15 A (-161d) |  |  |  |
| 1632 | Finalize meas definition for MVP | 2008-07-25 A → 2008-02-18 A (-158d) | 2008-07-29 A → 2008-02-19 A (-161d) |  |  |  |

| ID | Task | Start | Finish | Duration | Complete | Total float | Predecessors | Other |
| --- | --- | --- | --- | --- | --- | --- | --- | --- |
| 1633 | **Infrastructure Development** |  | 2008-08-04 A |  | 92% → 100% | 53.42d → none |  |  |
| 1637 | Work with LP to understand their needs |  | 2008-08-04 A |  | 75% → 100% | 53.42d → none |  |  |
| 1638 | **IE State Proxy** |  | 2008-10-17 → 2008-09-16 (-31d) | 184.71d? → 161.21d? | 9% → 27% | 163.44d → 220.79d |  |  |
| 1640 | Implement Instrument Proxy Framework into Build |  | 2008-02-15 A |  | 80% → 100% | 338.59d → none |  |  |
| 1641 | **Design Parameters** |  |  |  | 50% → 82% | 321.44d → 355.29d |  |  |
| 1643 | Channel |  |  |  |  |  | 1669 → 1642 |  |
| 1648 | Simulation Design | 2008-03-05 A | 2008-03-06 A |  | 0% → 100% | 168.44d → none |  |  |
| 1649 | Instrument Engine Interface Design | 2008-03-06 A | 2008-03-11 A |  | 0% → 100% | 169.44d → none |  |  |
| 1661 | Arm | 2008-03-11 → 2008-06-23 (+104d) | 2008-03-14 → 2008-06-25 (+103d) | 2.86d? → 2.67d? |  | 169.44d → 279.3d | 1649 → none | resources Vishal [70%] → Gowie [75%] |
| 1662 | Channel | 2008-03-17 → 2008-06-23 (+98d) | 2008-03-19 → 2008-06-25 (+98d) | 1.43d? → 2.67d? |  | 169.44d → 279.3d | 1686 → none | resources Vishal [70%] → Gowie [75%] |
| 1663 | Frequency | 2008-03-19 → 2008-06-23 (+96d) | 2008-03-20 → 2008-06-25 (+97d) | 1.43d? → 2.67d? |  | 169.44d → 279.3d | 1662 → none | resources Vishal [70%] → Gowie [75%] |
| 1664 | Source | 2008-03-20 → 2008-06-23 (+95d) | 2008-03-25 → 2008-06-25 (+92d) | 1.43d? → 2.67d? |  | 168.44d → 279.3d | 1663 → none | resources Vishal [70%] → Gowie [75%] |
| 1665 | Trigger | 2008-03-25 → 2008-06-23 (+90d) | 2008-03-26 → 2008-06-25 (+91d) | 1.43d? → 2.67d? |  | 168.44d → 279.3d | 1664 → none | resources Vishal [70%] → Gowie [75%] |
| 1666 | Error Handling | 2008-03-26 → 2008-06-23 (+89d) | 2008-03-31 → 2008-06-25 (+86d) | 2.86d? → 2.67d? |  | 168.44d → 279.3d | 1665 → none | resources Vishal [70%] → Gowie [75%] |
| 1668 | Arm | 2008-05-12 → 2008-03-11 A (-62d) | 2008-05-14 → 2008-03-14 A (-61d) | 1.43d → 2.86d? | 0% → 100% | 167.44d → none | 1683 → 1660 |  |
| 1669 | Average | 2008-02-20 → 2008-03-14 (+23d) | 2008-02-21 → 2008-03-14 (+22d) | 1.43d? → 0d? |  | 334.3d → 351.36d | 1642 → 1668 |  |
| 1670 | Channel | 2008-05-15 → 2008-03-17 A (-59d) | 2008-05-16 → 2008-03-19 (-58d) |  | 0% → 25% | 167.44d → 349.57d | 1694 → 1669 |  |
| 1671 | Frequency | 2008-05-16 → 2008-03-19 A (-58d) | 2008-05-20 → 2008-03-20 A (-61d) |  | 0% → 100% | 167.44d → none |  |  |
| 1672 | Source | 2008-05-20 → 2008-03-20 (-61d) | 2008-05-21 → 2008-03-25 (-57d) |  |  | 167.44d → 336.07d |  |  |
| 1673 | Trigger | 2008-05-21 → 2008-03-25 A (-57d) | 2008-05-23 → 2008-03-26 (-58d) |  | 0% → 25% | 167.44d → 335.72d |  |  |
| 1676 | Develop Thread Safe Tests |  |  |  |  | 168.44d → 335.72d | 1666 → 1675 |  |
| 1678 | **Method Design** | 2008-04-08 A |  |  | 0% → 67% | 167.44d → 330.43d |  |  |
| 1679 | Design Run / Stop / Pause / Continue | 2008-04-08 A | 2008-04-11 A |  | 0% → 100% | 168.44d → none |  |  |
| 1682 | Implement Simulation of Parameters | 2008-04-15 A | 2008-04-21 A |  | 0% → 100% | 167.44d → none |  |  |
| 1683 | Implement Simulation of Methods | 2008-04-21 A | 2008-05-12 A |  | 0% → 100% | 167.44d → none |  |  |
| 1685 | Arm | 2008-05-26 → 2008-05-12 (-14d) | 2008-06-09 → 2008-05-14 (-26d) | 10d? → 1.33d |  | 167.44d → 3.05d | 1691 → 1683 | resources Vishal [70%] → Gowie [75%] |
| 1686 | Average | 2008-03-14 → 2008-05-14 (+61d) | 2008-03-17 → 2008-05-14 (+58d) | 1.43d? → 0d? |  | 169.44d → 3.05d | 1661 → 1685 | resources Vishal [70%] → Gowie [75%] |
| 1687 | Channel | 2008-06-23 → 2008-05-14 (-40d) | 2008-07-07 → 2008-05-15 (-53d) | 10d? → 1.33d? |  | 167.44d → 3.05d | Average → 1686 | resources Vishal [70%] → Gowie [75%] |
| 1688 | Frequency | 2008-07-07 → 2008-05-16 A (-52d) | 2008-07-21 → 2008-05-20 A (-62d) | 10d? → 1.43d? | 0% → 100% | 167.44d → none |  | resources Vishal [70%] → Gowie [75%] |
| 1689 | Source | 2008-07-21 → 2008-05-20 (-62d) | 2008-08-04 → 2008-05-21 (-75d) | 10d? → 1.33d? |  | 167.44d → 223.26d |  | resources Vishal [70%] → Gowie [75%] |
| 1690 | Trigger | 2008-08-04 → 2008-05-21 (-75d) | 2008-08-19 → 2008-05-23 (-88d) | 10d? → 1.33d? |  | 166.44d → 223.26d |  | resources Vishal [70%] → Gowie [75%] |
| 1691 | Run / Pause / Cont / Stop / Reset | 2008-05-23 A |  | 1.43d? → 1.36d? | 0% → 26% | 167.44d → 222.79d | 1673 → 1690 | resources Vishal [70%] → Gowie [75%] |
| 1692 | **Implement test Instrument Engine Calls** |  | 2008-09-09 → 2008-08-25 (-15d) | 76.29d? → 65.29d? |  | 165.44d → 221.79d |  |  |
| 1694 | Average | 2008-05-14 → 2008-06-09 (+26d) | 2008-05-15 → 2008-06-09 (+25d) | 1.43d? → 0d? |  | 167.44d → 222.79d | 1668 → 1693 |  |
| 1699 | Run / Pause / Cont / Stop / Reset | 2008-08-19 → 2008-08-04 (-15d) | 2008-09-09 → 2008-08-25 (-15d) |  |  | 165.44d → 221.79d | 1690 → 1698 |  |
| 1700 | **Enabled** | 2008-09-09 → 2008-08-25 (-15d) | 2008-09-30 → 2008-09-16 (-14d) | 14.29d? → 15.29d? |  | 165.44d → 220.79d |  |  |
| 1701 | Design Enabled | 2008-09-09 → 2008-08-25 (-15d) | 2008-09-12 → 2008-08-28 (-15d) |  |  | 165.44d → 221.79d |  |  |
| 1702 | Implement Enabled | 2008-09-12 → 2008-08-28 (-15d) | 2008-09-22 → 2008-09-08 (-14d) |  |  | 165.44d → 220.79d |  |  |
| 1703 | Test Enabled | 2008-09-22 → 2008-09-08 (-14d) | 2008-09-30 → 2008-09-16 (-14d) |  |  | 165.44d → 220.79d |  |  |
| 1706 | Design | 2008-04-10 → 2008-02-04 A (-66d) | 2008-04-15 → 2008-02-08 A (-67d) | 2d? → 4.29d? | 0% → 100% | 10.41d → none | 261 → none | resources RKB [50%] → RKB [70%] |
| 1707 | Implementation | 2008-05-28 → 2008-02-08 A (-110d) | 2008-06-03 → 2008-02-18 A (-106d) | 3.85d? → 5.71d? | 0% → 100% | 14.56d → none | 300 → 1706 | resources 1ETW [65%] → RKB [70%] |
| 1779 | Design Source IE Interface |  |  |  |  | 5.83d → 39.67d |  | resources 2ETW [65%] → Anjali [65%] |
| 1780 | Implement Source IE Interface |  |  |  |  | 5.83d → 39.67d |  | resources 2ETW [65%] → Anjali [65%] |
| 1781 | Nunit Source IE Interface |  |  |  |  | 5.83d → 39.67d |  | resources 2ETW [65%] → Anjali [65%] |
| 1782 | Design CAL IE Interface |  |  |  |  | 5.83d → 39.67d |  | resources 2ETW [65%] → Anjali [65%] |
| 1783 | Implement CAL IE Interface |  |  |  |  | 5.83d → 39.67d |  | resources 2ETW [65%] → Anjali [65%] |
| 1784 | Nunit CAL IE Interface |  |  |  |  | 5.83d → 39.67d |  | resources 2ETW [65%] → Anjali [65%] |
| 1795 | Design Status System Registers |  |  |  |  | 44.62d → 78.62d |  | resources 2ETW [65%] → Anjali [65%] |
| 1796 | Implement Status System Execution Routines |  |  |  |  | 44.62d → 78.62d |  | resources 2ETW [65%] → Anjali [65%] |
| 1797 | Nunit Status System |  |  |  |  | 45.62d → 78.62d |  | resources 2ETW [65%] → Anjali [65%] |
| 1799 | Design SCPI Required Commands |  |  |  |  | 45.62d → 77.62d |  | resources 2ETW [65%] → Anjali [65%] |
| 1800 | Implement SCPI Required Commands |  |  |  |  | 43.62d → 75.62d |  | resources 2ETW [65%] → Anjali [65%] |
| 1801 | Nunit SCPI Required commands |  |  |  |  | 43.39d → 75.93d |  | resources 2ETW [65%] → Anjali [65%] |
| 1813 | Implement |  |  |  |  | 5.83d → 42.67d |  | resources 2ETW [65%] → Anjali [65%] |
| 1814 | Nunit |  |  |  |  | 5.83d → 42.67d |  | resources 2ETW [65%] → Anjali [65%] |
| 1821 | Nunit For TCA Commands |  |  |  |  | 43.85d → 75.93d |  | resources 2ETW [65%] → Anjali [65%] |
| 1837 | Implement Equation Parser |  |  |  |  | 47.08d → 80.08d |  | resources 2ETW [65%] → Anjali [65%] |
| 1838 | Implement Trace Combinations |  |  |  |  | 47.54d → 81.54d |  | resources 2ETW [65%] → Anjali [65%] |
| 1839 | Implement Fetch Command |  |  |  |  | 46.04d → 80.54d |  | resources 2ETW [65%] → Anjali [65%] |
| 1840 | Nunit Fetch Commands |  |  |  |  | 48.16d → 82.23d |  | resources 2ETW [65%] → Anjali [65%] |
| 1842 | Port from Heroes |  |  |  |  | 43.85d → 74.93d |  | resources 2ETW [65%] → Anjali [65%] |
| 1843 | Nunit |  |  |  |  | 41.93d → 74.93d |  | resources 2ETW [65%] → Anjali [65%] |
| 1845 | Implement |  |  |  |  | 48.16d → 82.16d |  | resources 2ETW [65%] → Anjali [65%] |
| 1846 | Nunit |  |  |  |  | 48.47d → 82.31d |  | resources 2ETW [65%] → Anjali [65%] |
| 1848 | Implement |  |  |  |  | 41.85d → 74.85d |  | resources 2ETW [65%] → Anjali [65%] |
| 1849 | Nunit |  |  |  |  | 40.78d → 74.62d |  | resources 2ETW [65%] → Anjali [65%] |
| 1850 | **35670A DataLinker** |  | 2009-04-20 A |  | 77% → 100% | 32.65d → none |  |  |
| 1856 | **Functionality** | 2008-02-07 A → 2008-02-15 A (+8d) |  | 220.22d? → 214.61d? |  |  |  |  |
| 1857 | Finding 35670 on LAN-GPIB Converter | 2008-02-07 A → 2008-03-03 A (+25d) | 2008-02-15 A → 2008-03-07 A (+21d) |  |  |  |  | resources 1ETW [65%] → Ravi [65%] |
| 1858 | Finding 35670 on USB-GPIB Converter |  |  |  |  |  |  | resources 1ETW [65%] → Ravi [65%] |

| ID | Task | Start | Finish | Complete | Total float | Other |
| --- | --- | --- | --- | --- | --- | --- |
| 1859 | Finding 35670 on GPIB-GPIB |  |  |  |  | resources 1ETW [65%] → Ravi [65%] |
| 1860 | Ibasic prog for Dir info transfer in RAM |  |  |  |  | resources 1ETW [65%] → Ravi [65%] |
| 1861 | Ibasic prog for Dir info transfer in Floppy Drive |  |  |  |  | resources 1ETW [65%] → Ravi [65%] |
| 1862 | Implement Data structure to store Dir Info |  |  |  |  | resources 1ETW [65%] → Ravi [65%] |
| 1863 | Parse the ascii file and store the info in datastructure |  |  |  |  | resources 1ETW [65%] → Ravi [65%] |
| 1864 | Display data on Screen as per Format |  |  |  |  | resources 1ETW [65%] → Ravi [65%] |
| 1865 | Sorting of displayed data |  |  |  |  | resources 1ETW [65%] → Ravi [65%] |
| 1866 | Download selected file |  |  |  |  | resources 1ETW [65%] → Ravi [65%] |
| 1867 | Download Directory selection dialog box |  |  |  |  | resources 1ETW [65%] → Ravi [65%] |
| 1868 | DataViewer integration |  |  |  |  | resources 1ETW [65%] → Ravi [65%] |
| 1869 | Uint Testing |  |  |  |  | resources 1ETW [65%] → Ravi [65%] |
| 1870 | System Testing |  | 2009-01-29 A | 25% → 100% | 72.05d → none | resources 1ETW [65%] → Ravi [65%] |
| 1871 | **Help** |  | 2009-02-26 A | 9% → 100% | 63.2d → none |  |
| 1872 | Online Manual help |  | 2009-02-16 A | 25% → 100% | 63.2d → none | resources 1ETW [65%] → Ravi [65%] |
| 1873 | Link Dialog Help button | 2009-02-16 A | 2009-02-19 A | 0% → 100% | 63.2d → none | resources 1ETW [65%] → Ravi [65%] |
| 1874 | Getting Started | 2009-02-19 A | 2009-02-26 A | 0% → 100% | 63.2d → none | resources 1ETW [65%] → Ravi [65%] |
| 1875 | Show Software (Version number etc) | 2009-03-02 A | 2009-03-05 A | 0% → 100% | 63.54d → none | resources 1ETW [65%] → Ravi [65%] |
| 1876 | Installer/Uninstaller |  | 2009-04-20 A | 75% → 100% | 32.65d → none | resources 1ETW [65%] → Ravi [65%] |
